# Наименование проекта

Schedule from MS Project, 2023-01-10 to 2031-10-08, status date 2017-11-03, 24 hours a day.

## Calendars

- Стандартный: Mon-Sun 00:00-24:00. Exceptions (off unless hours are given): 2015-01-01 to 2032-01-02 (recurring), 2015-12-31 to 2032-12-31 (Новый год, recurring).
- 5/2: Mon-Thu 00:00-24:00; Fri 00:00-23:59; Sat-Sun off. Exceptions (off unless hours are given): 2015-01-01 to 2032-01-07 (Новый год, recurring), 2015-02-23 to 2032-02-23 (23февраля, recurring), 2015-03-08 to 2032-03-08 (8марта, recurring), 2015-05-01 to 2032-05-01 (1мая, recurring), 2015-05-09 to 2032-05-09 (9мая, recurring), 2015-12-31 to 2032-12-31 (Новый год, recurring).

## Schedule

| ID | WBS | Task | Type | Duration | Start | Finish | Predecessors | Total slack | Free slack | Text2 | Text3 |
| --- | --- | --- | --- | --- | --- | --- | --- | --- | --- | --- | --- |
| 1 | 1 | **Контрольные вехи** |  | 1784d | 2026-06-02 | 2031-05-11 |  | 150d |  |  |  |
| 2 | 1.1 | **Фаза ГПЗУ-РС** |  | 771d | 2026-06-02 | 2028-07-20 |  | 1163d |  | П1, К1 |  |
| 3 | 1.1.1 | **Получение разрешения на строительство (РС)** |  | 479d | 2026-06-02 | 2027-09-28 |  | 1455d |  | П1, К1 |  |
| 4 | 1.1.1.1 | ППТ разработан и согласован | milestone | 0d | 2027-02-16 | 2027-02-16 | 217 | 1677d |  |  |  |
| 5 | 1.1.1.2 | ГПЗУ получен | milestone | 0d | 2027-04-22 | 2027-04-22 | 224 | 1612d |  | П1, К1 | Промежуточная |
| 6 | 1.1.1.3 | Геодезические изыскания завершены | milestone | 0d | 2026-11-18 | 2026-11-18 | 231 | 1763d |  | П1, К1 | Промежуточная |
| 7 | 1.1.1.4 | Маркетинговое задание утверждено | milestone | 0d | 2026-06-02 | 2026-06-02 | 226 | 1932d |  | П1, К1 | Промежуточная |
| 8 | 1.1.1.5 | Архитектурный конкурс (архитектурная концепция) проведен (выбран победитель) | milestone | 0d | 2026-08-16 | 2026-08-16 | 524 | 1857d |  | П1, К1 | Промежуточная |
| 9 | 1.1.1.6 | Транспортная схема разработана и согласована | milestone | 0d | 2026-09-27 | 2026-09-27 | 288 | 1815d |  |  |  |
| 10 | 1.1.1.7 | ВПМ разработана и согласована | milestone | 0d | 2027-04-03 | 2027-04-03 | 281 | 1631d |  |  |  |
| 11 | 1.1.1.8 | Архитектурная концепция согласована с мэром | milestone | 0d | 2026-10-29 | 2026-10-29 | 313 | 1785d |  |  |  |
| 12 | 1.1.1.9 | Архитектурная концепция доработана и согласованы промежуточные планировки | milestone | 0d | 2026-12-21 | 2026-12-21 | 312 | 1730d |  | П1, К1 | Промежуточная |
| 13 | 1.1.1.10 | Тендер на разработку ПД проведен, договор заключен | milestone | 0d | 2026-10-12 | 2026-10-12 | 554 | 1800d |  | П1, К1 | Промежуточная |
| 14 | 1.1.1.11 | Технические условия получены (договора тех присоединения заключены) | milestone | 0d | 2027-05-22 | 2027-05-22 | 260, 261, 262, 263, 264 | 1582d |  | П1, К1 | Промежуточная |
| 15 | 1.1.1.12 | Геологические и экологические изыскания завершены | milestone | 0d | 2026-12-05 | 2026-12-05 | 237 | 1746d |  | П1, К1 | Промежуточная |
| 16 | 1.1.1.13 | Консолидированная концепция и планировки согласованы | milestone | 0d | 2027-05-11 | 2027-05-11 | 334 | 1593d |  | П1, К1 | Промежуточная |
| 17 | 1.1.1.14 | Дизайн-проекты МОП, квартир и БиО согласованы | milestone | 0d | 2027-04-23 | 2027-04-23 | 275, 280 | 1611d |  | П1, К1 | Промежуточная |
| 18 | 1.1.1.15 | Проектная документация загружена (полный комплект и СТУ) в экспертизу | milestone | 0d | 2027-07-13 | 2027-07-13 | 335, 348 | 1530d |  | П1, К1 | Промежуточная |
| 19 | 1.1.1.16 | Свидетельство об утверждении АГР получено | milestone | 0d | 2027-07-09 | 2027-07-09 | 345 | 1534d |  | П1, К1 | Промежуточная |
| 20 | 1.1.1.17 | Заключение экспертизы ПД получено | milestone | 0d | 2027-09-21 | 2027-09-21 | 353 | 1460d |  | П1, К1 | Промежуточная |
| 21 | 1.1.1.18 | Разрешение на строительство (РС) получено | milestone | 0d | 2027-09-28 | 2027-09-28 | 360 | 1453d |  | П1, К1 | Ключевая |
| 22 | 1.1.2 | **Подготовка площадки под строительство** |  | 74d | 2027-08-21 | 2027-11-03 |  | 1419d |  | П1, К1 |  |
| 23 | 1.1.2.1 | Снос строений и вырубка зеленых насаждений завершены | milestone | 0d | 2027-08-21 | 2027-08-21 | 1111, 1108 | 1491d | 74d | П1, К1 | Промежуточная |
| 24 | 1.1.2.2 | Ограждение и временные дороги завершены | milestone | 0d | 2027-10-19 | 2027-10-19 | 1114, 1117 | 1432d | 15d | П1, К1 | Промежуточная |
| 25 | 1.1.2.3 | Сети механизации выполнены и функционируют | milestone | 0d | 2027-11-03 | 2027-11-03 | 1119, 1120, 1121 | 1417d | 0d | П1, К1 | Промежуточная |
| 26 | 1.1.2.4 | Сети вынесены из пятна застройки | milestone | 0d | 2027-08-29 | 2027-08-29 | 1587, 1593, 1599, 1606, 1612 | 1483d | 66d | П1, К1 | Промежуточная |
| 27 | 1.1.2.5 | Штаб строительства готов к заселению | milestone | 0d | 2027-09-20 | 2027-09-20 | 1115 | 1461d | 44d | П1, К1 | Промежуточная |
| 28 | 1.1.2.6 | Подготовка площадки под строительство завершена | milestone | 0d | 2027-11-03 | 2027-11-03 | 23, 24, 25, 26, 27 | 1417d |  | П1, К1 | Ключевая |

| ID | WBS | Task | Type | Duration | Start | Finish | Predecessors | Total slack | Free slack | Text2 | Text3 |
| --- | --- | --- | --- | --- | --- | --- | --- | --- | --- | --- | --- |
| 29 | 1.1.3 | **Открытие офиса продаж** |  | 256d | 2027-11-03 | 2028-07-20 |  | 1163d |  | ОП |  |
| 30 | 1.1.3.1 | Маркетинговое задание утверждено | milestone | 0d | 2027-11-03 | 2027-11-03 | 363 | 1417d | 256d | ОП | Промежуточная |
| 31 | 1.1.3.2 | Земельный участок подобран и оформлены земельно-имущественные отношения | milestone | 0d | 2027-12-29 | 2027-12-29 | 215 | 1361d | 200d | ОП | Промежуточная |
| 32 | 1.1.3.3 | Дизайн-проекты интерьеров, фасадов, БиО согласованы | milestone | 0d | 2027-12-17 | 2027-12-17 | 365 | 1373d | 212d | ОП | Промежуточная |
| 33 | 1.1.3.4 | РД разработана и заключены договоры на СМР (каркас, кровля, фасады, ВИС, НИС, отделка) | milestone | 0d | 2028-06-05 | 2028-06-05 | 586, 593 | 1206d | 0d | ОП | Промежуточная |
| 34 | 1.1.3.5 | Мебель, макет, предметы декора и интерьера законтрактованы | milestone | 0d | 2028-06-05 | 2028-06-05 | 33 | 1206d | 0d | ОП | Промежуточная |
| 35 | 1.1.3.6 | IT-оснащение (ТВ-панели, связь и интернет) установлено | milestone | 0d | 2028-06-05 | 2028-06-05 | 34, 600 | 1206d | 45d | ОП | Промежуточная |
| 36 | 1.1.3.7 | Офис продаж открыт | milestone | 0d | 2028-07-20 | 2028-07-20 | 1086, 30, 31, 32, 33, 34, 35 | 1161d |  | ОП | Ключевая |
| 37 | 1.1.4 | **Подготовка к старту продаж** |  | 7d | 2027-10-07 | 2027-10-14 |  | 1439d |  | П1, К1 |  |
| 38 | 1.1.4.1 | Пилотный ДДУ подан на регистрацию | milestone | 0d | 2027-10-07 | 2027-10-07 | 383 | 1444d |  | П1, К1 | Промежуточная |
| 39 | 1.1.4.2 | Пилотный ДДУ зарегистрирован | milestone | 0d | 2027-10-14 | 2027-10-14 | 384 | 1437d |  | П1, К1 | Промежуточная |
| 40 | 1.1.4.3 | Старт продаж | milestone | 0d | 2027-10-14 | 2027-10-14 | 385 | 1437d |  | П1, К1 | Ключевая |
| 41 | 1.2 | **Фаза РС-РВЭ-Передача** |  | 1582d | 2026-12-21 | 2031-05-11 |  | 150d |  | П1, К1 |  |
| 42 | 1.2.1 | **Тендеры и контрактация** |  | 305d | 2027-05-11 | 2028-03-15 |  | 1290d |  | П1, К1 |  |
| 43 | 1.2.1.1 | **Котлован, монолит и кладка** |  | 40d | 2027-11-07 | 2027-12-17 |  | 1375d |  | П1, К1 |  |
| 44 | 1.2.1.1.1 | Подписан договор на ограждение котловна | milestone | 0d | 2027-11-09 | 2027-11-09 | 624 | 1411d | 38d | П1, К1 | Промежуточная |
| 45 | 1.2.1.1.2 | Подписан договор на земляные работы | milestone | 0d | 2027-11-07 | 2027-11-07 | 658 | 1413d | 40d | П1, К1 | Промежуточная |
| 46 | 1.2.1.1.3 | Подписан договор на свайное основание | milestone | 0d | 2027-11-09 | 2027-11-09 | 638 | 1411d | 38d | П1, К1 | Промежуточная |
| 47 | 1.2.1.1.4 | Подписан договор на монолитные работы и кладку по объемам из ПД | milestone | 0d | 2027-12-17 | 2027-12-17 | 672 | 1373d | 0d | П1, К1 | Промежуточная |
| 48 | 1.2.1.1.5 | Подписаны договоры на котлован, монолит и кладку | milestone | 0d | 2027-12-17 | 2027-12-17 | 44, 45, 46, 47 | 1373d |  | П1, К1 | Ключевая |
| 49 | 1.2.1.2 | **Фасады, окна, кровля** |  | 304d | 2027-05-12 | 2028-03-15 |  | 1290d |  | П1, К1 |  |
| 50 | 1.2.1.2.1 | Подписан договор на монтаж фасадов | milestone | 0d | 2028-03-15 | 2028-03-15 | 775 | 1288d | 0d | П1, К1 | Промежуточная |
| 51 | 1.2.1.2.2 | Подписан договор на монтаж оконных и витражных конструкций | milestone | 0d | 2027-06-23 | 2027-06-23 | 789, 797 | 1550d | 262d | П1, К1 | Промежуточная |
| 52 | 1.2.1.2.3 | Подписан договор на монтаж кровли стилобата | milestone | 0d | 2027-12-17 | 2027-12-17 | 672 | 1373d | 85d | П1, К1 | Промежуточная |
| 53 | 1.2.1.2.4 | Подписан договор на монтаж кровли корпусов | milestone | 0d | 2027-05-12 | 2027-05-12 | 715 | 1592d | 304d | П1, К1 | Промежуточная |
| 54 | 1.2.1.2.5 | Подписаны договоры на фасады, окна, кровлю | milestone | 0d | 2028-03-15 | 2028-03-15 | 50, 51, 52, 53 | 1288d |  | П1, К1 | Ключевая |

| ID | WBS | Task | Type | Duration | Start | Finish | Predecessors | Total slack | Free slack | Text2 | Text3 |
| --- | --- | --- | --- | --- | --- | --- | --- | --- | --- | --- | --- |
| 55 | 1.2.1.3 | **Отделка, инженерные системы** |  | 259d | 2027-05-11 | 2028-01-29 |  | 1336d |  | П1, К1 |  |
| 56 | 1.2.1.3.1 | Подписан договор на монтаж инженерных систем подземной части | milestone | 0d | 2027-10-05 | 2027-10-05 | 852 | 1446d | 112d | П1, К1 | Промежуточная |
| 57 | 1.2.1.3.2 | Подписан договор на монтаж инженерных систем надземной части | milestone | 0d | 2027-10-05 | 2027-10-05 | 860, 868 | 1446d | 112d | П1, К1 | Промежуточная |
| 58 | 1.2.1.3.3 | Подписан договор на монтаж и поставку лифтового оборудования | milestone | 0d | 2028-01-29 | 2028-01-29 | 722 | 1334d | 0d | П1, К1 | Промежуточная |
| 59 | 1.2.1.3.4 | Подписаны договоры на инженерные системы | milestone | 0d | 2028-01-29 | 2028-01-29 | 57, 58, 56 | 1334d |  | П1, К1 | Ключевая |
| 60 | 1.2.1.3.5 | Подписаны договора на отдеку подземного паркинга и технических помещений | milestone | 0d | 2027-05-11 | 2027-05-11 | 889 | 1593d | 94d | П1, К1 | Промежуточная |
| 61 | 1.2.1.3.6 | Подписан договор на устройство полов паркинга | milestone | 0d | 2027-05-29 | 2027-05-29 | 897 | 1575d | 76d | П1, К1 | Промежуточная |
| 62 | 1.2.1.3.7 | Подписан договор на отделку МОП | milestone | 0d | 2027-08-13 | 2027-08-13 | 992 | 1499d | 0d | П1, К1 | Промежуточная |
| 63 | 1.2.1.3.8 | Подписаны договоры на отделку | milestone | 0d | 2027-08-13 | 2027-08-13 | 60, 61, 62 | 1499d |  | П1, К1 | Ключевая |
| 64 | 1.2.1.4 | **Наружные инженерные сети** |  | 244d | 2027-05-22 | 2028-01-25 |  | 1340d |  | П1, К1 |  |
| 65 | 1.2.1.4.1 | Подписаны договора на монтаж наружных инженерных систем ВК, К1, К2 | milestone | 0d | 2028-01-25 | 2028-01-25 | 693 | 1338d | 0d | П1, К1 | Промежуточная |
| 66 | 1.2.1.4.2 | Подписаны договора на монтаж наружных инженерных систем ТС | milestone | 0d | 2027-05-22 | 2027-05-22 | 1617 | 1582d | 244d | П1, К1 | Промежуточная |
| 67 | 1.2.1.4.3 | Подписаны договора на монтаж наружных инженерных систем ЭС | milestone | 0d | 2027-05-22 | 2027-05-22 | 1616 | 1582d | 244d | П1, К1 | Промежуточная |
| 68 | 1.2.1.4.4 | Подписаны договора на монтаж наружных инженерных систем СС | milestone | 0d | 2027-05-22 | 2027-05-22 | 1620 | 1582d | 244d | П1, К1 | Промежуточная |
| 69 | 1.2.1.4.5 | Подписаны договоры на наружные инженерные сети | milestone | 0d | 2028-01-25 | 2028-01-25 | 65, 66, 67, 68 | 1338d |  | П1, К1 | Ключевая |
| 70 | 1.2.1.5 | **Благоустройство и озеленение** |  | 0d | 2027-05-27 | 2027-05-27 |  | 1579d |  | П1, К1 |  |
| 71 | 1.2.1.5.1 | Подписаны договора на устройство твердых покрытий | milestone | 0d | 2027-05-27 | 2027-05-27 | 1033 | 1577d | 0d | П1, К1 | Промежуточная |
| 72 | 1.2.1.5.2 | Подписаны договора на озеленение | milestone | 0d | 2027-05-27 | 2027-05-27 | 1041 | 1577d | 0d | П1, К1 | Промежуточная |
| 73 | 1.2.1.5.3 | Подписаны договора на поставку и монтаж МАФ | milestone | 0d | 2027-05-27 | 2027-05-27 | 1071, 1049, 1057 | 1577d | 0d | П1, К1 | Промежуточная |
| 74 | 1.2.1.5.4 | Подписаны договоры на БИО | milestone | 0d | 2027-05-27 | 2027-05-27 | 71, 72, 73 | 1577d |  | П1, К1 | Ключевая |
| 75 | 1.2.2 | **Строительно-монтажные работы** |  | 925d | 2027-12-13 | 2030-07-07 |  | 454d |  | П1, К1 |  |
| 76 | 1.2.2.1 | **Нулевой цикл** |  | 190d | 2027-12-13 | 2028-06-24 |  | 1189d |  | П1, К1 |  |
| 77 | 1.2.2.1.1 | Завершено ограждение котловна | milestone | 0d | 2027-12-13 | 2027-12-13 | 1131 | 1377d | 190d | П1, К1 | Промежуточная |
| 78 | 1.2.2.1.2 | Завершены земляные работы | milestone | 0d | 2027-12-22 | 2027-12-22 | 1129 | 1368d | 181d | П1, К1 | Промежуточная |
| 79 | 1.2.2.1.3 | Завершено свайное поле Крит Корп | milestone | 0d | 2028-02-10 | 2028-02-10 | 1133 | 1322d | 135d |  |  |
| 80 | 1.2.2.1.4 | Завершено свайное поле | milestone | 0d | 2028-02-10 | 2028-02-10 | 1132 | 1322d | 135d |  |  |
| 81 | 1.2.2.1.5 | Выполнен фундамент здания | milestone | 0d | 2028-05-10 | 2028-05-10 | 1136, 1138, 1137 | 1232d | 45d | П1, К1 | Промежуточная |
| 82 | 1.2.2.1.6 | Завершены монолитные работы ниже отметки 0.000 Крит Корп | milestone | 0d | 2028-05-25 | 2028-05-25 | 1140, 1141 | 1217d | 30d |  |  |
| 83 | 1.2.2.1.7 | Завершены монолитные работы ниже отметки 0.000 | milestone | 0d | 2028-06-24 | 2028-06-24 | 1139 | 1187d | 0d | П1, К1 | Промежуточная |
| 84 | 1.2.2.1.8 | Завершены работы по нулевому циклу | milestone | 0d | 2028-06-24 | 2028-06-24 | 77, 78, 81, 83, 79, 80, 82 | 1187d |  | П1, К1 | Ключевая |

| ID | WBS | Task | Type | Duration | Start | Finish | Predecessors | Total slack | Free slack | Text2 | Text3 |
| --- | --- | --- | --- | --- | --- | --- | --- | --- | --- | --- | --- |
| 85 | 1.2.2.2 | **Последний куб бетона** |  | 0d | 2029-06-02 | 2029-06-02 |  | 850d |  | П1, К1 | Ключевая |
| 86 | 1.2.2.2.1 | Завершены монолитные работы выше отметки 0.000 | milestone | 0d | 2029-06-02 | 2029-06-02 | 1227, 1359 | 848d |  | П1, К1 | Промежуточная |
| 87 | 1.2.2.3 | **Тепловой контур** |  | 401d | 2029-05-28 | 2030-07-07 |  | 454d |  | П1, К1 |  |
| 88 | 1.2.2.3.1 | Завершен монтаж оконных конструкций, закрыт тепловой контур | milestone | 0d | 2029-10-05 | 2029-10-05 | 1271, 1272, 1432, 1433 | 723d | 0d | П1, К1 | Промежуточная |
| 89 | 1.2.2.3.2 | Завершен монтаж ИТП и систем отопления | milestone | 0d | 2029-05-28 | 2029-05-28 | 1163, 1165, 1288, 1449 | 853d | 130d | П1, К1 | Промежуточная |
| 90 | 1.2.2.3.3 | Подано тепло | milestone | 0d | 2029-07-28 | 2029-07-28 | 1339, 1215, 1500 | 792d | 69d | П1, К1 | Промежуточная |
| 91 | 1.2.2.3.4 | Подано тепло по постоянной схеме | milestone | 0d | 2030-07-07 | 2030-07-07 | 1654 | 452d |  |  |  |
| 92 | 1.2.2.3.5 | Закрыт тепловой контур, пуск тепла | milestone | 0d | 2029-10-05 | 2029-10-05 | 88, 89, 90 | 723d |  | П1, К1 | Ключевая |
| 93 | 1.2.2.4 | **Фасады, окна и кровля** |  | 619d | 2028-08-08 | 2030-04-27 |  | 525d |  | П1, К1 |  |
| 94 | 1.2.2.4.1 | Завершена кладка наружных и внутренних стен и перегородок | milestone | 0d | 2029-10-01 | 2029-10-01 | 1147, 1259, 1258, 1419, 1420 | 727d | 20d | П1, К1 | Промежуточная |
| 95 | 1.2.2.4.2 | Завершена кладка внешних стен и монтаж окон | milestone | 0d | 2029-10-05 | 2029-10-05 | 1264, 1425 | 723d | 16d | П1, К1 | Промежуточная |
| 96 | 1.2.2.4.3 | Завершены фасадные работы | milestone | 0d | 2030-04-27 | 2030-04-27 | 1263, 1424 | 525d | 0d | П1, К1 | Промежуточная |
| 97 | 1.2.2.4.4 | Завершено устройство кровли стилобата | milestone | 0d | 2028-08-08 | 2028-08-08 | 1149 | 1142d | 435d | П1, К1 | Промежуточная |
| 98 | 1.2.2.4.5 | Завершено устройство кровли наземных корпусов | milestone | 0d | 2029-08-01 | 2029-08-01 | 1270, 1268, 1429, 1431 | 788d | 81d | П1, К1 | Промежуточная |
| 99 | 1.2.2.4.6 | Завершены работы по фасадам, окнам и кровле | milestone | 0d | 2030-04-27 | 2030-04-27 | 94, 96, 97, 98, 95 | 525d |  | П1, К1 | Ключевая |
| 100 | 1.2.2.5 | **Наружные и внутренние сети, комплексные испытания** |  | 755d | 2028-04-24 | 2030-05-27 |  | 495d |  | П1, К1 |  |
| 101 | 1.2.2.5.1 | Завершены наружные сети теплоснабжения | milestone | 0d | 2028-04-24 | 2028-04-24 | 1631 | 1248d |  | П1, К1 | Промежуточная |
| 102 | 1.2.2.5.2 | Завершены наружные сети электроснабжения | milestone | 0d | 2028-04-24 | 2028-04-24 | 1632 | 1248d |  | П1, К1 | Промежуточная |
| 103 | 1.2.2.5.3 | Завершены наружные сети водоснабжения | milestone | 0d | 2028-04-24 | 2028-04-24 | 1634 | 1248d |  | П1, К1 | Промежуточная |
| 104 | 1.2.2.5.4 | Завершены наружные сети канализования | milestone | 0d | 2028-04-24 | 2028-04-24 | 1634 | 1248d |  | П1, К1 | Промежуточная |
| 105 | 1.2.2.5.5 | Завершены наружные сети ливневой канализации | milestone | 0d | 2028-04-24 | 2028-04-24 | 1635 | 1248d |  | П1, К1 | Промежуточная |
| 106 | 1.2.2.5.6 | Завершены наружные сети сетей связи | milestone | 0d | 2028-04-24 | 2028-04-24 | 1636 | 1248d |  | П1, К1 | Промежуточная |
| 107 | 1.2.2.5.7 | Завешен монтаж лифтового оборудования | milestone | 0d | 2029-10-30 | 2029-10-30 | 1275, 1436 | 698d |  | П1, К1 | Промежуточная |
| 108 | 1.2.2.5.8 | Завершен монтаж внутренних инженерных систем и проведены комплексные испытания инженерных систем | milestone | 0d | 2030-05-27 | 2030-05-27 | 1535 | 493d |  | П1, К1 | Промежуточная |
| 109 | 1.2.2.5.9 | Завершены наружные и внутренние сети, проведен комплекс испытаний | milestone | 0d | 2030-05-27 | 2030-05-27 | 1535 | 493d |  | П1, К1 | Ключевая |

| ID | WBS | Task | Type | Duration | Start | Finish | Predecessors | Total slack | Free slack | Text2 | Text3 |
| --- | --- | --- | --- | --- | --- | --- | --- | --- | --- | --- | --- |
| 110 | 1.2.2.6 | **Отделка** |  | 0d | 2030-05-30 | 2030-05-30 |  | 492d |  | П1, К1 |  |
| 111 | 1.2.2.6.1 | Завершены отделочные работы МОП | milestone | 0d | 2030-05-30 | 2030-05-30 | 1343, 1345, 1347, 1349, 1504, 1506, 1508, 1510 | 492d | 0d | П1, К1 | Промежуточная |
| 112 | 1.2.2.6.2 | Завершены отделочные работы квартир | milestone | 0d | 2030-05-30 | 2030-05-30 | 1354, 1515 | 492d | 0d | П1, К1 | Промежуточная |
| 113 | 1.2.2.6.3 | Завершены отделочные работы | milestone | 0d | 2030-05-30 | 2030-05-30 | 111, 112 | 492d |  | П1, К1 | Ключевая |
| 114 | 1.2.2.7 | **БИО** |  | 60d | 2030-02-26 | 2030-04-27 |  | 525d |  | П1, К1 |  |
| 115 | 1.2.2.7.1 | Завершены твердые покрытия | milestone | 0d | 2030-04-27 | 2030-04-27 | 1522 | 525d | 0d | П1, К1 | Промежуточная |
| 116 | 1.2.2.7.2 | Завершено озеленение | milestone | 0d | 2030-02-26 | 2030-02-26 | 1524 | 585d | 60d | П1, К1 | Промежуточная |
| 117 | 1.2.2.7.3 | Завершен монтаж МАФ | milestone | 0d | 2030-04-27 | 2030-04-27 | 1530 | 525d | 0d | П1, К1 | Промежуточная |
| 118 | 1.2.2.7.4 | Завершены работы по БИО | milestone | 0d | 2030-04-27 | 2030-04-27 | 115, 116, 117 | 525d |  | П1, К1 | Ключевая |
| 119 | 1.2.3 | **Ввод объекта в эксплуатацию и передача собственникам** |  | 1582d | 2026-12-21 | 2031-05-11 |  | 150d |  | П1, К1 |  |
| 120 | 1.2.3.1 | **Разрешение на ввод объекта в эксплуатацию** |  | 187d | 2030-02-04 | 2030-08-10 |  | 420d |  | П1, К1 |  |
| 121 | 1.2.3.1.1 | Проведены обмеры БТИ | milestone | 0d | 2030-02-04 | 2030-02-04 | 1551 | 607d |  |  |  |
| 122 | 1.2.3.1.2 | Проведена корректировка буклета АГР и модели | milestone | 0d | 2030-02-19 | 2030-02-19 | 1555 | 592d |  |  |  |
| 123 | 1.2.3.1.3 | Получено заключение экспертизы ПД перед вводом | milestone | 0d | 2030-04-20 | 2030-04-20 | 1561 | 532d |  |  |  |
| 124 | 1.2.3.1.4 | Присвоены адреса | milestone | 0d | 2030-05-24 | 2030-05-24 | 1566 | 498d |  | П1, К1 | Промежуточная |
| 125 | 1.2.3.1.5 | Получен ЗОС | milestone | 0d | 2030-08-05 | 2030-08-05 | 1574 | 425d |  | П1, К1 | Промежуточная |
| 126 | 1.2.3.1.6 | Получены технические планы на здания и наружные сети | milestone | 0d | 2030-06-05 | 2030-06-05 | 1567 | 486d |  | П1, К1 | Промежуточная |
| 127 | 1.2.3.1.7 | Получено РВЭ | milestone | 0d | 2030-08-10 | 2030-08-10 | 1581 | 420d |  | П1, К1 | Ключевая |
| 128 | 1.2.3.2 | **Передача ключей** |  | 210d | 2030-10-09 | 2031-05-11 |  | 150d |  | П1, К1 |  |
| 129 | 1.2.3.2.1 | Переданы квартиры без отделки | milestone | 0d | 2031-02-10 | 2031-02-10 | 1669 | 240d | 90d | П1, К1 | Промежуточная |
| 130 | 1.2.3.2.2 | Переданы квартиры с отделкой | milestone | 0d | 2031-05-11 | 2031-05-11 | 1670 | 150d | 0d | П1, К1 | Промежуточная |
| 131 | 1.2.3.2.3 | Переданы коммерческие помещения | milestone | 0d | 2030-10-09 | 2030-10-09 | 1671 | 360d |  | П1, К1 | Промежуточная |
| 132 | 1.2.3.2.4 | Переданы машиноместа и кладовки | milestone | 0d | 2030-10-09 | 2030-10-09 | 1672 | 360d |  | П1, К1 | Промежуточная |
| 133 | 1.2.3.2.5 | Ключи переданы без замечаний в объеме 95% | milestone | 0d | 2031-05-11 | 2031-05-11 | 129, 130 | 150d |  | П1, К1 | Ключевая |

| ID | WBS | Task | Type | Duration | Start | Finish | Predecessors | Total slack | Free slack | Text2 | Text3 |
| --- | --- | --- | --- | --- | --- | --- | --- | --- | --- | --- | --- |
| 134 | 1.2.3.3 | **Передача объекта УК и РСО** |  | 143d | 2030-09-16 | 2031-02-10 |  | 240d |  | П1, К1 |  |
| 135 | 1.2.3.3.1 | Построенный объект предан УК | milestone | 0d | 2030-09-16 | 2030-09-16 | 1546 | 383d |  | П1, К1 | Промежуточная |
| 136 | 1.2.3.3.2 | Переданы наружные сети в РСО | milestone | 0d | 2031-02-10 | 2031-02-10 | 1660, 1664, 1667 | 240d |  | П1, К1 | Промежуточная |
| 137 | 1.2.3.4 | **Целевые бюджеты** |  | 277.01d | 2026-12-21 | 2027-09-28 |  | 1454.99d |  |  |  |
| 138 | 1.2.3.4.1 | Старт разработки ЦБ0 | milestone | 0d | 2026-12-21 | 2026-12-21 | 371SS | 1730d |  |  |  |
| 139 | 1.2.3.4.2 | ЦБ0 разработан | milestone | 0d | 2027-01-29 | 2027-01-29 | 371 | 1695d |  |  |  |
| 140 | 1.2.3.4.3 | ЦБ0 согласован | milestone | 0d | 2027-02-15 | 2027-02-15 | 372 | 1678d |  |  |  |
| 141 | 1.2.3.4.4 | Старт разработки ЦБ1 | milestone | 0d | 2027-07-12 | 2027-07-12 | 374SS | 1531d |  |  |  |
| 142 | 1.2.3.4.5 | ЦБ1 разработан | milestone | 0d | 2027-09-13 | 2027-09-13 | 375 | 1467.99d |  |  |  |
| 143 | 1.2.3.4.6 | ЦБ1 согласован | milestone | 0d | 2027-09-28 | 2027-09-28 | 376 | 1452.99d |  |  |  |
| 144 | 1.3 | **Контрольные вехи проектирование для интеграции** |  | 1402d | 2026-06-02 | 2030-04-20 |  | 532d |  |  |  |
| 145 | 1.3.1 | Старт арх концепция (конкурс) | milestone | 0d | 2026-06-02 | 2026-06-02 | 519SS | 1932d |  |  |  |
| 146 | 1.3.2 | Финиш арх концепция (конкурс) | milestone | 0d | 2026-08-16 | 2026-08-16 | 519 | 1857d |  |  |  |
| 147 | 1.3.3 | Старт ДАК | milestone | 0d | 2026-10-31 | 2026-10-31 | 327SS | 1781d |  |  |  |
| 148 | 1.3.4 | Финиш ДАК | milestone | 0d | 2026-12-21 | 2026-12-21 | 329 | 1730d |  |  |  |
| 149 | 1.3.5 | Старт концепция МОП (тип этаж, лобби, паркинг) | milestone | 0d | 2027-03-10 | 2027-03-10 | 271SS | 1655d |  |  |  |
| 150 | 1.3.6 | Финиш концепция МОП (тип этаж, лобби, паркинг) | milestone | 0d | 2027-04-23 | 2027-04-23 | 271 | 1611d |  |  |  |
| 151 | 1.3.7 | Старт концепция БИО | milestone | 0d | 2026-10-17 | 2026-10-17 | 276SS | 1795d |  |  |  |
| 152 | 1.3.8 | Финиш концепция БИО | milestone | 0d | 2026-11-30 | 2026-11-30 | 276 | 1751d |  |  |  |
| 153 | 1.3.9 | Старт конс.концепция | milestone | 0d | 2026-12-21 | 2026-12-21 | 330SS | 1730d |  |  |  |
| 154 | 1.3.10 | Финиш конс.концепция | milestone | 0d | 2027-05-04 | 2027-05-04 | 333 | 1600d |  |  |  |
| 155 | 1.3.11 | Старт ПД | milestone | 0d | 2027-05-04 | 2027-05-04 | 335SS | 1600d |  |  |  |
| 156 | 1.3.12 | Старт экспертизы ПД | milestone | 0d | 2027-07-11 | 2027-07-11 | 348SS | 1532d |  |  |  |
| 157 | 1.3.13 | Финиш ПД | milestone | 0d | 2027-09-21 | 2027-09-21 | 353 | 1155d | 0d |  |  |

| ID | WBS | Task | Type | Duration | Start | Finish | Predecessors | Total slack | Free slack |
| --- | --- | --- | --- | --- | --- | --- | --- | --- | --- |
| 158 | 1.3.14 | **Разработка РД** |  | 588d | 2026-12-08 | 2028-07-26 |  | 1157d |  |
| 159 | 1.3.14.1 | Старт АР (кладочные и маркировочные планы) | milestone | 0d | 2026-12-08 | 2026-12-08 | 466SS | 1743d |  |
| 160 | 1.3.14.2 | Финиш АР (кладочные и маркировочные планы) | milestone | 0d | 2027-05-26 | 2027-05-26 | 466 | 1578d |  |
| 161 | 1.3.14.3 | Старт АР (кровля) | milestone | 0d | 2026-12-08 | 2026-12-08 | 480SS | 1743d |  |
| 162 | 1.3.14.4 | Финиш АР (кровля) | milestone | 0d | 2027-03-12 | 2027-03-12 | 480 | 1653d |  |
| 163 | 1.3.14.5 | Старт АР (фасады и СПК) | milestone | 0d | 2027-03-27 | 2027-03-27 | 470SS, 484SS, 488 | 1638d |  |
| 164 | 1.3.14.6 | Финиш АР (фасады и СПК) | milestone | 0d | 2027-11-29 | 2027-11-29 | 470, 484, 488 | 1391d |  |
| 165 | 1.3.14.7 | Старт АИ (тип этаж, лобби, паркинг) | milestone | 0d | 2026-12-08 | 2026-12-08 | 500SS | 1743d |  |
| 166 | 1.3.14.8 | Финиш АИ (тип этаж, лобби, паркинг) | milestone | 0d | 2027-09-08 | 2027-09-08 | 500 | 1473d |  |
| 167 | 1.3.14.9 | Старт ГП | milestone | 0d | 2026-12-08 | 2026-12-08 | 496SS | 1743d |  |
| 168 | 1.3.14.10 | Финиш ГП | milestone | 0d | 2027-03-27 | 2027-03-27 | 496 | 1638d |  |
| 169 | 1.3.14.11 | Старт разработка РД | milestone | 0d | 2027-07-23 | 2027-07-23 | 157FS-60d | 1155d | 0d |
| 170 | 1.3.14.12 | Финиш разработка РД | milestone | 0d | 2028-07-26 | 2028-07-26 | 169FS+365d | 1155d |  |
| 171 | 1.3.15 | Старт корректировка ПД и экспертиза (перед ЗОС) | milestone | 0d | 2030-01-05 | 2030-01-05 | 1558SS | 637d |  |
| 172 | 1.3.16 | Финиш корректировка ПД и экспертиза (перед ЗОС) | milestone | 0d | 2030-04-20 | 2030-04-20 | 1561 | 532d |  |
| 173 | 1.3.17 | **Старт подготовки ВОР для тендеров по отделке** |  | 75d | 2027-03-19 | 2027-06-02 |  | 1573d |  |
| 174 | 1.3.17.1 | Старт ВОР - отделка паркинга и тех. Помещений | milestone | 0d | 2027-03-19 | 2027-03-19 | 885SS | 1646d |  |
| 175 | 1.3.17.2 | Старт ВОР - отделка МОП, Лобби | milestone | 0d | 2027-06-02 | 2027-06-02 | 988SS | 1571d |  |
| 176 | 1.3.17.3 | Старт ВОР - отделка Квартиры | milestone | 0d | 2027-06-02 | 2027-06-02 | 996SS | 1571d |  |
| 177 | 1.3.18 | **Завершение тендеров по отделке** |  | 99d | 2027-04-27 | 2027-08-04 |  | 1510d |  |
| 178 | 1.3.18.1 | Завершение Тендера - отделка паркинга и тех. Помещений | milestone | 0d | 2027-04-27 | 2027-04-27 | 888 | 1607d |  |
| 179 | 1.3.18.2 | Завершение Тендера - отделка МОП, Лобби | milestone | 0d | 2027-07-30 | 2027-07-30 | 991 | 1513d |  |
| 180 | 1.3.18.3 | Завершение Тендера - отделка Квартиры | milestone | 0d | 2027-08-04 | 2027-08-04 | 999 | 1508d |  |
| 181 | 1.3.19 | **Старт СМР по отделочным работам** |  | 256d | 2028-07-15 | 2029-04-01 |  | 912d |  |
| 182 | 1.3.19.1 | Старт СМР - отделка паркинга и тех. Помещений | milestone | 0d | 2028-07-15 | 2028-07-15 | 1216SS | 1166d |  |
| 183 | 1.3.19.2 | Старт СМР- отделка МОП, Лобби | milestone | 0d | 2029-04-01 | 2029-04-01 | 1341SS, 1502SS | 912d |  |
| 184 | 1.3.19.3 | Старт СМР- отделка Квартиры | milestone | 0d | 2029-04-01 | 2029-04-01 | 1350SS, 1511SS | 912d |  |

| ID | WBS | Task | Type | Duration | Start | Finish | Predecessors | Total slack | Free slack | Constraint | Text2 |
| --- | --- | --- | --- | --- | --- | --- | --- | --- | --- | --- | --- |
| 185 | 1.3.20 | **Старт подготовки ВОР для тендеров по благоустройству** |  | 0d | 2027-04-03 | 2027-04-03 |  | 1633d |  |  |  |
| 186 | 1.3.20.1 | Старт ВОР - твердые покрытия | milestone | 0d | 2027-04-03 | 2027-04-03 | 1029SS | 1631d |  |  |  |
| 187 | 1.3.20.2 | Старт ВОР - озеленение | milestone | 0d | 2027-04-03 | 2027-04-03 | 1037SS | 1631d |  |  |  |
| 188 | 1.3.20.3 | Старт ВОР - монтаж МАФ | milestone | 0d | 2027-04-03 | 2027-04-03 | 1067SS, 1045SS, 1053SS | 1631d |  |  |  |
| 189 | 1.3.21 | **Завершение тендеров по благоустройству** |  | 0d | 2027-05-13 | 2027-05-13 |  | 1593d |  |  |  |
| 190 | 1.3.21.1 | Завершение тендера - твердые покрытия | milestone | 0d | 2027-05-13 | 2027-05-13 | 1032 | 1591d |  |  |  |
| 191 | 1.3.21.2 | Завершение тендера - озеленение | milestone | 0d | 2027-05-13 | 2027-05-13 | 1040 | 1591d |  |  |  |
| 192 | 1.3.21.3 | Завершение тендера - монтаж МАФ | milestone | 0d | 2027-05-13 | 2027-05-13 | 1070, 1048, 1056 | 1591d |  |  |  |
| 193 | 1.3.22 | **Старт СМР по благоустройству** |  | 75d | 2029-12-24 | 2030-03-13 |  | 570d |  |  |  |
| 194 | 1.3.22.1 | Старт СМР - твердые покрытия | milestone | 0d | 2029-12-24 | 2029-12-24 | 1522SS | 645d |  |  |  |
| 195 | 1.3.22.2 | Старт СМР - озеленение | milestone | 0d | 2029-12-24 | 2029-12-24 | 1524SS | 645d |  |  |  |
| 196 | 1.3.22.3 | Старт СМР - монтаж МАФ | milestone | 0d | 2030-03-13 | 2030-03-13 | 1530SS | 570d |  |  |  |
| 197 | 2 | **Земельно-правовые отношения** |  | 586d | 2026-06-01 | 2028-01-16 |  | 3d |  |  | П1, К1, ОП |
| 198 | 2.1 | Проведение ДД и выкуп 100% акций |  | 1d | 2026-06-01 | 2026-06-02 |  | 3d | 0d | start no earlier than 2026-06-01 | П1, К1 |
| 199 | 2.2 | Оформление прав на ЗУ |  | 30d | 2026-06-02 | 2026-07-02 | 198 | 175d | 0d |  | П1, К1 |
| 200 | 2.3 | Межевание ЗУ |  | 30d | 2026-07-02 | 2026-08-01 | 199 | 178d | 0d |  | П1, К1 |
| 201 | 2.4 | Оформление прав на объекты недвижимости |  | 30d | 2026-08-01 | 2026-08-31 | 200 | 178d | 0d |  | П1, К1 |
| 202 | 2.5 | Постановка на кадастровый учет объектов |  | 30d | 2026-08-31 | 2026-09-30 | 201 | 178d | 135d |  | П1, К1 |
| 203 | 2.6 | **Смена ВРИ** |  | 35d | 2027-02-16 | 2027-03-23 |  | 43d |  |  | П1, К1 |
| 204 | 2.6.1 | Обращение в ДГИ о смене ВРИ |  | 1d | 2027-02-16 | 2027-02-17 | 202, 223 | 40d | 0d |  | П1, К1 |
| 205 | 2.6.2 | Получение РП о смене ВРИ |  | 1d | 2027-02-17 | 2027-02-18 | 204 | 40d | 0d |  | П1, К1 |
| 206 | 2.6.3 | Внесение изминений в кадастр (направляет ДГИ) |  | 10d | 2027-02-18 | 2027-02-28 | 205 | 40d | 0d |  | П1, К1 |
| 207 | 2.6.4 | Перерасчет КС в ГБУ |  | 7d | 2027-02-28 | 2027-03-07 | 206 | 40d | 0d |  | П1, К1 |
| 208 | 2.6.5 | Получение ДС о смене ВРИ с расчетом доплаты |  | 3d | 2027-03-07 | 2027-03-10 | 207 | 40d | 0d |  | П1, К1 |
| 209 | 2.6.6 | Согласование внутри организации |  | 5d | 2027-03-10 | 2027-03-15 | 208 | 40d | 0d |  | П1, К1 |
| 210 | 2.6.7 | Подписание ДС со стороны ДГИ |  | 2d | 2027-03-15 | 2027-03-17 | 209 | 40d | 0d |  | П1, К1 |
| 211 | 2.6.8 | Регистрация ДС о смене ВРИ |  | 6d | 2027-03-17 | 2027-03-23 | 210 | 40d | 0d |  | П1, К1 |

| ID | WBS | Task | Type | Duration | Start | Finish | Predecessors | Total slack | Free slack | Text2 | Text1 | комментарий |
| --- | --- | --- | --- | --- | --- | --- | --- | --- | --- | --- | --- | --- |
| 212 | 2.7 | **Оформление ЗУ под офис продаж** |  | 42d | 2027-12-01 | 2028-01-16 |  | 1185d |  | ОП |  |  |
| 213 | 2.7.1 | Согласование СГП в МГГТ |  | 14d | 2027-12-01 | 2027-12-15 | 364 | 1371d | 0d | ОП |  |  |
| 214 | 2.7.2 | Согласование СГП в префектуре |  | 14d | 2027-12-01 | 2027-12-15 | 364 | 1183d | 0d | ОП |  |  |
| 215 | 2.7.3 | Заключение договора аренды с ДГИ |  | 14d | 2027-12-15 | 2027-12-29 | 214 | 1183d | 0d | ОП |  |  |
| 216 | 2.7.4 | Открытие ордера |  | 14d | 2027-12-29 | 2028-01-16 | 215 | 1183d | 14d | ОП |  |  |
| 217 | 3 | **Разработка и согласование ППТ** |  | 255d | 2026-06-02 | 2027-02-16 |  | 43d | 0d | П1, К1 | 02.01 | регламентные привязки и длительности |
| 218 | 3.1 | Решение ГЗК о разработке ППТ |  | 30d | 2026-06-02 | 2026-07-02 | 226 | 40d | 0d | П1, К1 |  | регламентные привязки и длительности |
| 219 | 3.2 | Разработка ППТ |  | 25d | 2026-07-02 | 2026-07-27 | 218 | 43d | 0d | П1, К1 |  | регламентные привязки и длительности |
| 220 | 3.3 | Согласование ППТ |  | 60d | 2026-07-27 | 2026-09-25 | 219 | 43d | 0d | П1, К1 |  | регламентные привязки и длительности |
| 221 | 3.4 | Публичные слушания |  | 80d | 2026-09-25 | 2026-12-14 | 220 | 43d | 0d | П1, К1 |  | регламентные привязки и длительности |
| 222 | 3.5 | Распорядительный документ об утверждении ППТ |  | 30d | 2026-12-14 | 2027-01-17 | 221 | 40d | 0d | П1, К1 |  | регламентные привязки и длительности |
| 223 | 3.6 | Корректировка ПЗЗ |  | 30d | 2027-01-17 | 2027-02-16 | 222 | 40d | 0d | П1, К1 |  | регламентные привязки и длительности |
| 224 | 4 | Получен ГПЗУ |  | 30d | 2027-03-23 | 2027-04-22 | 211, 223 | 40d | 0d | П1, К1 |  | регламентные привязки и длительности |
| 225 | 5 | **Предпроектные проработки, Стадия Проект** |  | 1826d | 2023-01-10 | 2028-01-30 |  | 1230d |  | П1, К1 |  | регламентные привязки и длительности |
| 226 | 5.1 | Согласовано МЗ | milestone | 0d | 2026-06-02 | 2026-06-02 | 198 | 3d | 0d | П1, К1 |  | регламентные привязки и длительности |
| 227 | 5.2 | **Изыскания** |  | 1514d | 2023-01-10 | 2027-03-20 |  | 1537d |  | П1, К1 |  | регламентные привязки и длительности |
| 228 | 5.2.1 | **Проведение инженерно-геодезических изысканий** |  | 37d | 2026-10-12 | 2026-11-18 |  | 250d |  | П1, К1 |  | регламентные привязки и длительности |
| 229 | 5.2.1.1 | Подписан договор с МГГТ |  | 7d | 2026-10-12 | 2026-10-19 | 542 | 250d | 0d | П1, К1 |  | регламентные привязки и длительности |
| 230 | 5.2.1.2 | Проведение изысканий |  | 30d | 2026-10-19 | 2026-11-18 | 229 | 250d | 0d | П1, К1 |  | регламентные привязки и длительности |
| 231 | 5.2.1.3 | Получены инженерно-геодезические изыскания | milestone | 0d | 2026-11-18 | 2026-11-18 | 199, 230 | 247d | 0d | П1, К1 |  | регламентные привязки и длительности |
| 232 | 5.2.2 | **Проведение инженерно геологических, экологических изысканий** |  | 54d | 2026-10-12 | 2026-12-05 |  | 178d |  | П1, К1 |  | регламентные привязки и длительности |
| 233 | 5.2.2.1 | Согласование расположение скважин и ТЗ |  | 4d | 2026-10-12 | 2026-10-16 | 542 | 178d | 0d | П1, К1 |  | регламентные привязки и длительности |
| 234 | 5.2.2.2 | Проведение полевых работ |  | 20d | 2026-10-16 | 2026-11-05 | 233 | 178d | 0d | П1, К1 |  | регламентные привязки и длительности |
| 235 | 5.2.2.3 | Камеральные работы |  | 20d | 2026-11-05 | 2026-11-25 | 234 | 175d | 0d | П1, К1 |  | регламентные привязки и длительности |
| 236 | 5.2.2.4 | Оформление томов ИГИ, ИЭИ |  | 10d | 2026-11-25 | 2026-12-05 | 235 | 178d | 0d | П1, К1 |  | регламентные привязки и длительности |
| 237 | 5.2.2.5 | Получены изыскания ИГИ, ИЭИ | milestone | 0d | 2026-12-05 | 2026-12-05 | 236 | 175d | 0d | П1, К1 |  | регламентные привязки и длительности |

| ID | WBS | Task | Type | Duration | Start | Finish | Predecessors | Total slack | Free slack | Text2 | комментарий |
| --- | --- | --- | --- | --- | --- | --- | --- | --- | --- | --- | --- |
| 238 | 5.2.3 | **Проведение обследования окружающей застройки** |  | 44d | 2027-02-04 | 2027-03-20 |  | 1396d |  | П1, К1 | регламентные привязки и длительности |
| 239 | 5.2.3.1 | Определена зона влияния |  | 3d | 2027-02-04 | 2027-02-07 | 548 | 1394d | 0d | П1, К1 | регламентные привязки и длительности |
| 240 | 5.2.3.2 | Получение согласований доступа для обследования |  | 7d | 2027-02-07 | 2027-02-14 | 239 | 1394d | 0d | П1, К1 | регламентные привязки и длительности |
| 241 | 5.2.3.3 | Проведение обследований |  | 14d | 2027-02-14 | 2027-02-28 | 240 | 1394d | 0d | П1, К1 | регламентные привязки и длительности |
| 242 | 5.2.3.4 | Формирование томов документации |  | 20d | 2027-02-28 | 2027-03-20 | 241 | 1394d | 0d | П1, К1 | регламентные привязки и длительности |
| 243 | 5.2.4 | **Проведение обследований зеленых насаждений и оформление дендроплана** |  | 45d | 2023-01-10 | 2023-02-24 |  | 3116d |  | П1, К1 | регламентные привязки и длительности |
| 244 | 5.2.4.1 | Проведен внутренний тендер на дендрологию, подготовка СЗ |  | 10d | 2023-01-10 | 2023-01-20 |  | 3114d | 0d | П1, К1 | регламентные привязки и длительности |
| 245 | 5.2.4.2 | Проведение обследования |  | 10d | 2023-01-20 | 2023-01-30 | 244 | 3114d | 0d | П1, К1 | регламентные привязки и длительности |
| 246 | 5.2.4.3 | Оформление дендроплана на строительство сетей, строительство подземной части и т.д. |  | 25d | 2023-01-30 | 2023-02-24 | 245 | 3114d | 0d | П1, К1 | регламентные привязки и длительности |
| 247 | 5.2.4.4 | Получена дендрология | milestone | 0d | 2023-02-24 | 2023-02-24 | 246 | 3114d |  | П1, К1 | регламентные привязки и длительности |
| 248 | 5.2.5 | **Археологические изыскания** |  | 161d | 2023-01-10 | 2023-06-20 |  | 3000d |  | П1, К1 | регламентные привязки и длительности |
| 249 | 5.2.5.1 | Подписание договора по СЗ |  | 7d | 2023-01-10 | 2023-01-17 |  | 2998d | 0d | П1, К1 | регламентные привязки и длительности |
| 250 | 5.2.5.2 | Передача исходных данны |  | 14d | 2023-01-17 | 2023-01-31 | 249 | 2998d | 0d | П1, К1 | регламентные привязки и длительности |
| 251 | 5.2.5.3 | Разработка раздела об обеспечении сохранности объектов археологического наследия |  | 60d | 2023-01-31 | 2023-04-01 | 250 | 2998d | 0d | П1, К1 | регламентные привязки и длительности |
| 252 | 5.2.5.4 | Согласование Раздела сохранности ОКН в Департаменте культурного наследия |  | 80d | 2023-04-01 | 2023-06-20 | 251 | 2998d | 0d | П1, К1 | регламентные привязки и длительности |
| 253 | 5.2.5.5 | Археологические изыскания согласованы | milestone | 0d | 2023-06-20 | 2023-06-20 | 252 | 2998d |  | П1, К1 | регламентные привязки и длительности |
| 254 | 5.3 | **Разработка ПД по СЗЗ (при необходимости)** |  | 150d | 2027-04-22 | 2027-09-19 |  | 43d |  | П1, К1 | регламентные привязки и длительности |
| 255 | 5.3.1 | Контрактование подрядчика на разработку проектов СЗЗ |  | 30d | 2027-04-22 | 2027-05-22 | 224 | 40d | 0d |  | регламентные привязки и длительности |
| 256 | 5.3.2 | Разработка проекта СЗЗ и получение согласие собственика |  | 60d | 2027-05-22 | 2027-07-21 | 255 | 40d | 0d |  | регламентные привязки и длительности |
| 257 | 5.3.3 | Получение экспертного заключения |  | 30d | 2027-07-21 | 2027-08-20 | 256 | 40d | 0d |  | регламентные привязки и длительности |
| 258 | 5.3.4 | Получение Решения Роспотребнадзора о сокращении СЗЗ |  | 30d | 2027-08-20 | 2027-09-19 | 257 | 40d | 0d |  | регламентные привязки и длительности |
| 259 | 5.4 | **Подписаны все технические условия** |  | 33d | 2027-04-19 | 2027-05-22 |  | 657d |  | П1, К1 | регламентные привязки и длительности |
| 260 | 5.4.1 | Электроснабжение | milestone | 0d | 2027-05-22 | 2027-05-22 | 1616 | 622d | 0d | П1, К1 | регламентные привязки и длительности |
| 261 | 5.4.2 | Водоснабжение и канализование | milestone | 0d | 2027-05-22 | 2027-05-22 | 1618 | 1582d | 0d | П1, К1 | регламентные привязки и длительности |
| 262 | 5.4.3 | Водосток | milestone | 0d | 2027-05-22 | 2027-05-22 | 1618, 1619 | 1582d | 0d | П1, К1 | регламентные привязки и длительности |
| 263 | 5.4.4 | Тепловые сети | milestone | 0d | 2027-05-22 | 2027-05-22 | 1617 | 622d | 0d | П1, К1 | регламентные привязки и длительности |
| 264 | 5.4.5 | Слабые токи | milestone | 0d | 2027-05-22 | 2027-05-22 | 1620 | 1582d | 0d | П1, К1 | регламентные привязки и длительности |
| 265 | 5.4.6 | Вынос сетей | milestone | 0d | 2027-04-19 | 2027-04-19 | 1615 | 1615d |  | П1, К1 | регламентные привязки и длительности |
| 266 | 5.4.7 | Механизация | milestone | 0d | 2027-05-22 | 2027-05-22 | 1616 | 1582d |  | П1, К1 | регламентные привязки и длительности |

| ID | WBS | Task | Type | Duration | Start | Finish | Predecessors | Total slack | Free slack | Text2 | комментарий |
| --- | --- | --- | --- | --- | --- | --- | --- | --- | --- | --- | --- |
| 267 | 5.5 | **Специальные технические условия (СТУ)** |  | 61d | 2027-06-10 | 2027-08-10 |  | 34d |  | П1, К1 | регламентные привязки и длительности |
| 268 | 5.5.1 | Загрузка текста СТУ (пожарные, общестроительные) | milestone | 0d | 2027-06-10 | 2027-06-10 | 335 | 31d |  | П1, К1 | регламентные привязки и длительности |
| 269 | 5.5.2 | Получение замечаний экспертов к тексту СТУ (пожарные, общестроительные) | milestone | 0d | 2027-07-27 | 2027-07-27 | 349, 268 | 59d | 0d | П1, К1 | регламентные привязки и длительности |
| 270 | 5.5.3 | Согласование СТУ (пожарные, общестроительные) |  | 14d | 2027-07-27 | 2027-08-10 | 269 | 59d | 7d | П1, К1 | регламентные привязки и длительности |
| 271 | 5.6 | **Концепция МОП** |  | 44d | 2027-03-10 | 2027-04-23 |  | 1534.99d | 0d | П1, К1 | регламентные привязки и длительности |
| 272 | 5.6.1 | Передача исходных данных на основании согласованной архитектурной концепции | milestone | 0d | 2027-03-10 | 2027-03-10 | 530 | 1530.99d | 0d | П1, К1 | регламентные привязки и длительности |
| 273 | 5.6.2 | Доработка концепции |  | 30d | 2027-03-10 | 2027-04-09 | 272 | 1530.99d | 0d | П1, К1 | регламентные привязки и длительности |
| 274 | 5.6.3 | Согласование концепции и устранение замечаний |  | 14d | 2027-04-09 | 2027-04-23 | 273 | 1530.99d | 0d | П1, К1 | регламентные привязки и длительности |
| 275 | 5.6.4 | Концепциия МОП согласована | milestone | 0d | 2027-04-23 | 2027-04-23 | 274 | 1530.99d | 0d | П1, К1 | регламентные привязки и длительности |
| 276 | 5.7 | **Концепция БИО** |  | 44d | 2026-10-17 | 2026-11-30 |  | 1753d | 0d | П1, К1 | регламентные привязки и длительности |
| 277 | 5.7.1 | Передача исходных данных на основании согласованной архитектурной концепции | milestone | 0d | 2026-10-17 | 2026-10-17 | 536 | 1751d | 0d | П1, К1 | регламентные привязки и длительности |
| 278 | 5.7.2 | Доработка концепции |  | 30d | 2026-10-17 | 2026-11-16 | 277 | 1753d | 0d | П1, К1 | регламентные привязки и длительности |
| 279 | 5.7.3 | Согласование концепции и устранение замечаний |  | 14d | 2026-11-16 | 2026-11-30 | 278 | 1751d | 0d | П1, К1 | регламентные привязки и длительности |
| 280 | 5.7.4 | Концепция БИО согласована | milestone | 0d | 2026-11-30 | 2026-11-30 | 279 | 1751d | 140d | П1, К1 | регламентные привязки и длительности |
| 281 | 5.8 | **Разработка ВПМ (Высокополигональная модель)** |  | 51d | 2027-02-11 | 2027-04-03 |  | 10d | 0d |  | регламентные привязки и длительности |
| 282 | 5.8.1 | Заключение договора на разработку модели |  | 7d | 2027-02-11 | 2027-02-18 | 305FF, 330FF, 320FF | 7d | 0d |  | регламентные привязки и длительности |
| 283 | 5.8.2 | Разработка модели |  | 30d | 2027-02-18 | 2027-03-20 | 282 | 7d | 0d |  | регламентные привязки и длительности |
| 284 | 5.8.3 | Внутренняя проверка модели |  | 7d | 2027-03-20 | 2027-03-27 | 283 | 7d | 0d |  | регламентные привязки и длительности |
| 285 | 5.8.4 | Устранение замечаний |  | 7d | 2027-03-27 | 2027-04-03 | 284 | 7d | 0d |  | регламентные привязки и длительности |
| 286 | 5.8.5 | ВПМ готова | milestone | 0d | 2027-04-03 | 2027-04-03 | 285 | 7d |  |  | регламентные привязки и длительности |
| 287 | 5.8.6 | Разработка IFC модели |  | 21d | 2027-03-05 | 2027-03-26 | 283FS-15d | 15d |  |  | регламентные привязки и длительности |
| 288 | 5.9 | **Транспортная схема с согласованием** |  | 42d | 2026-08-16 | 2026-09-27 |  | 4d | 0d | П1, К1 | регламентные привязки и длительности |
| 289 | 5.9.1 | Заключение договора на разработку и утверждение ТС |  | 7d | 2026-08-16 | 2026-08-23 | 305 | 4d | 0d | П1, К1 | регламентные привязки и длительности |
| 290 | 5.9.2 | Разработка транспортной схемы |  | 14d | 2026-08-23 | 2026-09-06 | 289 | 4d | 0d | П1, К1 | регламентные привязки и длительности |
| 291 | 5.9.3 | Предварительное согласование в МКА |  | 7d | 2026-09-06 | 2026-09-13 | 290 | 4d | 0d |  | регламентные привязки и длительности |
| 292 | 5.9.4 | Согласование транспортной схемы в МКА |  | 14d | 2026-09-13 | 2026-09-27 | 291 | 4d | 0d | П1, К1 | регламентные привязки и длительности |

Notes:
- 288: Трошкина

| ID | WBS | Task | Type | Duration | Start | Finish | Predecessors | Total slack | Free slack | Text2 | комментарий |
| --- | --- | --- | --- | --- | --- | --- | --- | --- | --- | --- | --- |
| 293 | 5.10 | **ПОДД** |  | 49d | 2026-09-27 | 2026-11-15 |  | 1768d |  | П1, К1 | регламентные привязки и длительности |
| 294 | 5.10.1 | Согласование схемы маршрутизации в Мосгортанс |  | 14d | 2026-09-27 | 2026-10-11 | 292 | 1768d | 0d | П1, К1 | регламентные привязки и длительности |
| 295 | 5.10.2 | Согласование ПОДД в ЦОДД |  | 14d | 2026-10-11 | 2026-10-25 | 294 | 1768d | 0d | П1, К1 | регламентные привязки и длительности |
| 296 | 5.10.3 | Согласование транспортной схемы в Департаменте транспорта |  | 21d | 2026-10-25 | 2026-11-15 | 295 | 1768d | 0d | П1, К1 | регламентные привязки и длительности |
| 297 | 5.10.4 | Согласована Транспортная схема, ПОДД | milestone | 0d | 2026-11-15 | 2026-11-15 | 296 | 1766d |  | П1, К1 | регламентные привязки и длительности |
| 298 | 5.11 | **Документация на снос** |  | 74d | 2026-11-18 | 2027-02-04 |  | 250d |  | П1, К1 | регламентные привязки и длительности |
| 299 | 5.11.1 | Проведен внутреннего тендер на проект сноса, подготовка СЗ |  | 30d | 2026-11-18 | 2026-12-18 | 231 | 247d | 0d | П1, К1 | регламентные привязки и длительности |
| 300 | 5.11.2 | Проект сноса (ПОД, ТР, ООС) |  | 30d | 2026-12-18 | 2027-01-21 | 299 | 247d | 0d | П1, К1 | регламентные привязки и длительности |
| 301 | 5.11.3 | Разработка ППР |  | 14d | 2027-01-21 | 2027-02-04 | 300 | 1625d | 178d | П1, К1 | регламентные привязки и длительности |
| 302 | 5.11.4 | Cогласован СГП в ОПС на снос |  | 14d | 2027-01-21 | 2027-02-04 | 300 | 247d | 0d | П1, К1 | регламентные привязки и длительности |
| 303 | 5.12 | **Архитектурная концепция** |  | 197d | 2026-06-07 | 2026-12-21 |  | 73d |  | П1, К1 | регламентные привязки и длительности |
| 304 | 5.12.1 | Начало конкурса | milestone | 0d | 2026-06-07 | 2026-06-07 | 520 | 1927d |  | П1, К1 | регламентные привязки и длительности |
| 305 | 5.12.2 | Выбор победителя | milestone | 0d | 2026-08-16 | 2026-08-16 | 524 | 3d | 0d |  | регламентные привязки и длительности |
| 306 | 5.12.3 | **Подготовка материалов для раб.рассмотрения у архитектора** |  | 14d | 2026-08-16 | 2026-08-30 |  | 3d | 0d |  | регламентные привязки и длительности |
| 307 | 5.12.3.1 | Доработка ген.плана |  | 7d | 2026-08-16 | 2026-08-23 | 305 | 3d | 0d |  | регламентные привязки и длительности |
| 308 | 5.12.3.2 | Доработка планировок |  | 7d | 2026-08-16 | 2026-08-23 | 305 | 3d | 0d |  | регламентные привязки и длительности |
| 309 | 5.12.3.3 | Доработка разрезов и фасадов |  | 7d | 2026-08-16 | 2026-08-23 | 305 | 3d | 0d |  | регламентные привязки и длительности |
| 310 | 5.12.3.4 | Альбом макет |  | 7d | 2026-08-23 | 2026-08-30 | 307, 308, 309 | 3d |  |  | регламентные привязки и длительности |
| 311 | 5.12.3.5 | Разработка низкополигональной модели |  | 7d | 2026-08-23 | 2026-08-30 | 307, 308, 309 | 3d | 0d |  | регламентные привязки и длительности |
| 312 | 5.12.4 | Архитектурная концепция доработана (вехи КК1-3) | milestone | 0d | 2026-12-21 | 2026-12-21 | 329 | 55d | 0d | П1, К1 | регламентные привязки и длительности |
| 313 | 5.13 | **Согласование концепции с Мэром** |  | 60d | 2026-08-30 | 2026-10-29 |  | 3d | 0d |  | регламентные привязки и длительности |
| 314 | 5.13.1 | **Рабочее рассмотрение у главного архитектора** |  | 29d | 2026-08-30 | 2026-09-28 |  | 3d |  |  | регламентные привязки и длительности |
| 315 | 5.13.1.1 | Направление пакета документов на рассмотрение |  | 1d | 2026-08-30 | 2026-08-31 | 311, 306 | 3d | 0d |  | регламентные привязки и длительности |
| 316 | 5.13.1.2 | Назначение даты раб.рассмотрения |  | 14d | 2026-08-31 | 2026-09-14 | 315 | 3d | 0d |  | регламентные привязки и длительности |
| 317 | 5.13.1.3 | Рабочее рассмотрение проведено |  | 14d | 2026-09-14 | 2026-09-28 | 316, 290 | 3d | 0d |  | регламентные привязки и длительности |

Notes:
- 293: Трошкина

| ID | WBS | Task | Type | Duration | Start | Finish | Predecessors | Baseline start | Baseline finish | Baseline duration | Total slack | Free slack | комментарий | Text2 |
| --- | --- | --- | --- | --- | --- | --- | --- | --- | --- | --- | --- | --- | --- | --- |
| 318 | 5.13.2 | **Утверждение архитектуры у Мэра** |  | 31d | 2026-09-28 | 2026-10-29 |  |  |  |  | 3d |  | регламентные привязки и длительности |  |
| 319 | 5.13.2.1 | Направление пакета документов на рассмотрение |  | 1d | 2026-09-28 | 2026-09-29 | 317, 292 |  |  |  | 3d | 0d | регламентные привязки и длительности |  |
| 320 | 5.13.2.2 | Рассмотрение значимых объектов проведено, получен ОК |  | 30d | 2026-09-29 | 2026-10-29 | 319 |  |  |  | 3d | 0d | регламентные привязки и длительности |  |
| 321 | 5.14 | **Проектные работы стадия П** |  | 254d | 2026-10-24 | 2027-07-09 |  |  |  |  | 3d |  | регламентные привязки и длительности | П1, К1 |
| 322 | 5.14.1 | **Разработка консолидированной концепции и проектной документации** |  | 225d | 2026-10-24 | 2027-06-10 |  |  |  |  | 3d |  | регламентные привязки и длительности | П1, К1 |
| 323 | 5.14.1.1 | Передача исходных данных для старта проектирования | milestone | 0d | 2026-10-29 | 2026-10-29 | 553, 524, 320 |  |  |  | 3d | 0d | регламентные привязки и длительности | П1, К1 |
| 324 | 5.14.1.2 | Анализ переданных исходных данных генеральным проектировщиком, уточненние архитектрурной концепции |  | 7d | 2026-10-29 | 2026-11-05 | 323 |  |  |  | 1778d |  | регламентные привязки и длительности | П1, К1 |
| 325 | 5.14.1.3 | Сбор нагрузок, формирование эскиза №2 |  | 7d | 2026-10-24 | 2026-10-31 | 323FS-5d |  |  |  | 3d | 0d | регламентные привязки и длительности | П1, К1 |
| 326 | 5.14.1.4 | Сбор нагрузок для ТУ согласован | milestone | 0d | 2026-10-31 | 2026-10-31 | 325 |  |  |  | 3d | 0d | регламентные привязки и длительности | П1, К1 |
| 327 | 5.14.1.5 | Разработка Консолидированной концепции Веха КК1 |  | 21d | 2026-10-31 | 2026-11-21 | 326 |  |  |  | 3d | 0d | регламентные привязки и длительности | П1, К1 |
| 328 | 5.14.1.6 | Разработка Консолидированной концепции Веха КК2 |  | 21d | 2026-11-21 | 2026-12-12 | 327 |  |  |  | 1739d |  | регламентные привязки и длительности | П1, К1 |
| 329 | 5.14.1.7 | Разработка Консолидированной концепции Веха КК3 |  | 30d | 2026-11-21 | 2026-12-21 | 327 |  |  |  | 3d | 0d | регламентные привязки и длительности | П1, К1 |
| 330 | 5.14.1.8 | Разработка Консолидированной концепции Веха КК4 |  | 55d | 2026-12-21 | 2027-02-18 | 329 |  |  |  | 3d | 0d | регламентные привязки и длительности | П1, К1 |
| 331 | 5.14.1.9 | Разработка Консолидированной концепции Веха КК5 |  | 75d | 2027-02-18 | 2027-05-04 | 330 |  |  |  | 29d | 0d | регламентные привязки и длительности | П1, К1 |
| 332 | 5.14.1.10 | Разработка Консолидированной концепции Веха КК6 |  | 75d | 2027-02-18 | 2027-05-04 | 330 |  |  |  | 29d | 0d | регламентные привязки и длительности | П1, К1 |
| 333 | 5.14.1.11 | Согласованы принципиальные геотехнические решения | milestone | 0d | 2027-05-04 | 2027-05-04 | 331 |  |  |  | 68d | 0d | регламентные привязки и длительности | П1, К1 |
| 334 | 5.14.1.12 | Согласована консолидированная концепция |  | 7d | 2027-05-04 | 2027-05-11 | 331, 332 |  |  |  | 52d | 0d | регламентные привязки и длительности | П1, К1 |
| 335 | 5.14.1.13 | Оформление и согласование томов проектной документации |  | 37d | 2027-05-04 | 2027-06-10 | 331, 332, 237 |  |  |  | 29d | 0d | регламентные привязки и длительности | П1, К1 |
| 336 | 5.14.2 | **Внутреннее согласование буклета АГР** |  | 51d | 2027-02-18 | 2027-04-10 |  | 2024-05-01 | 2024-05-22 | 21d | 3d |  | регламентные привязки и длительности | П1, К1 |
| 337 | 5.14.2.1 | Разработка буклета АГР |  | 30d | 2027-02-18 | 2027-03-20 | 312, 330, 320, 536 |  |  |  | 3d | 0d | регламентные привязки и длительности |  |
| 338 | 5.14.2.2 | Внутренне рассмотрение и выдача замечаний Управлением проектирования |  | 7d | 2027-03-20 | 2027-03-27 | 337 | 2024-05-01 | 2024-05-12 | 11d | 3d | 0d | регламентные привязки и длительности | П1, К1 |
| 339 | 5.14.2.3 | Устранение замечаний |  | 7d | 2027-03-27 | 2027-04-03 | 338 | 2024-05-12 | 2024-05-22 | 10d | 3d | 0d | регламентные привязки и длительности | П1, К1 |
| 340 | 5.14.2.4 | Согласование АГР внутри компании |  | 7d | 2027-04-03 | 2027-04-10 | 339 | 2024-05-22 | 2024-05-22 | 0d | 3d | 0d | регламентные привязки и длительности | П1, К1 |
| 341 | 5.14.3 | **Получение свидетельства об утверждении АГР** |  | 90d | 2027-04-10 | 2027-07-09 |  |  |  |  | 3d |  | регламентные привязки и длительности | П1, К1 |
| 342 | 5.14.3.1 | Согласование ГлавАПУ и включение в повестку |  | 15d | 2027-04-10 | 2027-04-25 | 340, 286, 287 |  |  |  | 3d | 0d | регламентные привязки и длительности | П1, К1 |
| 343 | 5.14.3.2 | Итоговое согласование у мэра |  | 15d | 2027-04-25 | 2027-05-10 | 342 |  |  |  | 3d | 0d | регламентные привязки и длительности | П1, К1 |
| 344 | 5.14.3.3 | Получение протокола по итогам согласования у Мэра |  | 30d | 2027-05-10 | 2027-06-09 | 343 |  |  |  | 3d | 0d | регламентные привязки и длительности |  |
| 345 | 5.14.3.4 | Получено Свидетельство об утверждении АГР |  | 30d | 2027-06-09 | 2027-07-09 | 224, 344 |  |  |  | 3d | 0d | регламентные привязки и длительности | П1, К1 |

| ID | WBS | Task | Type | Duration | Start | Finish | Predecessors | Total slack | Free slack | Calendar | Text2 | комментарий |
| --- | --- | --- | --- | --- | --- | --- | --- | --- | --- | --- | --- | --- |
| 346 | 5.15 | **Получение заключения экспертизы** |  | 74d | 2027-07-09 | 2027-09-21 |  | 3d |  |  | П1, К1 | регламентные привязки и длительности |
| 347 | 5.15.1 | Подача заявки на заключение договора |  | 2d | 2027-07-09 | 2027-07-11 | 345, 335 | 3d | 0d |  | П1, К1 | регламентные привязки и длительности |
| 348 | 5.15.2 | Загрузка ПД и ИИ в экспертизу |  | 2d | 2027-07-11 | 2027-07-13 | 347, 335, 268 | 3d | 0d |  | П1, К1 | регламентные привязки и длительности |
| 349 | 5.15.3 | Назначение экспертов и выдача замечаний |  | 14d | 2027-07-13 | 2027-07-27 | 348 | 3d | 0d |  | П1, К1 | регламентные привязки и длительности |
| 350 | 5.15.4 | Обработка замечаний, консультации с экспертами |  | 7d | 2027-07-27 | 2027-08-03 | 349 | 52d | 0d |  | П1, К1 | регламентные привязки и длительности |
| 351 | 5.15.5 | Загрузка исправленной ПД и ИИ |  | 28d | 2027-08-03 | 2027-08-31 | 350, 270FS-14d | 52d | 0d |  | П1, К1 | регламентные привязки и длительности |
| 352 | 5.15.6 | Получение и вычитка локальных заключений |  | 7d | 2027-08-31 | 2027-09-07 | 351 | 52d | 12d |  | П1, К1 | регламентные привязки и длительности |
| 353 | 5.15.7 | Формирование и утверждение сводного заключения |  | 2d | 2027-09-19 | 2027-09-21 | 352, 258 | 40d | 0d |  | П1, К1 | регламентные привязки и длительности |
| 354 | 5.16 | **Получение разрешения на строительство** |  | 7d | 2027-09-21 | 2027-09-28 |  | 43d |  |  | П1, К1 | регламентные привязки и длительности |
| 355 | 5.16.1 | Формирование заявки |  | 1d | 2027-09-21 | 2027-09-22 | 353, 345 | 40d | 0d |  |  | регламентные привязки и длительности |
| 356 | 5.16.2 | Подача и регистрация заявки |  | 1d | 2027-09-22 | 2027-09-23 | 355 | 40d | 0d |  | П1, К1 | регламентные привязки и длительности |
| 357 | 5.16.3 | Расмотрение пакета документов |  | 3d | 2027-09-23 | 2027-09-26 | 356 | 40d | 0d |  | П1, К1 | регламентные привязки и длительности |
| 358 | 5.16.4 | Выдача замечаний для устранения |  | 1d | 2027-09-26 | 2027-09-27 | 357 | 40d | 0d |  | П1, К1 | регламентные привязки и длительности |
| 359 | 5.16.5 | Решение о выдаче разрешения на строительство |  | 1d | 2027-09-27 | 2027-09-28 | 358 | 40d | 0d |  | П1, К1 | регламентные привязки и длительности |
| 360 | 5.16.6 | Разрешение на строительство получено | milestone | 0d | 2027-09-28 | 2027-09-28 | 359, 211 | 40d | 0d |  | П1, К1 | регламентные привязки и длительности |
| 361 | 5.17 | **Проектирование Офиса продаж** |  | 84d | 2027-11-03 | 2028-01-30 |  | 1171d |  |  | ОП | регламентные привязки и длительности |
| 362 | 5.17.1 | Согласовано место размещения офиса продаж с учетом точек подключения | milestone | 0d | 2027-11-03 | 2027-11-03 | 577 | 1175d | 0d |  | ОП | регламентные привязки и длительности |
| 363 | 5.17.2 | Получено Маркетинговое и рекламное задание | milestone | 0d | 2027-11-03 | 2027-11-03 | 362 | 1175d | 0d |  | ОП | регламентные привязки и длительности |
| 364 | 5.17.3 | Разработка СГП для оформления участка в аренду |  | 14d | 2027-11-17 | 2027-12-01 | 362, 578 | 1183d | 0d |  | ОП | регламентные привязки и длительности |
| 365 | 5.17.4 | Разработка дизайн проекта БИО, МОП, Архитектура |  | 30d | 2027-11-17 | 2027-12-17 | 363, 578 | 1161d | 0d |  | ОП | регламентные привязки и длительности |
| 366 | 5.17.5 | Разработка черетежей РД НИС, АР, КР |  | 20d | 2027-12-17 | 2028-01-10 | 365 | 1161d | 0d |  | ОП | регламентные привязки и длительности |
| 367 | 5.17.6 | Разработка чертежей ИОС АИ |  | 20d | 2028-01-10 | 2028-01-30 | 366 | 1169d | 0d |  | ОП | регламентные привязки и длительности |
| 368 | 5.17.7 | Согласованно РД в ПР | milestone | 0d | 2028-01-30 | 2028-01-30 | 367 | 1169d | 0d |  | ОП | регламентные привязки и длительности |
| 369 | 6 | **Планирование** |  | 202.97d | 2026-12-21 | 2027-10-12 |  | 1004.86d |  | 5/2 | П1, К1 | регламентные привязки и длительности |
| 370 | 6.1 | **Формирование целевых бюджетов (раб.дни)** |  | 192.98d | 2026-12-21 | 2027-09-28 |  | 1014.85d |  | 5/2 | П1, К1 | регламентные привязки и длительности |
| 371 | 6.1.1 | Разработка ЦБ0 на основании Архитектурной концепции |  | 23d | 2026-12-21 | 2027-01-29 | 312 | 1171.83d | 0d | 5/2 | П1, К1 | регламентные привязки и длительности |
| 372 | 6.1.2 | Бюджет ЦБ 0 согласован |  | 4d | 2027-02-09 | 2027-02-15 | 371FS+7d | 1171.83d | 0d | 5/2 | П1, К1 | регламентные привязки и длительности |

| ID | WBS | Task | Type | Duration | Start | Finish | Predecessors | Total slack | Free slack | Calendar | Text2 | комментарий |
| --- | --- | --- | --- | --- | --- | --- | --- | --- | --- | --- | --- | --- |
| 373 | 6.1.3 | **Разработка бюджета ЦБ1 (раб.дни)** |  | 45d | 2027-07-12 | 2027-09-13 |  | 1014.85d | 0d | 5/2 | П1, К1 | регламентные привязки и длительности |
| 374 | 6.1.3.1 | Предоставление данных с учетом ВОР (проектная группа) |  | 32d | 2027-07-12 | 2027-08-25 | 348SS, 275 | 1012.85d | 0d | 5/2 |  | регламентные привязки и длительности |
| 375 | 6.1.3.2 | Расчет ЦБ1 (сметно-договорное управление) |  | 13d | 2027-08-25 | 2027-09-13 | 374 | 1012.85d | 0d | 5/2 |  | регламентные привязки и длительности |
| 376 | 6.1.4 | Бюджет ЦБ 1 согласован (не позднее +14дн после РС) |  | 4d | 2027-09-22 | 2027-09-28 | 373FS+7d | 1012.85d | 0d | 5/2 | П1, К1 | регламентные привязки и длительности |
| 377 | 6.2 | **Формирование базового графика фазы "РС-передача"** |  | 19d | 2027-09-23 | 2027-10-12 |  | 1441d |  |  | П1, К1 | регламентные привязки и длительности |
| 378 | 6.2.1 | Разработка графика РС-РВЭ-Передача ключей |  | 7d | 2027-09-23 | 2027-09-30 | 356 | 1439d | 0d |  | П1, К1 | регламентные привязки и длительности |
| 379 | 6.2.2 | Согласование графика внутри подразделений |  | 6d | 2027-09-30 | 2027-10-06 | 378 | 1439d | 0d |  | П1, К1 | регламентные привязки и длительности |
| 380 | 6.2.3 | Утверждение графика проекта и контрольных вех |  | 6d | 2027-10-06 | 2027-10-12 | 379 | 1439d |  |  | П1, К1 | регламентные привязки и длительности |
| 381 | 7 | **Старт продаж** |  | 7d | 2027-10-07 | 2027-10-14 |  | 1439d |  |  | П1, К1, ОП | регламентные привязки и длительности |
| 382 | 7.1 | **Подготовка к старту продаж** |  | 7d | 2027-10-07 | 2027-10-14 |  | 1439d |  |  | П1, К1, ОП | регламентные привязки и длительности |
| 383 | 7.1.1 | Пилотный ДДУ подан на регистрацию | milestone | 0d | 2027-10-07 | 2027-10-07 | 360FS+9d | 1437d | 0d |  | П1, К1 | регламентные привязки и длительности |
| 384 | 7.1.2 | Пилотный ДДУ зарегистрирован | milestone | 0d | 2027-10-14 | 2027-10-14 | 383FS+7d, 1099 | 1437d | 0d |  | П1, К1 | регламентные привязки и длительности |
| 385 | 7.1.3 | Старт продаж | milestone | 0d | 2027-10-14 | 2027-10-14 | 384 | 1437d | 0d |  | П1, К1 | регламентные привязки и длительности |
| 386 | 8 | **Разработка РД** |  | 352d | 2026-12-08 | 2027-11-29 |  | 205d |  |  | П1, К1 |  |
| 387 | 8.1 | **Строительный генеральный план на период строительства** |  | 28d | 2027-05-04 | 2027-06-01 |  | 71d |  |  | П1, К1 |  |
| 388 | 8.1.1 | Разработка СГП на нулевой цикл |  | 14d | 2027-05-04 | 2027-05-18 | 333, 331 | 68d | 0d |  | П1, К1 |  |
| 389 | 8.1.2 | Разработка СГП на основной период |  | 14d | 2027-05-04 | 2027-05-18 | 333 | 1558d | 52d |  |  |  |
| 390 | 8.1.3 | Согласование СГП в Мосгоргеотресте |  | 14d | 2027-05-18 | 2027-06-01 | 388 | 68d | 0d |  | П1, К1 |  |
| 391 | 8.2 | **Разработка рабочей документации котлован (ограждение, сваи, разработка)** |  | 44d | 2027-07-27 | 2027-09-09 |  | 3d |  |  | П1, К1 |  |
| 392 | 8.2.1 | Разработка рабочей документации котлован (ограждение, сваи, разработка) |  | 30d | 2027-07-27 | 2027-08-26 | 349, 560 | 3d | 0d |  | П1, К1 |  |
| 393 | 8.2.2 | Согласование рабочей документации котлован (ограждение, сваи, разработка) |  | 14d | 2027-08-26 | 2027-09-09 | 392 | 3d | 0d |  | П1, К1 |  |
| 394 | 8.2.3 | Рабочая документация выдана в производство работ котлован (ограждение, сваи, разработка) | milestone | 0d | 2027-09-09 | 2027-09-09 | 393 | 3d | 0d |  | П1, К1 |  |
| 395 | 8.3 | **Разработка КЖ** |  | 98d | 2027-05-11 | 2027-08-17 |  | 55d |  |  |  |  |
| 396 | 8.3.1 | **Разработка рабочей документации фундаментная плита** |  | 38d | 2027-05-11 | 2027-06-18 |  | 236d |  |  | П1, К1 |  |
| 397 | 8.3.1.1 | Разработка рабочей документации фундаментная плита |  | 30d | 2027-05-11 | 2027-06-10 | 560, 334 | 233d | 0d |  | П1, К1 |  |
| 398 | 8.3.1.2 | Согласование рабочей документации фундаментная плита |  | 7d | 2027-06-10 | 2027-06-17 | 397 | 233d | 0d |  | П1, К1 |  |
| 399 | 8.3.1.3 | Рабочая документация выдана в производство работ фундаментная плита |  | 1d | 2027-06-17 | 2027-06-18 | 398 | 233d | 182d |  | П1, К1 |  |

| ID | WBS | Task | Type | Duration | Start | Finish | Predecessors | Total slack | Free slack | Text2 |
| --- | --- | --- | --- | --- | --- | --- | --- | --- | --- | --- |
| 400 | 8.3.2 | **Разработка рабочей документации на свайное основание** |  | 98d | 2027-05-11 | 2027-08-17 |  | 55d |  | П1, К1 |
| 401 | 8.3.2.1 | Разработка РД на тестовые сваи |  | 30d | 2027-05-11 | 2027-06-10 | 560, 334 | 52d | 0d | П1, К1 |
| 402 | 8.3.2.2 | Получены результаты статических испытаний |  | 7d | 2027-08-09 | 2027-08-16 | 401FS+60d | 52d | 0d | П1, К1 |
| 403 | 8.3.2.3 | Разработка рабочей документации на основании проведенных испытаний |  | 1d | 2027-08-16 | 2027-08-17 | 402 | 52d | 0d | П1, К1 |
| 404 | 8.3.2.4 | Выдана рабочая документация в производство работ | milestone | 0d | 2027-08-17 | 2027-08-17 | 403 | 52d | 23d | П1, К1 |
| 405 | 8.3.3 | **Разработка рабочей документации КЖ ниже 0** |  | 38d | 2027-05-11 | 2027-06-18 |  | 296d |  | П1, К1 |
| 406 | 8.3.3.1 | Разработка рабочей документации КЖ ниже 0 |  | 30d | 2027-05-11 | 2027-06-10 | 560, 334 | 293d | 0d | П1, К1 |
| 407 | 8.3.3.2 | Согласование рабочей документации КЖ ниже 0 |  | 7d | 2027-06-10 | 2027-06-17 | 406 | 293d | 0d | П1, К1 |
| 408 | 8.3.3.3 | Рабочая документация выдана в производство работ КЖ ниже 0 |  | 1d | 2027-06-17 | 2027-06-18 | 407 | 293d | 227d | П1, К1 |
| 409 | 8.3.4 | **Разработка рабочей документации КЖ (1 этаж)** |  | 38d | 2027-05-11 | 2027-06-18 |  | 341d |  | П1, К1 |
| 410 | 8.3.4.1 | Разработка рабочей документации КЖ (1 этаж) |  | 30d | 2027-05-11 | 2027-06-10 | 560, 334 | 338d | 0d | П1, К1 |
| 411 | 8.3.4.2 | Согласование рабочей документации КЖ (1 этаж) |  | 7d | 2027-06-10 | 2027-06-17 | 410 | 338d | 0d | П1, К1 |
| 412 | 8.3.4.3 | Рабочая документация выдана в производство работ КЖ (1 этаж) |  | 1d | 2027-06-17 | 2027-06-18 | 411 | 338d |  | П1, К1 |
| 413 | 8.3.5 | **Разработка рабочей документации КЖ типовой этаж (1 ярус)** |  | 38d | 2027-05-11 | 2027-06-18 |  | 1557d |  | П1, К1 |
| 414 | 8.3.5.1 | Разработка рабочей документации КЖ типовой этаж (1 ярус) |  | 30d | 2027-05-11 | 2027-06-10 | 560, 334 | 1555d | 0d | П1, К1 |
| 415 | 8.3.5.2 | Согласование рабочей документации КЖ типовой этаж (1 ярус) |  | 7d | 2027-06-10 | 2027-06-17 | 414 | 1555d | 0d | П1, К1 |
| 416 | 8.3.5.3 | Рабочая документация выдана в производство работ КЖ типовой этаж (1 ярус) |  | 1d | 2027-06-17 | 2027-06-18 | 415 | 1555d |  | П1, К1 |
| 417 | 8.3.6 | **Разработка рабочей документации КЖ типовой этаж (2 ярус и далее расшить на кол-во ярусов в проекте)** |  | 38d | 2027-05-11 | 2027-06-18 |  | 1557d |  | П1, К1 |
| 418 | 8.3.6.1 | Разработка рабочей документации КЖ типовой этаж (2 ярус) |  | 30d | 2027-05-11 | 2027-06-10 | 560, 334 | 1555d | 0d | П1, К1 |
| 419 | 8.3.6.2 | Согласование рабочей документации КЖ типовой этаж (2 ярус) |  | 7d | 2027-06-10 | 2027-06-17 | 418 | 1555d | 0d | П1, К1 |
| 420 | 8.3.6.3 | Рабочая документация выдана в производство работ КЖ типовой этаж (2 ярус) |  | 1d | 2027-06-17 | 2027-06-18 | 419 | 1555d |  | П1, К1 |
| 421 | 8.3.7 | **Разработка рабочей документации КЖ кровля** |  | 38d | 2027-05-11 | 2027-06-18 |  | 1005d |  | П1, К1 |
| 422 | 8.3.7.1 | Разработка рабочей документации КЖ кровля |  | 30d | 2027-05-11 | 2027-06-10 | 560, 334 | 1003d | 0d | П1, К1 |
| 423 | 8.3.7.2 | Согласование рабочей документации КЖ кровля |  | 7d | 2027-06-10 | 2027-06-17 | 422 | 1003d | 0d | П1, К1 |
| 424 | 8.3.7.3 | Рабочая документация выдана в производство работ КЖ кровля |  | 1d | 2027-06-17 | 2027-06-18 | 423 | 1003d | 533d | П1, К1 |

| ID | WBS | Task | Duration | Start | Finish | Predecessors | Total slack | Free slack | Text2 |
| --- | --- | --- | --- | --- | --- | --- | --- | --- | --- |
| 425 | 8.3.8 | **Разработка рабочей документации металлические конструкции** | 38d | 2027-05-11 | 2027-06-18 |  | 765d |  | П1, К1 |
| 426 | 8.3.8.1 | Разработка рабочей документации металлические конструкции | 30d | 2027-05-11 | 2027-06-10 | 560, 334 | 763d | 0d | П1, К1 |
| 427 | 8.3.8.2 | Согласование рабочей документации металлические конструкции | 7d | 2027-06-10 | 2027-06-17 | 426 | 763d | 0d | П1, К1 |
| 428 | 8.3.8.3 | Рабочая документация выдана в производство работ металлические конструкции | 1d | 2027-06-17 | 2027-06-18 | 427 | 763d | 368d | П1, К1 |
| 429 | 8.4 | **Разработка РД ВИС** | 165d | 2026-12-08 | 2027-05-26 |  | 346d |  |  |
| 430 | 8.4.1 | **Разработка рабочей документации ВИС Паркинг** | 165d | 2026-12-08 | 2027-05-26 |  | 726d | 0d |  |
| 431 | 8.4.1.1 | **Разработка рабочей документации ВИС Паркинг (ОВ, ВК)** | 165d | 2026-12-08 | 2027-05-26 |  | 726d |  | П1, К1 |
| 432 | 8.4.1.1.1 | Разработка рабочей документации ИОС (ОВ, ВК) | 150d | 2026-12-08 | 2027-05-11 | 560 | 724d | 0d | П1, К1 |
| 433 | 8.4.1.1.2 | Согласование рабочей документации ИОС (ОВ, ВК) в МОЭК | 14d | 2027-05-11 | 2027-05-25 | 432 | 724d | 0d | П1, К1 |
| 434 | 8.4.1.1.3 | Рабочая документация выдана в производство работ ИОС (ОВ, ВК) | 1d | 2027-05-25 | 2027-05-26 | 433 | 724d |  | П1, К1 |
| 435 | 8.4.1.2 | **Разработка рабочей документации ВИС Паркинг (ЭОМ)** | 165d | 2026-12-08 | 2027-05-26 |  | 726d |  | П1, К1 |
| 436 | 8.4.1.2.1 | Разработка рабочей документации ИОС (ЭОМ) | 150d | 2026-12-08 | 2027-05-11 | 560 | 724d | 0d | П1, К1 |
| 437 | 8.4.1.2.2 | Согласование рабочей документации ИОС (ЭОМ) в Мосэнергосбыте | 14d | 2027-05-11 | 2027-05-25 | 436 | 724d | 0d | П1, К1 |
| 438 | 8.4.1.2.3 | Рабочая документация выдана в производство работ ИОС (ЭОМ) | 1d | 2027-05-25 | 2027-05-26 | 437 | 724d |  | П1, К1 |
| 439 | 8.4.1.3 | **Разработка рабочей документации ВИС Паркинг (СС)** | 165d | 2026-12-08 | 2027-05-26 |  | 726d |  | П1, К1 |
| 440 | 8.4.1.3.1 | Разработка рабочей документации ИОС (СС) | 150d | 2026-12-08 | 2027-05-11 | 560 | 724d | 0d | П1, К1 |
| 441 | 8.4.1.3.2 | Согласование рабочей документации ИОС (СС) | 14d | 2027-05-11 | 2027-05-25 | 440 | 724d | 0d | П1, К1 |
| 442 | 8.4.1.3.3 | Рабочая документация выдана в производство работ ИОС (СС) | 1d | 2027-05-25 | 2027-05-26 | 441 | 724d |  | П1, К1 |
| 443 | 8.4.2 | **Разработка рабочей документации ВИС Корпус** | 165d | 2026-12-08 | 2027-05-26 |  | 346d |  |  |
| 444 | 8.4.2.1 | **Разработка рабочей документации ВИС Корпус (ОВ, ВК)** | 165d | 2026-12-08 | 2027-05-26 |  | 346d |  | П1, К1 |
| 445 | 8.4.2.1.1 | Разработка рабочей документации ИОС (ОВ, ВК) | 150d | 2026-12-08 | 2027-05-11 | 560 | 344d | 0d | П1, К1 |
| 446 | 8.4.2.1.2 | Согласование рабочей документации ИОС (ОВ, ВК) в МОЭК | 14d | 2027-05-11 | 2027-05-25 | 445 | 344d | 0d | П1, К1 |
| 447 | 8.4.2.1.3 | Рабочая документация выдана в производство работ ИОС (ОВ, ВК) | 1d | 2027-05-25 | 2027-05-26 | 446 | 344d | 0d | П1, К1 |
| 448 | 8.4.2.2 | **Разработка рабочей документации ВИС Корпус (ЭОМ)** | 165d | 2026-12-08 | 2027-05-26 |  | 346d |  | П1, К1 |
| 449 | 8.4.2.2.1 | Разработка рабочей документации ИОС (ЭОМ) | 150d | 2026-12-08 | 2027-05-11 | 560 | 344d | 0d | П1, К1 |
| 450 | 8.4.2.2.2 | Согласование рабочей документации ИОС (ЭОМ) в Мосэнергосбыте | 14d | 2027-05-11 | 2027-05-25 | 449 | 344d | 0d | П1, К1 |
| 451 | 8.4.2.2.3 | Рабочая документация выдана в производство работ ИОС (ЭОМ) | 1d | 2027-05-25 | 2027-05-26 | 450 | 344d | 0d | П1, К1 |

| ID | WBS | Task | Type | Duration | Start | Finish | Predecessors | Total slack | Free slack | Text2 |
| --- | --- | --- | --- | --- | --- | --- | --- | --- | --- | --- |
| 452 | 8.4.2.3 | **Разработка рабочей документации ВИС Корпус ИОС (СС)** |  | 165d | 2026-12-08 | 2027-05-26 |  | 346d |  | П1, К1 |
| 453 | 8.4.2.3.1 | Разработка рабочей документации ИОС (СС) |  | 150d | 2026-12-08 | 2027-05-11 | 560 | 344d | 0d | П1, К1 |
| 454 | 8.4.2.3.2 | Согласование рабочей документации ИОС (СС) |  | 14d | 2027-05-11 | 2027-05-25 | 453 | 344d | 0d | П1, К1 |
| 455 | 8.4.2.3.3 | Рабочая документация выдана в производство работ ИОС (СС) |  | 1d | 2027-05-25 | 2027-05-26 | 454 | 344d | 0d | П1, К1 |
| 456 | 8.4.3 | **Разработка рабочей документации ИТП** |  | 120d | 2026-12-08 | 2027-04-11 |  | 905d |  | П1, К1 |
| 457 | 8.4.3.1 | Разработано РД ИТП |  | 90d | 2026-12-08 | 2027-03-12 | 560 | 903d | 0d | П1, К1 |
| 458 | 8.4.3.2 | Согласованно РД ИТП МОЭК |  | 30d | 2027-03-12 | 2027-04-11 | 457 | 903d | 0d | П1, К1 |
| 459 | 8.4.3.3 | Согласованно РД ИТП Ростехнадзор | milestone | 0d | 2027-04-11 | 2027-04-11 | 458 | 903d | 0d | П1, К1 |
| 460 | 8.4.3.4 | Согласована РД для проведения тендера РД ИТП | milestone | 0d | 2027-04-11 | 2027-04-11 | 459 | 903d | 0d | П1, К1 |
| 461 | 8.5 | **Разработка РД АР** |  | 352d | 2026-12-08 | 2027-11-29 |  | 432d |  |  |
| 462 | 8.5.1 | **Разработка рабочей документации АР подвал, 1 этаж** |  | 90d | 2026-12-08 | 2027-03-12 |  | 933d |  | П1, К1 |
| 463 | 8.5.1.1 | Разработка рабочей документации АР подвал, 1 этаж |  | 75d | 2026-12-08 | 2027-02-25 | 560 | 931d | 0d | П1, К1 |
| 464 | 8.5.1.2 | Согласование рабочей документации АР подвал, 1 этаж |  | 14d | 2027-02-25 | 2027-03-11 | 463 | 931d | 0d | П1, К1 |
| 465 | 8.5.1.3 | Рабочая документация выдана в производство работ АР подвал, 1 этаж |  | 1d | 2027-03-11 | 2027-03-12 | 464 | 931d | 0d | П1, К1 |
| 466 | 8.5.2 | **Разработка рабочей документации АР типовой этаж** |  | 165d | 2026-12-08 | 2027-05-26 |  | 735d | 0d | П1, К1 |
| 467 | 8.5.2.1 | Разработка рабочей документации АР типовой этаж |  | 150d | 2026-12-08 | 2027-05-11 | 560 | 743d | 0d | П1, К1 |
| 468 | 8.5.2.2 | Согласование рабочей документации АР типовой этаж |  | 14d | 2027-05-11 | 2027-05-25 | 467 | 743d | 0d | П1, К1 |
| 469 | 8.5.2.3 | Рабочая документация выдана в производство работ АР типовой этаж |  | 1d | 2027-05-25 | 2027-05-26 | 468 | 743d | 0d | П1, К1 |
| 470 | 8.5.3 | **Разработка рабочей документации АР фасады** |  | 352d | 2026-12-08 | 2027-11-29 |  | 598d | 0d | П1, К1 |
| 471 | 8.5.3.1 | Разработка рабочей документации АР фасады |  | 120d | 2026-12-08 | 2027-04-11 | 560 | 1609d | 0d | П1, К1 |
| 472 | 8.5.3.2 | Согласование рабочей документации АР фасады |  | 14d | 2027-04-11 | 2027-04-25 | 471 | 1609d |  | П1, К1 |
| 473 | 8.5.3.3 | Корректировка РД по результатам МОКАПа фасадов |  | 1d | 2027-11-27 | 2027-11-28 | 1261, 1422 | 346d | 0d |  |
| 474 | 8.5.3.4 | Рабочая документация выдана в производство работ АР фасады |  | 1d | 2027-11-28 | 2027-11-29 | 473 | 346d | 0d | П1, К1 |
| 475 | 8.5.4 | **Разработка документации на МОКАП фасадов** |  | 28d | 2026-12-08 | 2027-01-09 |  | 432d |  | П1, К1 |
| 476 | 8.5.4.1 | Согласование места расположения МОКАП фасадов |  | 7d | 2026-12-08 | 2026-12-15 | 560 | 530d | 0d | П1, К1 |
| 477 | 8.5.4.2 | Разработка рабочей документации на МОКАП фасада |  | 14d | 2026-12-15 | 2026-12-29 | 476 | 530d | 0d | П1, К1 |
| 478 | 8.5.4.3 | Согласование РД на МОКАП фасадов |  | 7d | 2026-12-29 | 2027-01-09 | 477 | 530d | 0d | П1, К1 |
| 479 | 8.5.4.4 | Рабочая документация выдана в производство работ МОКАп фасадов | milestone | 0d | 2027-01-09 | 2027-01-09 | 478 | 530d | 0d | П1, К1 |

| ID | WBS | Task | Duration | Start | Finish | Predecessors | Total slack | Free slack | Text2 |
| --- | --- | --- | --- | --- | --- | --- | --- | --- | --- |
| 480 | 8.5.5 | **Разработка рабочей документации АР кровля** | 90d | 2026-12-08 | 2027-03-12 |  | 1042d | 0d | П1, К1 |
| 481 | 8.5.5.1 | Разработка рабочей документации АР кровля | 75d | 2026-12-08 | 2027-02-25 | 560 | 1040d | 0d | П1, К1 |
| 482 | 8.5.5.2 | Согласование рабочей документации АР кровля | 14d | 2027-02-25 | 2027-03-11 | 481 | 1040d | 0d | П1, К1 |
| 483 | 8.5.5.3 | Рабочая документация выдана в производство работ АР кровля | 1d | 2027-03-11 | 2027-03-12 | 482 | 1040d | 0d | П1, К1 |
| 484 | 8.5.6 | **Разработка рабочей документации АР остекление типовых этажей** | 105d | 2026-12-08 | 2027-03-27 |  | 480d | 105d | П1, К1 |
| 485 | 8.5.6.1 | Разработка рабочей документации АР остекление типовых этажей | 90d | 2026-12-08 | 2027-03-12 | 560 | 638d | 0d | П1, К1 |
| 486 | 8.5.6.2 | Согласование рабочей документации АР остекление типовых этажей | 14d | 2027-03-12 | 2027-03-26 | 485 | 638d | 0d | П1, К1 |
| 487 | 8.5.6.3 | Рабочая документация выдана в производство работ АР остекление типовых этажей | 1d | 2027-03-26 | 2027-03-27 | 486 | 638d | 0d | П1, К1 |
| 488 | 8.5.7 | **Разработка рабочей документации АР остекление первых этажей** | 105d | 2026-12-08 | 2027-03-27 |  | 480d | 0d | П1, К1 |
| 489 | 8.5.7.1 | Разработка рабочей документации АР остекление первых этажей | 90d | 2026-12-08 | 2027-03-12 | 560 | 638d | 0d | П1, К1 |
| 490 | 8.5.7.2 | Согласование рабочей документации АР остекление первых этажей | 14d | 2027-03-12 | 2027-03-26 | 489 | 638d | 0d | П1, К1 |
| 491 | 8.5.7.3 | Рабочая документация выдана в производство работ АР остекление первых этажей | 1d | 2027-03-26 | 2027-03-27 | 490 | 638d | 0d | П1, К1 |
| 492 | 8.6 | **Разработка рабочей документации на технологические решения** | 105d | 2026-12-08 | 2027-03-27 |  | 1640d |  | П1, К1 |
| 493 | 8.6.1 | Разработка рабочей документации на технологические решения | 90d | 2026-12-08 | 2027-03-12 | 560 | 1638d | 0d | П1, К1 |
| 494 | 8.6.2 | Согласование рабочей документации на технологические решения | 14d | 2027-03-12 | 2027-03-26 | 493 | 1638d | 0d | П1, К1 |
| 495 | 8.6.3 | Рабочая документация выдана в производство работ на технологические решения | 1d | 2027-03-26 | 2027-03-27 | 494 | 1638d |  | П1, К1 |
| 496 | 8.7 | **Разработка рабочей документации ГП Благоустройство** | 105d | 2026-12-08 | 2027-03-27 |  | 907d | 0d | П1, К1 |
| 497 | 8.7.1 | Разработка рабочей документации ГП Благоустройство | 90d | 2026-12-08 | 2027-03-12 | 560 | 905d | 0d | П1, К1 |
| 498 | 8.7.2 | Согласование рабочей документации ГП Благоустройство | 14d | 2027-03-12 | 2027-03-26 | 497 | 905d | 0d | П1, К1 |
| 499 | 8.7.3 | Рабочая документация выдана в производство работ ГП Благоустройство | 1d | 2027-03-26 | 2027-03-27 | 498 | 905d | 0d | П1, К1 |
| 500 | 8.8 | **РД АИ** | 270d | 2026-12-08 | 2027-09-08 |  | 589d | 0d |  |
| 501 | 8.8.1 | **Разработка рабочей документации АИ МОП** | 165d | 2026-12-08 | 2027-05-26 |  | 589d |  | П1, К1 |
| 502 | 8.8.1.1 | Разработка рабочей документации АИ МОП | 150d | 2026-12-08 | 2027-05-11 | 560 | 597d | 0d |  |
| 503 | 8.8.1.2 | Согласование рабочей документации АИ МОП | 14d | 2027-05-11 | 2027-05-25 | 502 | 597d | 0d |  |
| 504 | 8.8.1.3 | Рабочая документация выдана в производство работ АИ МОП | 1d | 2027-05-25 | 2027-05-26 | 503 | 597d | 0d | П1, К1 |

| ID | WBS | Task | Duration | Start | Finish | Predecessors | Total slack | Free slack | Text2 |
| --- | --- | --- | --- | --- | --- | --- | --- | --- | --- |
| 505 | 8.8.2 | **Разработка рабочей документации АИ квартир** | 165d | 2026-12-08 | 2027-05-26 |  | 735d |  | П1, К1 |
| 506 | 8.8.2.1 | Разработка рабочей документации АИ квартиры | 150d | 2026-12-08 | 2027-05-11 | 560 | 743d | 0d |  |
| 507 | 8.8.2.2 | Согласование рабочей документации АИ квартиры | 14d | 2027-05-11 | 2027-05-25 | 506 | 743d | 0d |  |
| 508 | 8.8.2.3 | Рабочая документация выдана в производство работ АИ квартир | 1d | 2027-05-25 | 2027-05-26 | 507 | 743d | 0d | П1, К1 |
| 509 | 8.8.3 | **Разработка рабочей документации АИ МОКАП отделки типового этажа** | 105d | 2027-05-26 | 2027-09-08 |  | 1397d |  |  |
| 510 | 8.8.3.1 | Разработка рабочей документации на АИ МОКАП отделки типового этажа | 90d | 2027-05-26 | 2027-08-24 | 469 | 1395d | 0d |  |
| 511 | 8.8.3.2 | Согласование РД АИ МОКАП отделки типового этажа | 14d | 2027-08-24 | 2027-09-07 | 510 | 1473d | 0d |  |
| 512 | 8.8.3.3 | Рабочая документация выдана в производство работ АИ МОКАП отделки типового этажа | 1d | 2027-09-07 | 2027-09-08 | 511 | 1473d |  |  |
| 513 | 8.8.4 | **Разработка рабочей документации АИ МОКАП отделки лобби** | 105d | 2027-05-26 | 2027-09-08 |  | 1397d |  |  |
| 514 | 8.8.4.1 | Разработка рабочей документации на АИ МОКАП отделки лобби | 90d | 2027-05-26 | 2027-08-24 | 510SS | 1395d | 0d |  |
| 515 | 8.8.4.2 | Согласование РД на АИ МОКАП отделки лобби | 14d | 2027-08-24 | 2027-09-07 | 514 | 1395d | 0d |  |
| 516 | 8.8.4.3 | Рабочая документация выдана в производство работ АИ МОКАП отделки лобби | 1d | 2027-09-07 | 2027-09-08 | 515 | 1395d | 0d |  |
| 517 | 9 | **Тендеры и контрактование** | 1953d? | 2023-01-10 | 2028-06-05 |  | 1208d |  | П1, К1, ОП |
| 518 | 9.1 | **Тендеры ПИР** | 529d | 2026-06-02 | 2027-11-17 |  | 3d |  | П1, К1, ОП |
| 519 | 9.1.1 | **Архитектурный конкурс** | 75d | 2026-06-02 | 2026-08-16 |  | 3d | 0d | П1, К1 |
| 520 | 9.1.1.1 | Согласование ТЗ/МЗ Архитектурный конкурс | 5d | 2026-06-02 | 2026-06-07 | 226 | 3d | 0d | П1, К1 |
| 521 | 9.1.1.2 | Формирование списка участников Архитектурный конкурс | 3d | 2026-06-07 | 2026-06-10 | 520 | 3d | 0d | П1, К1 |
| 522 | 9.1.1.3 | Подписание NDA и договоров Архитектурный конкурс | 7d | 2026-06-10 | 2026-06-17 | 521 | 3d | 0d | П1, К1 |
| 523 | 9.1.1.4 | Разработка концепции Архитектурный конкурс | 45d | 2026-06-17 | 2026-08-01 | 522 | 3d | 0d | П1, К1 |
| 524 | 9.1.1.5 | Выбор победителя Архитектурный конкурс | 15d | 2026-08-01 | 2026-08-16 | 523 | 3d | 0d | П1, К1 |
| 525 | 9.1.2 | **Архитектурный конкурс мест общего пользования** | 75d | 2026-12-21 | 2027-03-10 |  | 1534.99d |  | П1, К1 |
| 526 | 9.1.2.1 | Согласование ТЗ/МЗ Архитектурный конкурс мест общего пользования | 5d | 2026-12-21 | 2026-12-26 | 329 | 1530.99d | 0d | П1, К1 |
| 527 | 9.1.2.2 | Формирование списка участников Архитектурный конкурс мест общего пользования | 3d | 2026-12-26 | 2026-12-29 | 526 | 1530.99d | 0d | П1, К1 |
| 528 | 9.1.2.3 | Подписание NDA и договоров Архитектурный конкурс мест общего пользования | 7d | 2026-12-29 | 2027-01-09 | 527 | 1530.99d | 0d | П1, К1 |
| 529 | 9.1.2.4 | Разработка концепции Архитектурный конкурс мест общего пользования | 45d | 2027-01-09 | 2027-02-23 | 528 | 1530.99d | 0d | П1, К1 |
| 530 | 9.1.2.5 | Выбор победителя Архитектурный конкурс мест общего пользования | 15d | 2027-02-23 | 2027-03-10 | 529 | 1530.99d | 0d | П1, К1 |

| ID | WBS | Task | Duration | Start | Finish | Predecessors | Total slack | Free slack | Text2 |
| --- | --- | --- | --- | --- | --- | --- | --- | --- | --- |
| 531 | 9.1.3 | **Архитектурный конкурс благоустройства** | 62d | 2026-08-16 | 2026-10-17 |  | 123d |  | П1, К1 |
| 532 | 9.1.3.1 | Согласование ТЗ/МЗ Архитектурный конкурс благоустройства | 4d | 2026-08-16 | 2026-08-20 | 226, 524 | 123d | 0d | П1, К1 |
| 533 | 9.1.3.2 | Формирование списка участников Архитектурный конкурс благоустройства | 3d | 2026-08-20 | 2026-08-23 | 532 | 123d | 0d | П1, К1 |
| 534 | 9.1.3.3 | Подписание NDA и договоров Архитектурный конкурс благоустройства | 3d | 2026-08-23 | 2026-08-26 | 533 | 123d | 0d | П1, К1 |
| 535 | 9.1.3.4 | Разработка концепции Архитектурный конкурс благоустройства | 45d | 2026-08-26 | 2026-10-10 | 534 | 123d | 0d | П1, К1 |
| 536 | 9.1.3.5 | Выбор победителя Архитектурный конкурс благоустройства | 7d | 2026-10-10 | 2026-10-17 | 535 | 123d | 0d | П1, К1 |
| 537 | 9.1.4 | **Тендер на изыскания** | 57d | 2026-08-16 | 2026-10-12 |  | 178d |  | П1, К1 |
| 538 | 9.1.4.1 | Подготовка ТЗ на изыскания | 7d | 2026-08-16 | 2026-08-23 | 524 | 178d | 0d | П1, К1 |
| 539 | 9.1.4.2 | Подготовка оферты на изыскания | 3d | 2026-08-23 | 2026-08-26 | 538 | 178d | 0d | П1, К1 |
| 540 | 9.1.4.3 | Согласование тендерного пакета на изыскания | 3d | 2026-08-26 | 2026-08-29 | 539 | 178d | 0d | П1, К1 |
| 541 | 9.1.4.4 | Тендер Изыскания | 30d | 2026-08-29 | 2026-09-28 | 540 | 178d | 0d | П1, К1 |
| 542 | 9.1.4.5 | Заключение договора Изыскания | 14d | 2026-09-28 | 2026-10-12 | 541 | 178d | 0d | П1, К1 |
| 543 | 9.1.5 | **Тендер на обследование существующей и окружающей застройки** | 41d | 2026-12-21 | 2027-02-04 |  | 1396d |  | П1, К1 |
| 544 | 9.1.5.1 | Подготовка ТЗ на обследование существующей и окружающей застройки | 7d | 2026-12-21 | 2026-12-28 | 312 | 1394d | 0d | П1, К1 |
| 545 | 9.1.5.2 | Подготовка оферты на обследование существующей и окружающей застройки | 3d | 2026-12-28 | 2026-12-31 | 544 | 1394d | 0d | П1, К1 |
| 546 | 9.1.5.3 | Согласование тендерного пакета на обследование существующей и окружающей застройки | 3d | 2027-01-04 | 2027-01-07 | 545 | 1394d | 0d | П1, К1 |
| 547 | 9.1.5.4 | Тендер Обследование существующей и окружающей застройки | 14d | 2027-01-07 | 2027-01-21 | 546 | 1394d | 0d | П1, К1 |
| 548 | 9.1.5.5 | Заключение договора Обследование существующей и окружающей застройки | 14d | 2027-01-21 | 2027-02-04 | 547 | 1394d | 0d | П1, К1 |
| 549 | 9.1.6 | **Тендер проектная документация** | 57d | 2026-08-16 | 2026-10-12 |  | 34d |  | П1, К1 |
| 550 | 9.1.6.1 | Подготовка ТЗ проектная документация | 7d | 2026-08-16 | 2026-08-23 | 524 | 34d | 0d | П1, К1 |
| 551 | 9.1.6.2 | Подготовка оферты проектная документация | 3d | 2026-08-23 | 2026-08-26 | 550 | 34d | 0d | П1, К1 |
| 552 | 9.1.6.3 | Согласование тендерного пакета проектная документация | 3d | 2026-08-26 | 2026-08-29 | 551 | 34d | 0d | П1, К1 |
| 553 | 9.1.6.4 | Тендер Проектная документация | 30d | 2026-08-29 | 2026-09-28 | 552 | 34d | 0d | П1, К1 |
| 554 | 9.1.6.5 | Заключение договора Проектная документация | 14d | 2026-09-28 | 2026-10-12 | 553 | 205d | 0d | П1, К1 |

| ID | WBS | Task | Duration | Start | Finish | Predecessors | Total slack | Free slack | Text2 |
| --- | --- | --- | --- | --- | --- | --- | --- | --- | --- |
| 555 | 9.1.7 | **Тендер рабочая документация** | 57d | 2026-10-12 | 2026-12-08 |  | 205d |  | П1, К1 |
| 556 | 9.1.7.1 | Подготовка ТЗ рабочая документация | 7d | 2026-10-12 | 2026-10-19 | 554 | 205d | 0d | П1, К1 |
| 557 | 9.1.7.2 | Подготовка оферты рабочая документация | 3d | 2026-10-19 | 2026-10-22 | 556 | 205d | 0d | П1, К1 |
| 558 | 9.1.7.3 | Согласование тендерного пакета рабочая документация | 3d | 2026-10-22 | 2026-10-25 | 557 | 205d | 0d | П1, К1 |
| 559 | 9.1.7.4 | Тендер Рабочая документация | 30d | 2026-10-25 | 2026-11-24 | 558 | 205d | 0d | П1, К1 |
| 560 | 9.1.7.5 | Заключение договора Рабочая документация | 14d | 2026-11-24 | 2026-12-08 | 559 | 202d | 0d | П1, К1 |
| 561 | 9.1.8 | **Тендер Проектирование Вынос сетей из пятна застройки** | 57d | 2027-03-20 | 2027-05-16 |  | 1396d |  | П1, К1 |
| 562 | 9.1.8.1 | Подготовка ТЗ Проектирование Вынос сетей из пятна застройки | 7d | 2027-03-20 | 2027-03-27 | 242 | 1394d | 0d | П1, К1 |
| 563 | 9.1.8.2 | Подготовка оферты Проектирование Вынос сетей из пятна застройки | 3d | 2027-03-27 | 2027-03-30 | 562 | 1394d | 0d | П1, К1 |
| 564 | 9.1.8.3 | Согласование тендерного пакета Проектирование Вынос сетей из пятна застройки | 3d | 2027-03-30 | 2027-04-02 | 563 | 1394d | 0d | П1, К1 |
| 565 | 9.1.8.4 | Тендер Проектирование Вынос сетей из пятна застройки | 30d | 2027-04-02 | 2027-05-02 | 564 | 1394d | 0d | П1, К1 |
| 566 | 9.1.8.5 | Заключение договора Проектирование Вынос сетей из пятна застройки | 14d | 2027-05-02 | 2027-05-16 | 565 | 1394d | 0d | П1, К1 |
| 567 | 9.1.9 | **Тендер на проектную и рабочую документацию НИС** | 57d | 2027-05-11 | 2027-07-07 |  | 578d |  | П1, К1 |
| 568 | 9.1.9.1 | Подготовка ТЗ на проектную и рабочую документацию НИС | 7d | 2027-05-11 | 2027-05-18 | 334 | 576d | 0d | П1, К1 |
| 569 | 9.1.9.2 | Подготовка оферты на проектную и рабочую документацию НИС | 3d | 2027-05-18 | 2027-05-21 | 568 | 576d | 0d | П1, К1 |
| 570 | 9.1.9.3 | Согласование тендерного пакета на проектную и рабочую документацию НИС | 3d | 2027-05-21 | 2027-05-24 | 569 | 576d | 0d | П1, К1 |
| 571 | 9.1.9.4 | Тендер Проектная и рабочая документация НИС | 30d | 2027-05-24 | 2027-06-23 | 570 | 576d | 0d | П1, К1 |
| 572 | 9.1.9.5 | Заключение договора Проектная и рабочая документация НИС | 14d | 2027-06-23 | 2027-07-07 | 571 | 576d | 0d | П1, К1 |
| 573 | 9.1.10 | **Тендер на проектирование офиса продаж** | 57d | 2027-09-21 | 2027-11-17 |  | 1163d |  | ОП |
| 574 | 9.1.10.1 | Подготовка ТЗ Проектирование офиса продаж | 7d | 2027-09-21 | 2027-09-28 | 353 | 1161d | 0d | ОП |
| 575 | 9.1.10.2 | Подготовка оферты Проектирование офиса продаж | 3d | 2027-09-28 | 2027-10-01 | 574 | 1161d | 0d | ОП |
| 576 | 9.1.10.3 | Согласование тендерного пакета Проектирование офиса продаж | 3d | 2027-10-01 | 2027-10-04 | 575 | 1161d | 0d | ОП |
| 577 | 9.1.10.4 | Тендер Проектирование офиса продаж | 30d | 2027-10-04 | 2027-11-03 | 576 | 1161d | 0d | ОП |
| 578 | 9.1.10.5 | Заключение договора Проектирование офиса продаж | 14d | 2027-11-03 | 2027-11-17 | 577 | 1161d | 0d | ОП |

| ID | WBS | Task | Type | Duration | Start | Finish | Predecessors | Baseline start | Baseline finish | Baseline duration | Total slack | Free slack | Text2 |
| --- | --- | --- | --- | --- | --- | --- | --- | --- | --- | --- | --- | --- | --- |
| 579 | 9.2 | **Тендеры СМР** |  | 1953d? | 2023-01-10 | 2028-06-05 |  | 2020-05-11 | 2024-01-25 | 1284d? | 1208d |  | П1, К1, ОП |
| 580 | 9.2.1 | **Тендер Офис продаж подготовительный период и конструктив, наружные сети** |  | 58d | 2028-01-10 | 2028-03-08 |  |  |  |  | 1163d |  | ОП |
| 581 | 9.2.1.1 | РД ВПР Офис продаж подготовительный период и конструктив, наружные сети | milestone | 0d | 2028-01-10 | 2028-01-10 | 366 |  |  |  | 1161d | 0d |  |
| 582 | 9.2.1.2 | Подготовка ТЗ Офис продаж подготовительный период и конструктив, наружные сети |  | 4d | 2028-01-10 | 2028-01-14 | 366, 581 |  |  |  | 1161d | 0d | ОП |
| 583 | 9.2.1.3 | Подготовка ВОР Офис продаж подготовительный период и конструктив, наружные сети |  | 7d | 2028-01-14 | 2028-01-21 | 582 |  |  |  | 1161d | 0d | ОП |
| 584 | 9.2.1.4 | Согласование тендерного пакета Офис продаж подготовительный период и конструктив, наружные сети |  | 3d | 2028-01-21 | 2028-01-24 | 583 |  |  |  | 1161d | 0d | ОП |
| 585 | 9.2.1.5 | Тендер Офис продаж подготовительный период и конструктив, наружные сети |  | 30d | 2028-01-24 | 2028-02-23 | 584 |  |  |  | 1161d | 0d | ОП |
| 586 | 9.2.1.6 | Заключение договора Офис продаж подготовительный период и конструктив, наружные сети |  | 14d | 2028-02-23 | 2028-03-08 | 585 |  |  |  | 1161d | 0d | ОП |
| 587 | 9.2.2 | **Тендер Офис продаж фасады, кровля и СПК** |  | 147d | 2028-01-10 | 2028-06-05 |  |  |  |  | 1208d |  | ОП |
| 588 | 9.2.2.1 | РД ВПР Офис продаж фасады, кровля и СПК | milestone | 0d | 2028-01-10 | 2028-01-10 | 366, 365 |  |  |  | 1295d | 0d |  |
| 589 | 9.2.2.2 | Подготовка ТЗ Офис продаж фасады, кровля и СПК |  | 4d | 2028-01-10 | 2028-01-14 | 366, 365, 588 |  |  |  | 1295d | 0d | ОП |
| 590 | 9.2.2.3 | Подготовка ВОР Офис продаж фасады, кровля и СПК |  | 7d | 2028-01-14 | 2028-01-21 | 589 |  |  |  | 1295d | 0d | ОП |
| 591 | 9.2.2.4 | Согласование тендерного пакета Офис продаж фасады, кровля и СПК |  | 3d | 2028-01-21 | 2028-01-24 | 590 |  |  |  | 1295d | 0d | ОП |
| 592 | 9.2.2.5 | Тендер Офис продаж фасады, кровля и СПК |  | 30d | 2028-01-24 | 2028-02-23 | 591 |  |  |  | 1295d | 89d | ОП |
| 593 | 9.2.2.6 | Заключение договора Офис продаж фасады, кровля и СПК |  | 14d | 2028-05-22 | 2028-06-05 | 592, 1081, 1080 |  |  |  | 1206d | 0d | ОП |
| 594 | 9.2.3 | **Тендер Офис продаж отделка и внутренние инженерные системы** |  | 58d | 2028-01-30 | 2028-03-28 |  |  |  |  | 1218d |  | ОП |
| 595 | 9.2.3.1 | РД ВПР Офис продаж отделка и внутренние инженерные системы | milestone | 0d | 2028-01-30 | 2028-01-30 | 367 |  |  |  | 1216d | 0d |  |
| 596 | 9.2.3.2 | Подготовка ТЗ Офис продаж отделка и внутренние инженерные системы |  | 4d | 2028-01-30 | 2028-02-03 | 367, 595 |  |  |  | 1216d | 0d | ОП |
| 597 | 9.2.3.3 | Подготовка ВОР Офис продаж отделка и внутренние инженерные системы |  | 7d | 2028-02-03 | 2028-02-10 | 596 |  |  |  | 1216d | 0d | ОП |
| 598 | 9.2.3.4 | Согласование тендерного пакета Офис продаж отделка и внутренние инженерные системы |  | 3d | 2028-02-10 | 2028-02-13 | 597 |  |  |  | 1216d | 0d | ОП |
| 599 | 9.2.3.5 | Тендер Офис продаж отделка и внутренние инженерные системы |  | 30d | 2028-02-13 | 2028-03-14 | 598 |  |  |  | 1216d | 0d | ОП |
| 600 | 9.2.3.6 | Заключение договора Офис продаж отделка и внутренние инженерные системы |  | 14d | 2028-03-14 | 2028-03-28 | 599 |  |  |  | 1216d | 55d | ОП |
| 601 | 9.2.4 | **Тендер Подготовка площадки** |  | 61d | 2027-06-01 | 2027-08-01 |  | 2020-07-31 | 2020-09-16 | 47d | 71d |  | П1, К1 |
| 602 | 9.2.4.1 | РД ВПР Подготовка площадки | milestone | 0d | 2027-06-01 | 2027-06-01 | 390 |  |  |  | 68d | 0d |  |
| 603 | 9.2.4.2 | Подготовка ТЗ Подготовка площадки |  | 7d | 2027-06-01 | 2027-06-08 | 602 |  |  |  | 68d | 0d | П1, К1 |
| 604 | 9.2.4.3 | Подготовка ВОР Подготовка площадки |  | 4d | 2027-06-08 | 2027-06-12 | 603 |  |  |  | 68d | 0d | П1, К1 |
| 605 | 9.2.4.4 | Подготовка оферты Подготовка площадки |  | 3d | 2027-06-12 | 2027-06-15 | 604 |  |  |  | 68d | 0d | П1, К1 |
| 606 | 9.2.4.5 | Согласование тендерного пакета Подготовка площадки |  | 3d | 2027-06-15 | 2027-06-18 | 604, 605 |  |  |  | 68d | 0d | П1, К1 |
| 607 | 9.2.4.6 | Тендер Подготовка площадки |  | 30d | 2027-06-18 | 2027-07-18 | 606 |  |  |  | 68d | 0d | П1, К1 |
| 608 | 9.2.4.7 | Заключение договора Подготовка площадки |  | 14d | 2027-07-18 | 2027-08-01 | 607 |  |  |  | 68d | 0d | П1, К1 |

| ID | WBS | Task | Type | Duration | Start | Finish | Predecessors | Baseline start | Baseline finish | Baseline duration | Total slack | Free slack | Text2 |
| --- | --- | --- | --- | --- | --- | --- | --- | --- | --- | --- | --- | --- | --- |
| 609 | 9.2.5 | **Тендер Вынос существующих сетей** |  | 61d | 2027-06-01 | 2027-08-01 |  | 2020-07-31 | 2020-09-16 | 47d | 1379d |  | П1, К1 |
| 610 | 9.2.5.1 | РД ВПР Вынос существующих сетей | milestone | 0d | 2027-06-01 | 2027-06-01 | 390 |  |  |  | 1377d | 0d |  |
| 611 | 9.2.5.2 | Подготовка ТЗ Вынос существующих сетей |  | 7d | 2027-06-01 | 2027-06-08 | 610 |  |  |  | 1377d | 0d | П1, К1 |
| 612 | 9.2.5.3 | Подготовка ВОР Вынос существующих сетей |  | 4d | 2027-06-08 | 2027-06-12 | 611 |  |  |  | 1377d | 0d | П1, К1 |
| 613 | 9.2.5.4 | Подготовка оферты Вынос существующих сетей |  | 3d | 2027-06-12 | 2027-06-15 | 612 |  |  |  | 1377d | 0d | П1, К1 |
| 614 | 9.2.5.5 | Согласование тендерного пакета Вынос существующих сетей |  | 3d | 2027-06-15 | 2027-06-18 | 612, 613 |  |  |  | 1377d | 0d | П1, К1 |
| 615 | 9.2.5.6 | Тендер Вынос существующих сетей |  | 30d | 2027-06-18 | 2027-07-18 | 614 |  |  |  | 1377d | 0d | П1, К1 |
| 616 | 9.2.5.7 | Заключение договора Вынос существующих сетей |  | 14d | 2027-07-18 | 2027-08-01 | 615 |  |  |  | 1377d | 0d | П1, К1 |
| 617 | 9.2.6 | **Тендер ограждение котлована** |  | 61d | 2027-09-09 | 2027-11-09 |  | 2020-07-31 | 2020-09-16 | 47d | 900d |  | П1, К1 |
| 618 | 9.2.6.1 | РД ВПР Ограждение котлована | milestone | 0d | 2027-09-09 | 2027-09-09 | 394 |  |  |  | 898d | 0d |  |
| 619 | 9.2.6.2 | Подготовка ТЗ ограждение котлована |  | 7d | 2027-09-09 | 2027-09-16 | 394, 618 |  |  |  | 898d | 0d | П1, К1 |
| 620 | 9.2.6.3 | Подготовка ВОР Ограждение котлована |  | 4d | 2027-09-16 | 2027-09-20 | 619 |  |  |  | 898d | 0d | П1, К1 |
| 621 | 9.2.6.4 | Подготовка оферты ограждение котлована |  | 3d | 2027-09-20 | 2027-09-23 | 620 |  |  |  | 898d | 0d | П1, К1 |
| 622 | 9.2.6.5 | Согласование тендерного пакета ограждение котлована |  | 3d | 2027-09-23 | 2027-09-26 | 620, 621 |  |  |  | 898d | 0d | П1, К1 |
| 623 | 9.2.6.6 | Тендер Ограждение котлована |  | 30d | 2027-09-26 | 2027-10-26 | 622 |  |  |  | 898d | 0d | П1, К1 |
| 624 | 9.2.6.7 | Заключение договора Ограждение котлована |  | 14d | 2027-10-26 | 2027-11-09 | 623 |  |  |  | 898d | 0d | П1, К1 |
| 625 | 9.2.7 | **Тендер номинация Шпунт ларсена** |  | 28d | 2027-09-21 | 2027-10-19 |  |  |  |  | 1434d |  | П1, К1 |
| 626 | 9.2.7.1 | РД ВПР номинация Шпунт ларсена | milestone | 0d | 2027-09-21 | 2027-09-21 | 353 |  |  |  | 1432d | 0d |  |
| 627 | 9.2.7.2 | Подготовка ТЗ и ключевых условия номинация Шпунт ларсена |  | 7d | 2027-09-21 | 2027-09-28 | 353, 626 |  |  |  | 1432d | 0d | П1, К1 |
| 628 | 9.2.7.3 | Подготовка оферты номинация Шпунт ларсена |  | 7d | 2027-09-28 | 2027-10-05 | 627 |  |  |  | 1432d | 0d | П1, К1 |
| 629 | 9.2.7.4 | Тендер номинация Шпунт ларсена |  | 7d | 2027-10-05 | 2027-10-12 | 628 |  |  |  | 1432d | 0d | П1, К1 |
| 630 | 9.2.7.5 | Выбор поставщика/подписание соглашения о намерениях номинация Шпунт ларсена |  | 7d | 2027-10-12 | 2027-10-19 | 629 |  |  |  | 1432d |  | П1, К1 |
| 631 | 9.2.8 | **Тендер свайное основание** |  | 61d | 2027-09-09 | 2027-11-09 |  | 2020-10-29 | 2020-12-06 | 38d | 32d |  | П1, К1 |
| 632 | 9.2.8.1 | Подготовка ТЗ свайное основание |  | 7d | 2027-09-09 | 2027-09-16 | 394, 404, 633 |  |  |  | 29d | 0d | П1, К1 |
| 633 | 9.2.8.2 | РД ВПР Свайное основание | milestone | 0d | 2027-09-09 | 2027-09-09 | 394, 404 |  |  |  | 29d | 0d |  |
| 634 | 9.2.8.3 | Подготовка ВОР Свайное основание |  | 4d | 2027-09-16 | 2027-09-20 | 632 |  |  |  | 29d | 0d | П1, К1 |
| 635 | 9.2.8.4 | Подготовка оферты свайное основание |  | 3d | 2027-09-20 | 2027-09-23 | 634 |  |  |  | 29d | 0d | П1, К1 |
| 636 | 9.2.8.5 | Согласование тендерного пакета свайное основание |  | 3d | 2027-09-23 | 2027-09-26 | 634, 635 |  |  |  | 29d | 0d | П1, К1 |
| 637 | 9.2.8.6 | Тендер Свайное основание |  | 30d | 2027-09-26 | 2027-10-26 | 636 |  |  |  | 29d | 0d | П1, К1 |
| 638 | 9.2.8.7 | Заключение договора Свайное основание |  | 14d | 2027-10-26 | 2027-11-09 | 637 |  |  |  | 29d | 0d | П1, К1 |

| ID | WBS | Task | Type | Duration | Start | Finish | Predecessors | Baseline start | Baseline finish | Baseline duration | Total slack | Free slack | Text2 |
| --- | --- | --- | --- | --- | --- | --- | --- | --- | --- | --- | --- | --- | --- |
| 639 | 9.2.9 | **Тендер номинация Арматурный каркас сваи** |  | 28d | 2027-09-21 | 2027-10-19 |  |  |  |  | 1434d |  | П1, К1 |
| 640 | 9.2.9.1 | РД ВПР номинация Арматурный каркас сваи | milestone | 0d | 2027-09-21 | 2027-09-21 | 353 |  |  |  | 1434d | 0d |  |
| 641 | 9.2.9.2 | Подготовка ТЗ и ключевых условия номинация Арматурный каркас сваи |  | 7d | 2027-09-21 | 2027-09-28 | 353, 640 |  |  |  | 1434d | 0d | П1, К1 |
| 642 | 9.2.9.3 | Подготовка оферты номинация Арматурный каркас сваи |  | 7d | 2027-09-28 | 2027-10-05 | 641 |  |  |  | 1434d | 0d | П1, К1 |
| 643 | 9.2.9.4 | Тендер номинация Арматурный каркас сваи |  | 7d | 2027-10-05 | 2027-10-12 | 642 |  |  |  | 1434d | 0d | П1, К1 |
| 644 | 9.2.9.5 | Выбор поставщика/подписание соглашения о намерениях номинация Арматурный каркас сваи |  | 7d | 2027-10-12 | 2027-10-19 | 643 |  |  |  | 1434d |  | П1, К1 |
| 645 | 9.2.10 | **Тендер номинация Сваи забивные** |  | 28d | 2027-09-21 | 2027-10-19 |  |  |  |  | 1434d |  | П1, К1 |
| 646 | 9.2.10.1 | РД ВПР номинация Сваи забивные | milestone | 0d | 2027-09-21 | 2027-09-21 | 353 |  |  |  | 1432d | 0d |  |
| 647 | 9.2.10.2 | Подготовка ТЗ и ключевых условия номинация Сваи забивные |  | 7d | 2027-09-21 | 2027-09-28 | 353, 646 |  |  |  | 1432d | 0d | П1, К1 |
| 648 | 9.2.10.3 | Подготовка оферты номинация Сваи забивные |  | 7d | 2027-09-28 | 2027-10-05 | 647 |  |  |  | 1432d | 0d | П1, К1 |
| 649 | 9.2.10.4 | Тендер номинация Сваи забивные |  | 7d | 2027-10-05 | 2027-10-12 | 648 |  |  |  | 1432d | 0d | П1, К1 |
| 650 | 9.2.10.5 | Выбор поставщика/подписание соглашения о намерениях номинация Сваи забивные |  | 7d | 2027-10-12 | 2027-10-19 | 649 |  |  |  | 1432d |  | П1, К1 |
| 651 | 9.2.11 | **Тендер земляные работы** |  | 59d | 2027-09-09 | 2027-11-07 |  | 2020-10-12 | 2020-11-07 | 26d | 3d |  | П1, К1 |
| 652 | 9.2.11.1 | РД ВПР Земляные работы | milestone | 0d | 2027-09-09 | 2027-09-09 | 394 |  |  |  | 3d | 0d |  |
| 653 | 9.2.11.2 | Подготовка ТЗ земляные работы |  | 7d | 2027-09-09 | 2027-09-16 | 394, 652 |  |  |  | 3d | 0d | П1, К1 |
| 654 | 9.2.11.3 | Подготовка ВОР Земляные работы |  | 2d | 2027-09-16 | 2027-09-18 | 653 |  |  |  | 3d | 0d | П1, К1 |
| 655 | 9.2.11.4 | Подготовка оферты земляные работы |  | 3d | 2027-09-18 | 2027-09-21 | 654 |  |  |  | 3d | 0d | П1, К1 |
| 656 | 9.2.11.5 | Согласование тендерного пакета земляные работы |  | 3d | 2027-09-21 | 2027-09-24 | 654, 655 |  |  |  | 3d | 0d | П1, К1 |
| 657 | 9.2.11.6 | Тендер Земляные работы |  | 30d | 2027-09-24 | 2027-10-24 | 656 |  |  |  | 3d | 0d | П1, К1 |
| 658 | 9.2.11.7 | Заключение договора Земляные работы |  | 14d | 2027-10-24 | 2027-11-07 | 657 |  |  |  | 3d | 0d | П1, К1 |
| 659 | 9.2.12 | **Тендер Аренда БК** |  | 60d | 2027-09-21 | 2027-11-20 |  | 2021-10-06 | 2021-12-15 | 84d | 141d |  | П1, К1 |
| 660 | 9.2.12.1 | Подготовка ТЗ Аренда БК |  | 7d | 2027-09-21 | 2027-09-28 | 353 |  |  |  | 138d | 0d | П1, К1 |
| 661 | 9.2.12.2 | Подготовка ВОР Аренда БК |  | 3d | 2027-09-28 | 2027-10-01 | 660 |  |  |  | 138d | 0d | П1, К1 |
| 662 | 9.2.12.3 | Подготовка оферты Аренда БК |  | 3d | 2027-10-01 | 2027-10-04 | 661 |  |  |  | 138d | 0d | П1, К1 |
| 663 | 9.2.12.4 | Согласование тендерного пакета Аренда БК |  | 3d | 2027-10-04 | 2027-10-07 | 661, 662 |  |  |  | 138d | 0d | П1, К1 |
| 664 | 9.2.12.5 | Тендер Аренда БК |  | 30d | 2027-10-07 | 2027-11-06 | 663 |  |  |  | 138d | 0d | П1, К1 |
| 665 | 9.2.12.6 | Заключение договора Аренда БК |  | 14d | 2027-11-06 | 2027-11-20 | 664 |  |  |  | 138d | 72d | П1, К1 |

| ID | WBS | Task | Type | Duration | Start | Finish | Predecessors | Baseline start | Baseline finish | Baseline duration | Total slack | Free slack | Text2 |
| --- | --- | --- | --- | --- | --- | --- | --- | --- | --- | --- | --- | --- | --- |
| 666 | 9.2.13 | **Тендер Монолит+кладка+кровля стилобата** |  | 87d | 2027-09-21 | 2027-12-17 |  | 2021-10-06 | 2021-12-15 | 84d | 54d |  | П1, К1 |
| 667 | 9.2.13.1 | Подготовка ТЗ Монолит+кладка+кровля стилобата |  | 7d | 2027-09-21 | 2027-09-28 | 353 |  |  |  | 51d | 0d | П1, К1 |
| 668 | 9.2.13.2 | Подготовка ВОР Монолит+кладка+кровля стилобата |  | 15d | 2027-09-28 | 2027-10-13 | 667 |  |  |  | 51d | 0d | П1, К1 |
| 669 | 9.2.13.3 | Подготовка оферты Монолит+кладка+кровля стилобата |  | 3d | 2027-10-13 | 2027-10-16 | 668 |  |  |  | 51d | 0d | П1, К1 |
| 670 | 9.2.13.4 | Согласование тендерного пакета Монолит+кладка+кровля стилобата |  | 3d | 2027-10-16 | 2027-10-19 | 668, 669 |  |  |  | 51d | 0d | П1, К1 |
| 671 | 9.2.13.5 | Тендер Монолит+кладка+кровля стилобата |  | 45d | 2027-10-19 | 2027-12-03 | 670 |  |  |  | 51d | 0d | П1, К1 |
| 672 | 9.2.13.6 | Заключение договора Монолит+кладка+кровля стилобата |  | 14d | 2027-12-03 | 2027-12-17 | 671 |  |  |  | 51d | 0d | П1, К1 |
| 673 | 9.2.14 | **Тендер номинация НИС** |  | 58d | 2027-10-05 | 2027-12-02 |  |  |  |  | 1390d |  |  |
| 674 | 9.2.14.1 | **Тендер номинация НИС Трубы** |  | 58d | 2027-10-05 | 2027-12-02 |  |  |  |  | 1390d |  | П1, К1 |
| 675 | 9.2.14.1.1 | РД ВПР номинация НИС Трубы | milestone | 0d | 2027-10-05 | 2027-10-05 | 688SS-30d |  |  |  | 1388d | 0d |  |
| 676 | 9.2.14.1.2 | Подготовка ТЗ и ключевых условия номинация НИС Трубы |  | 7d | 2027-10-05 | 2027-10-12 | 688SS-30d, 675 |  |  |  | 1388d | 0d | П1, К1 |
| 677 | 9.2.14.1.3 | Подготовка оферты и чертежей номинация НИС Трубы |  | 7d | 2027-10-12 | 2027-10-19 | 676 |  |  |  | 1388d | 0d | П1, К1 |
| 678 | 9.2.14.1.4 | Тендер номинация НИС Трубы |  | 30d | 2027-10-19 | 2027-11-18 | 677 |  |  |  | 1388d | 0d | П1, К1 |
| 679 | 9.2.14.1.5 | Выбор поставщика/подписание соглашения о намерениях номинация НИС Трубы |  | 14d | 2027-11-18 | 2027-12-02 | 678 |  |  |  | 1388d |  | П1, К1 |
| 680 | 9.2.14.2 | **Тендер номинация НИС Запорная арматура** |  | 58d | 2027-10-05 | 2027-12-02 |  |  |  |  | 1390d |  | П1, К1 |
| 681 | 9.2.14.2.1 | РД ВПР номинация НИС Запорная арматура | milestone | 0d | 2027-10-05 | 2027-10-05 | 676SS |  |  |  | 1388d | 0d |  |
| 682 | 9.2.14.2.2 | Подготовка ТЗ и ключевых условия номинация НИС Запорная арматура |  | 7d | 2027-10-05 | 2027-10-12 | 676SS, 681 |  |  |  | 1388d | 0d | П1, К1 |
| 683 | 9.2.14.2.3 | Подготовка оферты и чертежей номинация НИС Запорная арматура |  | 7d | 2027-10-12 | 2027-10-19 | 682 |  |  |  | 1388d | 0d | П1, К1 |
| 684 | 9.2.14.2.4 | Тендер номинация НИС Запорная арматура |  | 30d | 2027-10-19 | 2027-11-18 | 683 |  |  |  | 1388d | 0d | П1, К1 |
| 685 | 9.2.14.2.5 | Выбор поставщика/подписание соглашения о намерениях номинация НИС Запорная арматура |  | 14d | 2027-11-18 | 2027-12-02 | 684 |  |  |  | 1388d |  | П1, К1 |
| 686 | 9.2.15 | **Тендер наружные инженерные сети** |  | 78d | 2027-11-04 | 2028-01-25 |  | 2021-10-06 | 2021-12-15 | 84d | 578d |  | П1, К1 |
| 687 | 9.2.15.1 | РД ВПР Наружные инженерные сети | milestone | 0d | 2027-11-04 | 2027-11-04 | 1629 |  |  |  | 576d | 0d |  |
| 688 | 9.2.15.2 | Подготовка ТЗ наружные инженерные сети |  | 7d | 2027-11-04 | 2027-11-11 | 1629, 687 |  |  |  | 576d | 0d | П1, К1 |
| 689 | 9.2.15.3 | Подготовка ВОР Наружные инженерные сети |  | 21d | 2027-11-11 | 2027-12-02 | 688 |  |  |  | 576d | 0d | П1, К1 |
| 690 | 9.2.15.4 | Подготовка оферты наружные инженерные сети |  | 3d | 2027-12-02 | 2027-12-05 | 689 |  |  |  | 576d | 0d | П1, К1 |
| 691 | 9.2.15.5 | Согласование тендерного пакета наружные инженерные сети |  | 3d | 2027-12-05 | 2027-12-08 | 689, 690 |  |  |  | 576d | 0d | П1, К1 |
| 692 | 9.2.15.6 | Тендер Наружные инженерные сети |  | 30d | 2027-12-08 | 2028-01-11 | 691 |  |  |  | 576d | 0d | П1, К1 |
| 693 | 9.2.15.7 | Заключение договора Наружные инженерные сети |  | 14d | 2028-01-11 | 2028-01-25 | 692 |  |  |  | 576d | 0d | П1, К1 |

| ID | WBS | Task | Type | Duration | Start | Finish | Predecessors | Baseline start | Baseline finish | Baseline duration | Total slack | Free slack | Text2 |
| --- | --- | --- | --- | --- | --- | --- | --- | --- | --- | --- | --- | --- | --- |
| 694 | 9.2.16 | **Тендер Ограждение кровли корпусов** |  | 61d | 2027-03-12 | 2027-05-12 |  |  |  |  | 1594d |  | П1, К1 |
| 695 | 9.2.16.1 | РД ВПР Ограждение кровли корпусов | milestone | 0d | 2027-03-12 | 2027-03-12 | 483 |  |  |  | 1592d | 0d |  |
| 696 | 9.2.16.2 | Подготовка ТЗ Ограждение кровли корпусов |  | 7d | 2027-03-12 | 2027-03-19 | 695, 710SS |  |  |  | 1592d | 0d | П1, К1 |
| 697 | 9.2.16.3 | Подготовка ВОР Ограждение кровли корпусов |  | 4d | 2027-03-19 | 2027-03-23 | 696 |  |  |  | 1592d | 0d | П1, К1 |
| 698 | 9.2.16.4 | Подготовка оферты Ограждение кровли корпусов |  | 3d | 2027-03-23 | 2027-03-26 | 697 |  |  |  | 1592d | 0d | П1, К1 |
| 699 | 9.2.16.5 | Согласование тендерного пакета Ограждение кровли корпусов |  | 3d | 2027-03-26 | 2027-03-29 | 697, 698 |  |  |  | 1592d | 0d | П1, К1 |
| 700 | 9.2.16.6 | Тендер Ограждение кровли корпусов |  | 30d | 2027-03-29 | 2027-04-28 | 699 |  |  |  | 1592d | 0d | П1, К1 |
| 701 | 9.2.16.7 | Заключение договора Ограждение кровли корпусов |  | 14d | 2027-04-28 | 2027-05-12 | 700 |  |  |  | 1592d |  | П1, К1 |
| 702 | 9.2.17 | **Тендер номинация КМ к ограждению кровли** |  | 28d | 2027-03-12 | 2027-04-09 |  |  |  |  | 1627d |  | П1, К1 |
| 703 | 9.2.17.1 | РД ВПР номинация КМ к ограждению кровли | milestone | 0d | 2027-03-12 | 2027-03-12 | 483 |  |  |  | 1625d | 0d |  |
| 704 | 9.2.17.2 | Подготовка ТЗ и ключевых условия номинация КМ к ограждению кровли |  | 7d | 2027-03-12 | 2027-03-19 | 703, 710SS |  |  |  | 1625d | 0d | П1, К1 |
| 705 | 9.2.17.3 | Подготовка оферты номинация КМ к ограждению кровли |  | 7d | 2027-03-19 | 2027-03-26 | 704 |  |  |  | 1625d | 0d | П1, К1 |
| 706 | 9.2.17.4 | Тендер номинация КМ к ограждению кровли |  | 7d | 2027-03-26 | 2027-04-02 | 705 |  |  |  | 1625d | 0d | П1, К1 |
| 707 | 9.2.17.5 | Выбор поставщика/подписание соглашения о намерениях номинация КМ к ограждению кровли |  | 7d | 2027-04-02 | 2027-04-09 | 706 |  |  |  | 1625d |  | П1, К1 |
| 708 | 9.2.18 | **Тендер кровля** |  | 61d | 2027-03-12 | 2027-05-12 |  | 2021-04-19 | 2021-06-26 | 58d | 1042d |  | П1, К1 |
| 709 | 9.2.18.1 | РД ВПР Кровля | milestone | 0d | 2027-03-12 | 2027-03-12 | 483 |  |  |  | 1040d | 0d |  |
| 710 | 9.2.18.2 | Подготовка ТЗ кровля |  | 7d | 2027-03-12 | 2027-03-19 | 483, 709 | 2021-04-19 | 2021-05-13 | 14d | 1040d | 0d | П1, К1 |
| 711 | 9.2.18.3 | Подготовка ВОР Кровля |  | 4d | 2027-03-19 | 2027-03-23 | 710 |  |  |  | 1040d | 0d | П1, К1 |
| 712 | 9.2.18.4 | Подготовка оферты кровля |  | 3d | 2027-03-23 | 2027-03-26 | 711 |  |  |  | 1040d | 0d | П1, К1 |
| 713 | 9.2.18.5 | Согласование тендерного пакета кровля |  | 3d | 2027-03-26 | 2027-03-29 | 711, 712 |  |  |  | 1040d | 0d | П1, К1 |
| 714 | 9.2.18.6 | Тендер Кровля |  | 30d | 2027-03-29 | 2027-04-28 | 713 | 2021-05-13 | 2021-06-12 | 30d | 1040d | 0d | П1, К1 |
| 715 | 9.2.18.7 | Заключение договора Кровля |  | 14d | 2027-04-28 | 2027-05-12 | 714 | 2021-06-12 | 2021-06-26 | 14d | 1040d | 0d | П1, К1 |
| 716 | 9.2.19 | **Тендер лифты** |  | 59d | 2027-11-27 | 2028-01-29 |  | 2021-04-19 | 2021-06-26 | 58d | 664d |  | П1, К1 |
| 717 | 9.2.19.1 | Подготовка ТЗ лифты |  | 7d | 2027-11-27 | 2027-12-04 | 667FS+60d |  |  |  | 662d | 0d | П1, К1 |
| 718 | 9.2.19.2 | Подготовка ВОР Лифты |  | 2d | 2027-12-04 | 2027-12-06 | 717 |  |  |  | 662d | 0d | П1, К1 |
| 719 | 9.2.19.3 | Подготовка оферты лифты |  | 3d | 2027-12-06 | 2027-12-09 | 718 |  |  |  | 662d | 0d | П1, К1 |
| 720 | 9.2.19.4 | Согласование тендерного пакета лифты |  | 3d | 2027-12-09 | 2027-12-12 | 719 |  |  |  | 662d | 0d | П1, К1 |
| 721 | 9.2.19.5 | Тендер Лифты |  | 30d | 2027-12-12 | 2028-01-15 | 720 |  |  |  | 662d | 0d | П1, К1 |
| 722 | 9.2.19.6 | Заключение договора Лифты |  | 14d | 2028-01-15 | 2028-01-29 | 721 |  |  |  | 662d | 0d | П1, К1 |

| ID | WBS | Task | Type | Duration | Start | Finish | Predecessors | Total slack | Free slack | Text2 |
| --- | --- | --- | --- | --- | --- | --- | --- | --- | --- | --- |
| 723 | 9.2.20 | **Тендер номинация подсистемы на фасады** |  | 58d | 2027-11-29 | 2028-01-30 |  | 248d |  | П1, К1 |
| 724 | 9.2.20.1 | РД ВПР номинация Подсистемы на фасады | milestone | 0d | 2027-11-29 | 2027-11-29 | 474 | 346d | 0d |  |
| 725 | 9.2.20.2 | Подготовка ТЗ и ключевых условия номинация подсистемы на фасады |  | 7d | 2027-11-29 | 2027-12-06 | 474, 724 | 346d | 0d | П1, К1 |
| 726 | 9.2.20.3 | Подготовка оферты и чертежей номинация подсистемы на фасады |  | 7d | 2027-12-06 | 2027-12-13 | 725 | 346d | 0d | П1, К1 |
| 727 | 9.2.20.4 | Тендер номинация Подсистемы на фасады |  | 30d | 2027-12-13 | 2028-01-16 | 726 | 346d | 0d | П1, К1 |
| 728 | 9.2.20.5 | Выбор поставщика/подписание соглашения о намерениях номинация Подсистемы на фасады |  | 14d | 2028-01-16 | 2028-01-30 | 727 | 1333d |  | П1, К1 |
| 729 | 9.2.21 | **Тендер номинация облицовочных материалов фасада** |  | 58d | 2027-10-30 | 2027-12-27 |  | 1365d |  |  |
| 730 | 9.2.21.1 | **Тендер номинация ХЦП** |  | 58d | 2027-10-30 | 2027-12-27 |  | 1365d |  | П1, К1 |
| 731 | 9.2.21.1.1 | РД ВПР номинация ХЦП | milestone | 0d | 2027-10-30 | 2027-10-30 | 770SS-30d | 1363d | 0d |  |
| 732 | 9.2.21.1.2 | Подготовка ТЗ и ключевых условия номинация ХЦП |  | 7d | 2027-10-30 | 2027-11-06 | 770SS-30d, 731 | 1363d | 0d | П1, К1 |
| 733 | 9.2.21.1.3 | Подготовка оферты и чертежей номинация ХЦП |  | 7d | 2027-11-06 | 2027-11-13 | 732 | 1363d | 0d | П1, К1 |
| 734 | 9.2.21.1.4 | Тендер номинация ХЦП |  | 30d | 2027-11-13 | 2027-12-13 | 733 | 1363d | 0d | П1, К1 |
| 735 | 9.2.21.1.5 | Выбор поставщика/подписание соглашения о намерениях номинация ХЦП |  | 14d | 2027-12-13 | 2027-12-27 | 734 | 1363d |  | П1, К1 |
| 736 | 9.2.21.2 | **Тендер номинация Бетонная плитка** |  | 58d | 2027-10-30 | 2027-12-27 |  | 1365d |  | П1, К1 |
| 737 | 9.2.21.2.1 | РД ВПР номинация Бетонная плитка | milestone | 0d | 2027-10-30 | 2027-10-30 | 732SS | 1363d | 0d |  |
| 738 | 9.2.21.2.2 | Подготовка ТЗ и ключевых условия номинация Бетонная плитка |  | 7d | 2027-10-30 | 2027-11-06 | 732SS, 737 | 1363d | 0d | П1, К1 |
| 739 | 9.2.21.2.3 | Подготовка оферты и чертежей номинация Бетонная плитка |  | 7d | 2027-11-06 | 2027-11-13 | 738 | 1363d | 0d | П1, К1 |
| 740 | 9.2.21.2.4 | Тендер номинация Бетонная плитка |  | 30d | 2027-11-13 | 2027-12-13 | 739 | 1363d | 0d | П1, К1 |
| 741 | 9.2.21.2.5 | Выбор поставщика/подписание соглашения о намерениях номинация Бетонная плитка |  | 14d | 2027-12-13 | 2027-12-27 | 740 | 1363d |  | П1, К1 |
| 742 | 9.2.21.3 | **Тендер номинация Кассеты** |  | 58d | 2027-10-30 | 2027-12-27 |  | 1365d |  | П1, К1 |
| 743 | 9.2.21.3.1 | РД ВПР номинация Кассеты | milestone | 0d | 2027-10-30 | 2027-10-30 | 732SS | 1363d | 0d |  |
| 744 | 9.2.21.3.2 | Подготовка ТЗ и ключевых условия номинация Кассеты |  | 7d | 2027-10-30 | 2027-11-06 | 732SS, 743 | 1363d | 0d | П1, К1 |
| 745 | 9.2.21.3.3 | Подготовка оферты и чертежей номинация Кассеты |  | 7d | 2027-11-06 | 2027-11-13 | 744 | 1363d | 0d | П1, К1 |
| 746 | 9.2.21.3.4 | Тендер номинация Кассеты |  | 30d | 2027-11-13 | 2027-12-13 | 745 | 1363d | 0d | П1, К1 |
| 747 | 9.2.21.3.5 | Выбор поставщика/подписание соглашения о намерениях номинация Кассеты |  | 14d | 2027-12-13 | 2027-12-27 | 746 | 1363d |  | П1, К1 |

| ID | WBS | Task | Type | Duration | Start | Finish | Predecessors | Baseline start | Baseline finish | Baseline duration | Total slack | Free slack | Text2 |
| --- | --- | --- | --- | --- | --- | --- | --- | --- | --- | --- | --- | --- | --- |
| 748 | 9.2.21.4 | **Тендер номинация Прокат для производства кассет** |  | 58d | 2027-10-30 | 2027-12-27 |  |  |  |  | 1365d |  | П1, К1 |
| 749 | 9.2.21.4.1 | РД ВПР номинация Прокат для производства кассет | milestone | 0d | 2027-10-30 | 2027-10-30 | 732SS |  |  |  | 1363d | 0d |  |
| 750 | 9.2.21.4.2 | Подготовка ТЗ и ключевых условия номинация Прокат для производства кассет |  | 7d | 2027-10-30 | 2027-11-06 | 732SS, 749 |  |  |  | 1363d | 0d | П1, К1 |
| 751 | 9.2.21.4.3 | Подготовка оферты и чертежей номинация Прокат для производства кассет |  | 7d | 2027-11-06 | 2027-11-13 | 750 |  |  |  | 1363d | 0d | П1, К1 |
| 752 | 9.2.21.4.4 | Тендер номинация Прокат для производства кассет |  | 30d | 2027-11-13 | 2027-12-13 | 751 |  |  |  | 1363d | 0d | П1, К1 |
| 753 | 9.2.21.4.5 | Выбор поставщика/подписание соглашения о намерениях номинация Прокат для производства кассет |  | 14d | 2027-12-13 | 2027-12-27 | 752 |  |  |  | 1363d |  | П1, К1 |
| 754 | 9.2.22 | **Тендер номинация Корзины для кондиционеров** |  | 58d | 2027-10-30 | 2027-12-27 |  |  |  |  | 1365d |  | П1, К1 |
| 755 | 9.2.22.1 | РД ВПР номинация Корзины для кондиционеров | milestone | 0d | 2027-10-30 | 2027-10-30 | 732SS, 676SS |  |  |  | 1363d | 0d |  |
| 756 | 9.2.22.2 | Подготовка ТЗ и ключевых условия номинация Корзины для кондиционеров |  | 7d | 2027-10-30 | 2027-11-06 | 732SS, 676SS, 755 |  |  |  | 1363d | 0d | П1, К1 |
| 757 | 9.2.22.3 | Подготовка оферты и чертежей номинация Корзины для кондиционеров |  | 7d | 2027-11-06 | 2027-11-13 | 756 |  |  |  | 1363d | 0d | П1, К1 |
| 758 | 9.2.22.4 | Тендер номинация Корзины для кондиционеров |  | 30d | 2027-11-13 | 2027-12-13 | 757 |  |  |  | 1363d | 0d | П1, К1 |
| 759 | 9.2.22.5 | Выбор поставщика/подписание соглашения о намерениях номинация Корзины для кондиционеров |  | 14d | 2027-12-13 | 2027-12-27 | 758 |  |  |  | 1363d |  | П1, К1 |
| 760 | 9.2.23 | **Тендер МОКАП фасада** |  | 78d | 2027-01-09 | 2027-03-28 |  |  |  |  | 432d |  |  |
| 761 | 9.2.23.1 | РД ВПР МОКАП фасада | milestone | 0d | 2027-01-09 | 2027-01-09 | 479 |  |  |  | 530d | 0d |  |
| 762 | 9.2.23.2 | Подготовка ТЗ МОКАП фасада |  | 7d | 2027-01-09 | 2027-01-16 | 479, 761 |  |  |  | 530d | 0d |  |
| 763 | 9.2.23.3 | Подготовка ВОР МОКАП фасада |  | 21d | 2027-01-16 | 2027-02-06 | 762 |  |  |  | 530d | 0d |  |
| 764 | 9.2.23.4 | Подготовка оферты МОКАП фасада |  | 3d | 2027-02-06 | 2027-02-09 | 763 |  |  |  | 530d | 0d |  |
| 765 | 9.2.23.5 | Согласование тендерного пакета МОКАП фасада |  | 3d | 2027-02-09 | 2027-02-12 | 764 |  |  |  | 530d | 0d |  |
| 766 | 9.2.23.6 | Тендер МОКАП фасада |  | 30d | 2027-02-12 | 2027-03-14 | 765 |  |  |  | 530d | 0d |  |
| 767 | 9.2.23.7 | Заключение договора МОКАП фасада |  | 14d | 2027-03-14 | 2027-03-28 | 766 |  |  |  | 530d | 184d |  |
| 768 | 9.2.24 | **Тендер фасады** |  | 103d | 2027-11-29 | 2028-03-15 |  | 2021-10-08 | 2021-12-05 | 0d | 248d |  | П1, К1 |
| 769 | 9.2.24.1 | РД ВПР Фасады | milestone | 0d | 2027-11-29 | 2027-11-29 | 474 |  |  |  | 362d | 0d |  |
| 770 | 9.2.24.2 | Подготовка ТЗ фасады |  | 7d | 2027-11-29 | 2027-12-06 | 474, 769 |  |  |  | 362d | 0d | П1, К1 |
| 771 | 9.2.24.3 | Подготовка ВОР Фасады |  | 15d | 2027-12-06 | 2027-12-21 | 770 |  |  |  | 362d | 0d | П1, К1 |
| 772 | 9.2.24.4 | Подготовка оферты фасады |  | 3d | 2027-12-21 | 2027-12-24 | 771 |  |  |  | 362d | 0d | П1, К1 |
| 773 | 9.2.24.5 | Согласование тендерного пакета фасады |  | 3d | 2027-12-24 | 2027-12-27 | 771, 772 |  |  |  | 362d | 16d | П1, К1 |
| 774 | 9.2.24.6 | Тендер Фасады |  | 45d | 2028-01-16 | 2028-03-01 | 773, 727 |  |  |  | 346d | 0d | П1, К1 |
| 775 | 9.2.24.7 | Заключение договора Фасады |  | 14d | 2028-03-01 | 2028-03-15 | 774 |  |  |  | 346d | 0d | П1, К1 |

| ID | WBS | Task | Type | Duration | Start | Finish | Predecessors | Baseline start | Baseline finish | Baseline duration | Total slack | Free slack | Text2 |
| --- | --- | --- | --- | --- | --- | --- | --- | --- | --- | --- | --- | --- | --- |
| 776 | 9.2.25 | **Тендер номинация оконного/витражного профиля** |  | 58d | 2027-03-27 | 2027-05-24 |  |  |  |  | 480d |  | П1, К1 |
| 777 | 9.2.25.1 | РД ВПР номинация Оконный/витражный профиль | milestone | 0d | 2027-03-27 | 2027-03-27 | 487, 491 |  |  |  | 638d | 0d |  |
| 778 | 9.2.25.2 | Подготовка ТЗ и ключевых условия номинация оконного/витражного профиля |  | 7d | 2027-03-27 | 2027-04-03 | 487, 491, 777 |  |  |  | 638d | 0d | П1, К1 |
| 779 | 9.2.25.3 | Подготовка оферты и чертежей номинация оконного/витражного профиля |  | 7d | 2027-04-03 | 2027-04-10 | 778 |  |  |  | 638d | 0d | П1, К1 |
| 780 | 9.2.25.4 | Тендер номинация Оконный/витражный профиль |  | 30d | 2027-04-10 | 2027-05-10 | 779 |  |  |  | 638d | 0d | П1, К1 |
| 781 | 9.2.25.5 | Выбор поставщика/подписание соглашения о намерениях номинация Оконный/витражный профиль |  | 14d | 2027-05-10 | 2027-05-24 | 780 |  |  |  | 1580d |  | П1, К1 |
| 782 | 9.2.26 | **Тендер окна** |  | 88d | 2027-03-27 | 2027-06-23 |  | 2021-10-08 | 2021-12-05 | 0d | 480d |  | П1, К1 |
| 783 | 9.2.26.1 | РД ВПР Окна | milestone | 0d | 2027-03-27 | 2027-03-27 | 487, 491 |  |  |  | 665d | 0d |  |
| 784 | 9.2.26.2 | Подготовка ТЗ окна |  | 7d | 2027-03-27 | 2027-04-03 | 487, 491, 783 |  |  |  | 665d | 0d | П1, К1 |
| 785 | 9.2.26.3 | Подготовка ВОР Окна |  | 4d | 2027-04-03 | 2027-04-07 | 784 |  |  |  | 665d | 0d | П1, К1 |
| 786 | 9.2.26.4 | Подготовка оферты окна |  | 3d | 2027-04-07 | 2027-04-10 | 785 |  |  |  | 665d | 0d | П1, К1 |
| 787 | 9.2.26.5 | Согласование тендерного пакета окна |  | 3d | 2027-04-10 | 2027-04-13 | 785, 786 |  |  |  | 665d | 27d | П1, К1 |
| 788 | 9.2.26.6 | Тендер Окна |  | 30d | 2027-05-10 | 2027-06-09 | 787, 780 |  |  |  | 638d | 0d | П1, К1 |
| 789 | 9.2.26.7 | Заключение договора Окна |  | 14d | 2027-06-09 | 2027-06-23 | 788 |  |  |  | 638d | 0d | П1, К1 |
| 790 | 9.2.27 | **Тендер Витражи** |  | 1609d? | 2023-01-10 | 2027-06-23 |  | 2021-10-08 | 2021-12-05 | 0d | 1552d |  | П1, К1 |
| 791 | 9.2.27.1 | РД ВПР Витражи |  | 1d? | 2023-01-10 | 2023-01-11 |  |  |  |  | 3158d |  |  |
| 792 | 9.2.27.2 | Подготовка ТЗ Витражи |  | 7d | 2027-03-27 | 2027-04-03 | 487, 491 |  |  |  | 1577d | 0d | П1, К1 |
| 793 | 9.2.27.3 | Подготовка ВОР Витражи |  | 4d | 2027-04-03 | 2027-04-07 | 792 |  |  |  | 1577d | 0d | П1, К1 |
| 794 | 9.2.27.4 | Подготовка оферты Витражи |  | 3d | 2027-04-07 | 2027-04-10 | 793 |  |  |  | 1577d | 0d | П1, К1 |
| 795 | 9.2.27.5 | Согласование тендерного пакета Витражи |  | 3d | 2027-04-10 | 2027-04-13 | 793, 794 |  |  |  | 1577d | 27d | П1, К1 |
| 796 | 9.2.27.6 | Тендер Витражи |  | 30d | 2027-05-10 | 2027-06-09 | 795, 780 |  |  |  | 1550d | 0d | П1, К1 |
| 797 | 9.2.27.7 | Заключение договора Витражи |  | 14d | 2027-06-09 | 2027-06-23 | 796 |  |  |  | 1550d | 0d | П1, К1 |
| 798 | 9.2.28 | **Тендер номинация ИТП** |  | 65d | 2027-03-12 | 2027-05-16 |  |  |  |  | 1590d |  | П1, К1 |
| 799 | 9.2.28.1 | **Тендер номинация Теплообменное оборудование** |  | 65d | 2027-03-12 | 2027-05-16 |  |  |  |  | 1590d |  | П1, К1 |
| 800 | 9.2.28.1.1 | РД ВПР номинация Теплообменное оборудование | milestone | 0d | 2027-03-12 | 2027-03-12 | 813SS-30d |  |  |  | 1588d | 0d |  |
| 801 | 9.2.28.1.2 | Подготовка ТЗ и ключевых условия номинация Теплообменное оборудование |  | 7d | 2027-03-12 | 2027-03-19 | 813SS-30d, 800 |  |  |  | 1588d | 0d | П1, К1 |
| 802 | 9.2.28.1.3 | Подготовка оферты номинация Теплообменное оборудование |  | 14d | 2027-03-19 | 2027-04-02 | 801 |  |  |  | 1588d | 0d | П1, К1 |
| 803 | 9.2.28.1.4 | Тендер номинация Теплообменное оборудование |  | 30d | 2027-04-02 | 2027-05-02 | 802 |  |  |  | 1588d | 0d | П1, К1 |
| 804 | 9.2.28.1.5 | Выбор поставщика/подписание соглашения о намерениях номинация Теплообменное оборудование |  | 14d | 2027-05-02 | 2027-05-16 | 803 |  |  |  | 1588d |  | П1, К1 |

| ID | WBS | Task | Type | Duration | Start | Finish | Predecessors | Baseline start | Baseline finish | Baseline duration | Total slack | Free slack | Text2 |
| --- | --- | --- | --- | --- | --- | --- | --- | --- | --- | --- | --- | --- | --- |
| 805 | 9.2.28.2 | **Тендер номинация Запорка ИТП** |  | 65d | 2027-03-12 | 2027-05-16 |  |  |  |  | 1590d |  | П1, К1 |
| 806 | 9.2.28.2.1 | РД ВПР номинация номинация Запорка ИТП | milestone | 0d | 2027-03-12 | 2027-03-12 | 801SS |  |  |  | 1588d | 0d |  |
| 807 | 9.2.28.2.2 | Подготовка ТЗ и ключевых условия номинация Запорка ИТП |  | 7d | 2027-03-12 | 2027-03-19 | 801SS, 806 |  |  |  | 1588d | 0d | П1, К1 |
| 808 | 9.2.28.2.3 | Подготовка оферты номинация Запорка ИТП |  | 14d | 2027-03-19 | 2027-04-02 | 807 |  |  |  | 1588d | 0d | П1, К1 |
| 809 | 9.2.28.2.4 | Тендер номинация номинация Запорка ИТП |  | 30d | 2027-04-02 | 2027-05-02 | 808 |  |  |  | 1588d | 0d | П1, К1 |
| 810 | 9.2.28.2.5 | Выбор поставщика/подписание соглашения о намерениях номинация Запорка ИТП |  | 14d | 2027-05-02 | 2027-05-16 | 809 |  |  |  | 1588d |  | П1, К1 |
| 811 | 9.2.29 | **Тендер ИТП** |  | 78d | 2027-04-11 | 2027-06-28 |  | 2022-01-22 | 2022-04-22 | 90d | 905d |  | П1, К1 |
| 812 | 9.2.29.1 | РД ВПР ИТП | milestone | 0d | 2027-04-11 | 2027-04-11 | 460 |  |  |  | 903d | 0d |  |
| 813 | 9.2.29.2 | Подготовка ТЗ ИТП |  | 7d | 2027-04-11 | 2027-04-18 | 460, 812 | 2022-01-22 | 2022-02-12 | 21d | 903d | 0d | П1, К1 |
| 814 | 9.2.29.3 | Подготовка ВОР ИТП |  | 21d | 2027-04-18 | 2027-05-09 | 813 |  |  |  | 903d | 0d | П1, К1 |
| 815 | 9.2.29.4 | Подготовка оферты ИТП |  | 3d | 2027-05-09 | 2027-05-12 | 814 |  |  |  | 903d | 0d | П1, К1 |
| 816 | 9.2.29.5 | Согласование тендерного пакета ИТП |  | 3d | 2027-05-12 | 2027-05-15 | 814, 815 |  |  |  | 903d | 0d | П1, К1 |
| 817 | 9.2.29.6 | Тендер ИТП |  | 30d | 2027-05-15 | 2027-06-14 | 816 | 2022-02-12 | 2022-04-08 | 55d | 903d | 0d | П1, К1 |
| 818 | 9.2.29.7 | Заключение договора ИТП |  | 14d | 2027-06-14 | 2027-06-28 | 817 | 2022-04-08 | 2022-04-22 | 14d | 903d | 399d | П1, К1 |
| 819 | 9.2.30 | **Тендер на номинацию основных производителей инженерного оборудования Парикнг** |  | 65d | 2027-04-26 | 2027-06-30 |  |  |  |  | 1545d |  | П1, К1 |
| 820 | 9.2.30.1 | **Тендер номинация ВРУ и щитовое оборудование Паркинг** |  | 65d | 2027-04-26 | 2027-06-30 |  |  |  |  | 1545d |  | П1, К1 |
| 821 | 9.2.30.1.1 | РД ВПР номинация ВРУ и щитовое оборудование Паркинг | milestone | 0d | 2027-04-26 | 2027-04-26 | 847SS-30d |  |  |  | 1543d | 0d |  |
| 822 | 9.2.30.1.2 | Подготовка ТЗ и ключевых условия номинация ВРУ и щитовое оборудование Паркинг |  | 7d | 2027-04-26 | 2027-05-03 | 847SS-30d, 821 |  |  |  | 1543d | 0d | П1, К1 |
| 823 | 9.2.30.1.3 | Подготовка оферты номинация ВРУ и щитовое оборудование Паркинг |  | 14d | 2027-05-03 | 2027-05-17 | 822 |  |  |  | 1543d | 0d | П1, К1 |
| 824 | 9.2.30.1.4 | Тендер номинация ВРУ и щитовое оборудование Паркинг |  | 30d | 2027-05-17 | 2027-06-16 | 823 |  |  |  | 1543d | 0d | П1, К1 |
| 825 | 9.2.30.1.5 | Выбор поставщика/подписание соглашения о намерениях номинация ВРУ и щитовое оборудование Паркинг |  | 14d | 2027-06-16 | 2027-06-30 | 824 |  |  |  | 1543d |  | П1, К1 |
| 826 | 9.2.30.2 | **Тендер номинация Кабель Паркинг** |  | 65d | 2027-04-26 | 2027-06-30 |  |  |  |  | 1545d |  | П1, К1 |
| 827 | 9.2.30.2.1 | РД ВПР номинация Кабель Паркинг | milestone | 0d | 2027-04-26 | 2027-04-26 | 822SS |  |  |  | 1543d | 0d |  |
| 828 | 9.2.30.2.2 | Подготовка ТЗ и ключевых условия номинация Кабель Паркинг |  | 7d | 2027-04-26 | 2027-05-03 | 822SS, 827 |  |  |  | 1543d | 0d | П1, К1 |
| 829 | 9.2.30.2.3 | Подготовка оферты номинация Кабель Паркинг |  | 14d | 2027-05-03 | 2027-05-17 | 828 |  |  |  | 1543d | 0d | П1, К1 |
| 830 | 9.2.30.2.4 | Тендер номинация Кабель Паркинг |  | 30d | 2027-05-17 | 2027-06-16 | 829 |  |  |  | 1543d | 0d | П1, К1 |
| 831 | 9.2.30.2.5 | Выбор поставщика/подписание соглашения о намерениях номинация Кабель Паркинг |  | 14d | 2027-06-16 | 2027-06-30 | 830 |  |  |  | 1543d |  | П1, К1 |

| ID | WBS | Task | Type | Duration | Start | Finish | Predecessors | Baseline start | Baseline finish | Baseline duration | Total slack | Free slack | Text2 |
| --- | --- | --- | --- | --- | --- | --- | --- | --- | --- | --- | --- | --- | --- |
| 832 | 9.2.31 | **Тендер на номинацию основных производителей инженерного оборудования Корпус** |  | 65d | 2027-04-26 | 2027-06-30 |  |  |  |  | 1545d |  | П1, К1 |
| 833 | 9.2.31.1 | **Тендер номинация ВРУ и щитовое оборудование Корпус** |  | 65d | 2027-04-26 | 2027-06-30 |  |  |  |  | 1545d |  | П1, К1 |
| 834 | 9.2.31.1.1 | РД ВПР номинация ВРУ и щитовое оборудование Корпус | milestone | 0d | 2027-04-26 | 2027-04-26 | 863SS-30d |  |  |  | 1608d |  |  |
| 835 | 9.2.31.1.2 | Подготовка ТЗ и ключевых условия номинация ВРУ и щитовое оборудование Корпус |  | 7d | 2027-04-26 | 2027-05-03 | 863SS-30d |  |  |  | 1543d | 0d | П1, К1 |
| 836 | 9.2.31.1.3 | Подготовка оферты номинация ВРУ и щитовое оборудование Корпус |  | 14d | 2027-05-03 | 2027-05-17 | 835 |  |  |  | 1543d | 0d | П1, К1 |
| 837 | 9.2.31.1.4 | Тендер номинация ВРУ и щитовое оборудование Корпус |  | 30d | 2027-05-17 | 2027-06-16 | 836 |  |  |  | 1543d | 0d | П1, К1 |
| 838 | 9.2.31.1.5 | Выбор поставщика/подписание соглашения о намерениях номинация ВРУ и щитовое оборудование Корпус |  | 14d | 2027-06-16 | 2027-06-30 | 837 |  |  |  | 1543d |  | П1, К1 |
| 839 | 9.2.31.2 | **Тендер номинация Кабель Корпус** |  | 65d | 2027-04-26 | 2027-06-30 |  |  |  |  | 1545d |  | П1, К1 |
| 840 | 9.2.31.2.1 | РД ВПР номинация номинация Кабель Корпус | milestone | 0d | 2027-04-26 | 2027-04-26 | 835SS |  |  |  | 1543d | 0d |  |
| 841 | 9.2.31.2.2 | Подготовка ТЗ и ключевых условия номинация Кабель Корпус |  | 7d | 2027-04-26 | 2027-05-03 | 835SS, 840 |  |  |  | 1543d | 0d | П1, К1 |
| 842 | 9.2.31.2.3 | Подготовка оферты номинация Кабель Корпус |  | 14d | 2027-05-03 | 2027-05-17 | 841 |  |  |  | 1543d | 0d | П1, К1 |
| 843 | 9.2.31.2.4 | Тендер номинация номинация Кабель Корпус |  | 30d | 2027-05-17 | 2027-06-16 | 842 |  |  |  | 1543d | 0d | П1, К1 |
| 844 | 9.2.31.2.5 | Выбор поставщика/подписание соглашения о намерениях номинация Кабель Корпус |  | 14d | 2027-06-16 | 2027-06-30 | 843 |  |  |  | 1543d |  | П1, К1 |
| 845 | 9.2.32 | **Тендер Внутренние инженерные сети Паркинг** |  | 132d | 2027-05-26 | 2027-10-05 |  | 2022-01-22 | 2022-04-22 | 0d | 726d |  | П1, К1 |
| 846 | 9.2.32.1 | РД ВПР Внутренние инженерные сети Паркинг | milestone | 0d | 2027-05-26 | 2027-05-26 | 430 |  |  |  | 724d | 0d |  |
| 847 | 9.2.32.2 | Подготовка ТЗ Внутренние инженерные сети Паркинг |  | 7d | 2027-05-26 | 2027-06-02 | 430, 846 |  |  |  | 724d | 0d | П1, К1 |
| 848 | 9.2.32.3 | Подготовка ВОР Внутренние инженерные сети Паркинг |  | 60d | 2027-06-02 | 2027-08-01 | 847 |  |  |  | 724d | 0d | П1, К1 |
| 849 | 9.2.32.4 | Подготовка оферты Внутренние инженерные сети Паркинг |  | 3d | 2027-08-01 | 2027-08-04 | 848 |  |  |  | 724d | 0d | П1, К1 |
| 850 | 9.2.32.5 | Согласование тендерного пакета Внутренние инженерные сети Паркинг |  | 3d | 2027-08-04 | 2027-08-07 | 849 |  |  |  | 724d | 0d | П1, К1 |
| 851 | 9.2.32.6 | Тендер Внутренние инженерные сети Паркинг |  | 45d | 2027-08-07 | 2027-09-21 | 850 |  |  |  | 724d | 0d | П1, К1 |
| 852 | 9.2.32.7 | Заключение договора Внутренние инженерные сети Паркинг |  | 14d | 2027-09-21 | 2027-10-05 | 851 |  |  |  | 724d | 0d | П1, К1 |
| 853 | 9.2.33 | **Тендер Внутренние инженерные сети Корпус (ОВ, ВК)** |  | 132d | 2027-05-26 | 2027-10-05 |  | 2022-01-22 | 2022-04-22 | 0d | 346d |  | П1, К1 |
| 854 | 9.2.33.1 | РД ВПР Внутренние инженерные сети Корпус (ОВ, ВК) | milestone | 0d | 2027-05-26 | 2027-05-26 | 447 |  |  |  | 1578d |  |  |
| 855 | 9.2.33.2 | Подготовка ТЗ Внутренние инженерные сети Корпус (ОВ, ВК) |  | 7d | 2027-05-26 | 2027-06-02 | 447 |  |  |  | 344d | 0d | П1, К1 |
| 856 | 9.2.33.3 | Подготовка ВОР Внутренние инженерные сети Корпус (ОВ, ВК) |  | 60d | 2027-06-02 | 2027-08-01 | 855 |  |  |  | 344d | 0d | П1, К1 |
| 857 | 9.2.33.4 | Подготовка оферты Внутренние инженерные сети Корпус (ОВ, ВК) |  | 3d | 2027-08-01 | 2027-08-04 | 856 |  |  |  | 344d | 0d | П1, К1 |
| 858 | 9.2.33.5 | Согласование тендерного пакета Внутренние инженерные сети Корпус (ОВ, ВК) |  | 3d | 2027-08-04 | 2027-08-07 | 857 |  |  |  | 344d | 0d | П1, К1 |
| 859 | 9.2.33.6 | Тендер Внутренние инженерные сети Корпус (ОВ, ВК) |  | 45d | 2027-08-07 | 2027-09-21 | 858 |  |  |  | 344d | 0d | П1, К1 |
| 860 | 9.2.33.7 | Заключение договора Внутренние инженерные сети Корпус (ОВ, ВК) |  | 14d | 2027-09-21 | 2027-10-05 | 859 |  |  |  | 344d | 0d | П1, К1 |

| ID | WBS | Task | Type | Duration | Start | Finish | Predecessors | Baseline start | Baseline finish | Baseline duration | Total slack | Free slack | Text2 |
| --- | --- | --- | --- | --- | --- | --- | --- | --- | --- | --- | --- | --- | --- |
| 861 | 9.2.34 | **Тендер Внутренние инженерные сети Корпус (ЭОМ, СС)** |  | 132d | 2027-05-26 | 2027-10-05 |  | 2022-01-22 | 2022-04-22 | 0d | 346d |  | П1, К1 |
| 862 | 9.2.34.1 | РД ВПР Внутренние инженерные сети Корпус (ЭОМ, СС) | milestone | 0d | 2027-05-26 | 2027-05-26 | 455, 451 |  |  |  | 1578d |  |  |
| 863 | 9.2.34.2 | Подготовка ТЗ Внутренние инженерные сети Корпус (ЭОМ, СС) |  | 7d | 2027-05-26 | 2027-06-02 | 455, 451 |  |  |  | 344d | 0d | П1, К1 |
| 864 | 9.2.34.3 | Подготовка ВОР Внутренние инженерные сети Корпус (ЭОМ, СС) |  | 60d | 2027-06-02 | 2027-08-01 | 863 |  |  |  | 344d | 0d | П1, К1 |
| 865 | 9.2.34.4 | Подготовка оферты Внутренние инженерные сети Корпус (ЭОМ, СС) |  | 3d | 2027-08-01 | 2027-08-04 | 864 |  |  |  | 344d | 0d | П1, К1 |
| 866 | 9.2.34.5 | Согласование тендерного пакета Внутренние инженерные сети Корпус (ЭОМ, СС) |  | 3d | 2027-08-04 | 2027-08-07 | 865 |  |  |  | 344d | 0d | П1, К1 |
| 867 | 9.2.34.6 | Тендер Внутренние инженерные сети Корпус (ЭОМ, СС) |  | 45d | 2027-08-07 | 2027-09-21 | 866 |  |  |  | 344d | 0d | П1, К1 |
| 868 | 9.2.34.7 | Заключение договора Внутренние инженерные сети Корпус (ЭОМ, СС) |  | 14d | 2027-09-21 | 2027-10-05 | 867 |  |  |  | 344d | 0d | П1, К1 |
| 869 | 9.2.35 | **Тендер на номинацию Отделка Паркинга** |  | 80d | 2027-01-26 | 2027-04-16 |  |  |  |  | 1620d |  | П1, К1 |
| 870 | 9.2.35.1 | **Тендер на номинацию Керамогранит Паркинга** |  | 65d | 2027-02-10 | 2027-04-16 |  |  |  |  | 1613d |  | П1, К1 |
| 871 | 9.2.35.1.1 | РД ВПР номинация Керамогранит Паркинга | milestone | 0d | 2027-02-10 | 2027-02-10 | 884SS-30d |  |  |  | 1611d | 0d |  |
| 872 | 9.2.35.1.2 | Подготовка ТЗ и ключевых условия на номинацию Керамогранит Паркинга |  | 7d | 2027-02-10 | 2027-02-17 | 884SS-30d, 871 |  |  |  | 1611d | 0d | П1, К1 |
| 873 | 9.2.35.1.3 | Подготовка оферты на номинацию Керамогранит Паркинга |  | 14d | 2027-02-17 | 2027-03-03 | 872 |  |  |  | 1618d | 0d | П1, К1 |
| 874 | 9.2.35.1.4 | Тендер номинация Керамогранит Паркинга |  | 30d | 2027-03-03 | 2027-04-02 | 873 |  |  |  | 1618d | 0d | П1, К1 |
| 875 | 9.2.35.1.5 | Выбор поставщика/подписание соглашения о намерениях номинация Керамогранит Паркинга |  | 14d | 2027-04-02 | 2027-04-16 | 874 |  |  |  | 1618d |  | П1, К1 |
| 876 | 9.2.35.2 | **Тендер на номинацию Двери технические Паркинга** |  | 65d | 2027-01-26 | 2027-04-01 |  |  |  |  | 1635d |  | П1, К1 |
| 877 | 9.2.35.2.1 | РД ВПР номинация Двери технические Паркинга | milestone | 0d | 2027-01-26 | 2027-01-26 | 872SS-15d |  |  |  | 1633d | 0d |  |
| 878 | 9.2.35.2.2 | Подготовка ТЗ и ключевых условия на номинацию Двери технические Паркинга |  | 7d | 2027-01-26 | 2027-02-02 | 872SS-15d, 877 |  |  |  | 1633d | 0d | П1, К1 |
| 879 | 9.2.35.2.3 | Подготовка оферты на номинацию Двери технические Паркинга |  | 14d | 2027-02-02 | 2027-02-16 | 878 |  |  |  | 1633d | 0d | П1, К1 |
| 880 | 9.2.35.2.4 | Тендер номинация Двери технические Паркинга |  | 30d | 2027-02-16 | 2027-03-18 | 879 |  |  |  | 1633d | 0d | П1, К1 |
| 881 | 9.2.35.2.5 | Выбор поставщика/подписание соглашения о намерениях номинация Двери технические Паркинга |  | 14d | 2027-03-18 | 2027-04-01 | 880 |  |  |  | 1633d |  | П1, К1 |
| 882 | 9.2.36 | **Тендер Отделка подземного паркинга и технических помещений** |  | 60d | 2027-03-12 | 2027-05-11 |  | 2022-12-12 | 2023-03-22 | 0d | 933d |  | П1, К1 |
| 883 | 9.2.36.1 | РД ВПР Отделка подземного паркинга и технических помещений | milestone | 0d | 2027-03-12 | 2027-03-12 | 465 |  |  |  | 931d | 0d |  |
| 884 | 9.2.36.2 | Подготовка ТЗ отделка подземного паркинга и технических помещений |  | 7d | 2027-03-12 | 2027-03-19 | 465, 883 |  |  |  | 931d | 0d | П1, К1 |
| 885 | 9.2.36.3 | Подготовка ВОР Отделка подземного паркинга и технических помещений |  | 3d | 2027-03-19 | 2027-03-22 | 884 |  |  |  | 931d | 0d | П1, К1 |
| 886 | 9.2.36.4 | Подготовка оферты отделка подземного паркинга и технических помещений |  | 3d | 2027-03-22 | 2027-03-25 | 885 |  |  |  | 931d | 0d | П1, К1 |
| 887 | 9.2.36.5 | Согласование тендерного пакета отделка подземного паркинга и технических помещений |  | 3d | 2027-03-25 | 2027-03-28 | 885, 886 |  |  |  | 931d | 0d | П1, К1 |
| 888 | 9.2.36.6 | Тендер Отделка подземного паркинга и технических помещений |  | 30d | 2027-03-28 | 2027-04-27 | 887 |  |  |  | 931d | 0d | П1, К1 |
| 889 | 9.2.36.7 | Заключение договора Отделка подземного паркинга и технических помещений |  | 14d | 2027-04-27 | 2027-05-11 | 888 |  |  |  | 931d | 0d | П1, К1 |

| ID | WBS | Task | Type | Duration | Start | Finish | Predecessors | Baseline start | Baseline finish | Baseline duration | Total slack | Free slack | Text2 |
| --- | --- | --- | --- | --- | --- | --- | --- | --- | --- | --- | --- | --- | --- |
| 890 | 9.2.37 | **Тендер устройство полов паркинга_Грандтендер** |  | 78d | 2027-03-12 | 2027-05-29 |  | 2022-12-12 | 2023-03-22 | 0d | 1427d |  | П1, К1 |
| 891 | 9.2.37.1 | РД ВПР Устройство полов паркинга_Грандтендер | milestone | 0d | 2027-03-12 | 2027-03-12 | 465 |  |  |  | 1425d | 0d |  |
| 892 | 9.2.37.2 | Подготовка ТЗ устройство полов паркинга_Грандтендер |  | 7d | 2027-03-12 | 2027-03-19 | 465, 891 |  |  |  | 1425d | 0d | П1, К1 |
| 893 | 9.2.37.3 | Подготовка ВОР Устройство полов паркинга_Грандтендер |  | 21d | 2027-03-19 | 2027-04-09 | 892 |  |  |  | 1425d | 0d | П1, К1 |
| 894 | 9.2.37.4 | Подготовка оферты устройство полов паркинга_Грандтендер |  | 3d | 2027-04-09 | 2027-04-12 | 893 |  |  |  | 1425d | 0d | П1, К1 |
| 895 | 9.2.37.5 | Согласование тендерного пакета устройство полов паркинга_Грандтендер |  | 3d | 2027-04-12 | 2027-04-15 | 893, 894 |  |  |  | 1425d | 0d | П1, К1 |
| 896 | 9.2.37.6 | Тендер Устройство полов паркинга_Грандтендер |  | 30d | 2027-04-15 | 2027-05-15 | 895 |  |  |  | 1425d | 0d | П1, К1 |
| 897 | 9.2.37.7 | Заключение договора Устройство полов паркинга_Грандтендер |  | 14d | 2027-05-15 | 2027-05-29 | 896 |  |  |  | 1425d | 0d | П1, К1 |
| 898 | 9.2.38 | **Тендер МОКАП отделки лобби** |  | 78d | 2027-09-08 | 2027-11-25 |  |  |  |  | 1397d |  |  |
| 899 | 9.2.38.1 | РД ВПР МОКАП отделки лобби | milestone | 0d | 2027-09-08 | 2027-09-08 | 516 |  |  |  | 1395d | 0d |  |
| 900 | 9.2.38.2 | Подготовка ТЗ МОКАП отделки лобби |  | 7d | 2027-09-08 | 2027-09-15 | 516, 899 |  |  |  | 1395d | 0d |  |
| 901 | 9.2.38.3 | Подготовка ВОР МОКАП отделки лобби |  | 21d | 2027-09-15 | 2027-10-06 | 900 |  |  |  | 1395d | 0d |  |
| 902 | 9.2.38.4 | Подготовка оферты МОКАП отделки лобби |  | 3d | 2027-10-06 | 2027-10-09 | 901 |  |  |  | 1395d | 0d |  |
| 903 | 9.2.38.5 | Согласование тендерного пакета МОКАП отделки лобби |  | 3d | 2027-10-09 | 2027-10-12 | 902 |  |  |  | 1395d | 0d |  |
| 904 | 9.2.38.6 | Тендер МОКАП отделки лобби |  | 30d | 2027-10-12 | 2027-11-11 | 903 |  |  |  | 1395d | 0d |  |
| 905 | 9.2.38.7 | Заключение договора МОКАП отделки лобби |  | 14d | 2027-11-11 | 2027-11-25 | 904 |  |  |  | 1395d |  |  |
| 906 | 9.2.39 | **Тендер на номинацию Отделка** |  | 80d | 2027-04-11 | 2027-06-30 |  |  |  |  | 1545d |  | П1, К1 |
| 907 | 9.2.39.1 | **Тендер на номинацию Керамогранит** |  | 65d | 2027-04-26 | 2027-06-30 |  |  |  |  | 1538d |  | П1, К1 |
| 908 | 9.2.39.1.1 | РД ВПР номинация Керамогранит | milestone | 0d | 2027-04-26 | 2027-04-26 | 987SS-30d |  |  |  | 1536d | 0d |  |
| 909 | 9.2.39.1.2 | Подготовка ТЗ и ключевых условия на номинацию Керамогранит |  | 7d | 2027-04-26 | 2027-05-03 | 987SS-30d, 908 |  |  |  | 1536d | 0d | П1, К1 |
| 910 | 9.2.39.1.3 | Подготовка оферты на номинацию Керамогранит |  | 14d | 2027-05-03 | 2027-05-17 | 909 |  |  |  | 1543d | 0d | П1, К1 |
| 911 | 9.2.39.1.4 | Тендер номинация Керамогранит |  | 30d | 2027-05-17 | 2027-06-16 | 910 |  |  |  | 1543d | 0d | П1, К1 |
| 912 | 9.2.39.1.5 | Выбор поставщика/подписание соглашения о намерениях номинация Керамогранит |  | 14d | 2027-06-16 | 2027-06-30 | 911 |  |  |  | 1543d |  | П1, К1 |
| 913 | 9.2.39.2 | **Тендер на номинацию Потолки** |  | 65d | 2027-04-26 | 2027-06-30 |  |  |  |  | 1545d |  | П1, К1 |
| 914 | 9.2.39.2.1 | РД ВПР номинация Потолки | milestone | 0d | 2027-04-26 | 2027-04-26 | 909SS |  |  |  | 1543d | 0d |  |
| 915 | 9.2.39.2.2 | Подготовка ТЗ и ключевых условия на номинацию Потолки |  | 7d | 2027-04-26 | 2027-05-03 | 909SS, 914 |  |  |  | 1543d | 0d | П1, К1 |
| 916 | 9.2.39.2.3 | Подготовка оферты на номинацию Потолки |  | 14d | 2027-05-03 | 2027-05-17 | 915 |  |  |  | 1543d | 0d | П1, К1 |
| 917 | 9.2.39.2.4 | Тендер номинация Потолки |  | 30d | 2027-05-17 | 2027-06-16 | 916 |  |  |  | 1543d | 0d | П1, К1 |
| 918 | 9.2.39.2.5 | Выбор поставщика/подписание соглашения о намерениях номинация Потолки |  | 14d | 2027-06-16 | 2027-06-30 | 917 |  |  |  | 1543d |  | П1, К1 |

| ID | WBS | Task | Type | Duration | Start | Finish | Predecessors | Total slack | Free slack | Text2 |
| --- | --- | --- | --- | --- | --- | --- | --- | --- | --- | --- |
| 919 | 9.2.39.3 | **Тендер на номинацию Ламинат (чистовая квартир)** |  | 65d | 2027-04-26 | 2027-06-30 |  | 1545d |  | П1, К1 |
| 920 | 9.2.39.3.1 | РД ВПР номинация Ламинат | milestone | 0d | 2027-04-26 | 2027-04-26 | 909SS | 1543d | 0d |  |
| 921 | 9.2.39.3.2 | Подготовка ТЗ и ключевых условия на номинацию Ламинат |  | 7d | 2027-04-26 | 2027-05-03 | 909SS, 920 | 1543d | 0d | П1, К1 |
| 922 | 9.2.39.3.3 | Подготовка оферты на номинацию Ламинат |  | 14d | 2027-05-03 | 2027-05-17 | 921 | 1543d | 0d | П1, К1 |
| 923 | 9.2.39.3.4 | Тендер номинация Ламинат |  | 30d | 2027-05-17 | 2027-06-16 | 922 | 1543d | 0d | П1, К1 |
| 924 | 9.2.39.3.5 | Выбор поставщика/подписание соглашения о намерениях номинация Ламинат |  | 14d | 2027-06-16 | 2027-06-30 | 923 | 1543d |  | П1, К1 |
| 925 | 9.2.39.4 | **Тендер на номинацию Сантехника (чистовая квартир)** |  | 65d | 2027-04-26 | 2027-06-30 |  | 1545d |  | П1, К1 |
| 926 | 9.2.39.4.1 | РД ВПР номинация Сантехника | milestone | 0d | 2027-04-26 | 2027-04-26 | 909SS | 1543d | 0d |  |
| 927 | 9.2.39.4.2 | Подготовка ТЗ и ключевых условия на номинацию Сантехника |  | 7d | 2027-04-26 | 2027-05-03 | 909SS, 926 | 1543d | 0d | П1, К1 |
| 928 | 9.2.39.4.3 | Подготовка оферты на номинацию Сантехника |  | 14d | 2027-05-03 | 2027-05-17 | 927 | 1543d | 0d | П1, К1 |
| 929 | 9.2.39.4.4 | Тендер номинация Сантехника |  | 30d | 2027-05-17 | 2027-06-16 | 928 | 1543d | 0d | П1, К1 |
| 930 | 9.2.39.4.5 | Выбор поставщика/подписание соглашения о намерениях номинация Сантехника |  | 14d | 2027-06-16 | 2027-06-30 | 929 | 1543d |  | П1, К1 |
| 931 | 9.2.39.5 | **Тендер на номинацию Обои (чистовая квартир)** |  | 65d | 2027-04-26 | 2027-06-30 |  | 1545d |  | П1, К1 |
| 932 | 9.2.39.5.1 | РД ВПР номинация Обои | milestone | 0d | 2027-04-26 | 2027-04-26 | 909SS | 1543d | 0d |  |
| 933 | 9.2.39.5.2 | Подготовка ТЗ и ключевых условия на номинацию Обои |  | 7d | 2027-04-26 | 2027-05-03 | 909SS, 932 | 1543d | 0d | П1, К1 |
| 934 | 9.2.39.5.3 | Подготовка оферты на номинацию Обои |  | 14d | 2027-05-03 | 2027-05-17 | 933 | 1543d | 0d | П1, К1 |
| 935 | 9.2.39.5.4 | Тендер номинация Обои |  | 30d | 2027-05-17 | 2027-06-16 | 934 | 1543d | 0d | П1, К1 |
| 936 | 9.2.39.5.5 | Выбор поставщика/подписание соглашения о намерениях номинация Обои |  | 14d | 2027-06-16 | 2027-06-30 | 935 | 1543d |  | П1, К1 |
| 937 | 9.2.39.6 | **Тендер на номинацию Двери межкомнатные (чистовая квартир)** |  | 65d | 2027-04-11 | 2027-06-15 |  | 1560d |  | П1, К1 |
| 938 | 9.2.39.6.1 | РД ВПР номинация Двери межкомнатные | milestone | 0d | 2027-04-11 | 2027-04-11 | 909SS-15d | 1558d | 0d |  |
| 939 | 9.2.39.6.2 | Подготовка ТЗ и ключевых условия на номинацию Двери межкомнатные |  | 7d | 2027-04-11 | 2027-04-18 | 909SS-15d, 938 | 1558d | 0d | П1, К1 |
| 940 | 9.2.39.6.3 | Подготовка оферты на номинацию Двери межкомнатные |  | 14d | 2027-04-18 | 2027-05-02 | 939 | 1558d | 0d | П1, К1 |
| 941 | 9.2.39.6.4 | Тендер номинация Двери межкомнатные |  | 30d | 2027-05-02 | 2027-06-01 | 940 | 1558d | 0d | П1, К1 |
| 942 | 9.2.39.6.5 | Выбор поставщика/подписание соглашения о намерениях номинация Двери межкомнатные |  | 14d | 2027-06-01 | 2027-06-15 | 941 | 1558d |  | П1, К1 |

| ID | WBS | Task | Type | Duration | Start | Finish | Predecessors | Total slack | Free slack | Text2 |
| --- | --- | --- | --- | --- | --- | --- | --- | --- | --- | --- |
| 943 | 9.2.39.7 | **Тендер на номинацию Лифтовые порталы** |  | 65d | 2027-04-26 | 2027-06-30 |  | 1545d |  | П1, К1 |
| 944 | 9.2.39.7.1 | РД ВПР номинация Лифтовые порталы | milestone | 0d | 2027-04-26 | 2027-04-26 | 909SS | 1543d | 0d |  |
| 945 | 9.2.39.7.2 | Подготовка ТЗ и ключевых условия на номинацию Лифтовые порталы |  | 7d | 2027-04-26 | 2027-05-03 | 909SS, 944 | 1543d | 0d | П1, К1 |
| 946 | 9.2.39.7.3 | Подготовка оферты на номинацию Лифтовые порталы |  | 14d | 2027-05-03 | 2027-05-17 | 945 | 1543d | 0d | П1, К1 |
| 947 | 9.2.39.7.4 | Тендер номинация Лифтовые порталы |  | 30d | 2027-05-17 | 2027-06-16 | 946 | 1543d | 0d | П1, К1 |
| 948 | 9.2.39.7.5 | Выбор поставщика/подписание соглашения о намерениях номинация Лифтовые порталы |  | 14d | 2027-06-16 | 2027-06-30 | 947 | 1543d |  | П1, К1 |
| 949 | 9.2.39.8 | **Тендер на номинацию Люки ревизионные** |  | 65d | 2027-04-26 | 2027-06-30 |  | 1545d |  | П1, К1 |
| 950 | 9.2.39.8.1 | РД ВПР номинация Люки ревизионные | milestone | 0d | 2027-04-26 | 2027-04-26 | 909SS | 1543d | 0d |  |
| 951 | 9.2.39.8.2 | Подготовка ТЗ и ключевых условия на номинацию Люки ревизионные |  | 7d | 2027-04-26 | 2027-05-03 | 909SS, 950 | 1543d | 0d | П1, К1 |
| 952 | 9.2.39.8.3 | Подготовка оферты на номинацию Люки ревизионные |  | 14d | 2027-05-03 | 2027-05-17 | 951 | 1543d | 0d | П1, К1 |
| 953 | 9.2.39.8.4 | Тендер номинация Люки ревизионные |  | 30d | 2027-05-17 | 2027-06-16 | 952 | 1543d | 0d | П1, К1 |
| 954 | 9.2.39.8.5 | Выбор поставщика/подписание соглашения о намерениях номинация Люки ревизионные |  | 14d | 2027-06-16 | 2027-06-30 | 953 | 1543d |  | П1, К1 |
| 955 | 9.2.39.9 | **Тендер на номинацию Лестничные ограждения** |  | 65d | 2027-04-26 | 2027-06-30 |  | 1545d |  | П1, К1 |
| 956 | 9.2.39.9.1 | РД ВПР номинация Лестничные ограждения | milestone | 0d | 2027-04-26 | 2027-04-26 | 909SS | 1543d | 0d |  |
| 957 | 9.2.39.9.2 | Подготовка ТЗ и ключевых условия на номинацию Лестничные ограждения |  | 7d | 2027-04-26 | 2027-05-03 | 909SS, 956 | 1543d | 0d | П1, К1 |
| 958 | 9.2.39.9.3 | Подготовка оферты на номинацию Лестничные ограждения |  | 14d | 2027-05-03 | 2027-05-17 | 957 | 1543d | 0d | П1, К1 |
| 959 | 9.2.39.9.4 | Тендер номинация Лестничные ограждения |  | 30d | 2027-05-17 | 2027-06-16 | 958 | 1543d | 0d | П1, К1 |
| 960 | 9.2.39.9.5 | Выбор поставщика/подписание соглашения о намерениях номинация Лестничные ограждения |  | 14d | 2027-06-16 | 2027-06-30 | 959 | 1543d |  | П1, К1 |
| 961 | 9.2.39.10 | **Тендер на номинацию Освещение** |  | 65d | 2027-04-26 | 2027-06-30 |  | 1545d |  | П1, К1 |
| 962 | 9.2.39.10.1 | РД ВПР номинация Освещение | milestone | 0d | 2027-04-26 | 2027-04-26 | 909SS | 1543d | 0d |  |
| 963 | 9.2.39.10.2 | Подготовка ТЗ и ключевых условия на номинацию Освещение |  | 7d | 2027-04-26 | 2027-05-03 | 909SS, 962 | 1543d | 0d | П1, К1 |
| 964 | 9.2.39.10.3 | Подготовка оферты на номинацию Освещение |  | 14d | 2027-05-03 | 2027-05-17 | 963 | 1543d | 0d | П1, К1 |
| 965 | 9.2.39.10.4 | Тендер номинация Освещение |  | 30d | 2027-05-17 | 2027-06-16 | 964 | 1543d | 0d | П1, К1 |
| 966 | 9.2.39.10.5 | Выбор поставщика/подписание соглашения о намерениях номинация Освещение |  | 14d | 2027-06-16 | 2027-06-30 | 965 | 1543d |  | П1, К1 |

| ID | WBS | Task | Type | Duration | Start | Finish | Predecessors | Baseline start | Baseline finish | Baseline duration | Total slack | Free slack | Text2 |
| --- | --- | --- | --- | --- | --- | --- | --- | --- | --- | --- | --- | --- | --- |
| 967 | 9.2.39.11 | **Тендер на номинацию Двери технические** |  | 65d | 2027-04-11 | 2027-06-15 |  |  |  |  | 1560d |  | П1, К1 |
| 968 | 9.2.39.11.1 | РД ВПР номинация Двери технические | milestone | 0d | 2027-04-11 | 2027-04-11 | 909SS-15d |  |  |  | 1558d | 0d |  |
| 969 | 9.2.39.11.2 | Подготовка ТЗ и ключевых условия на номинацию Двери технические |  | 7d | 2027-04-11 | 2027-04-18 | 909SS-15d, 968 |  |  |  | 1558d | 0d | П1, К1 |
| 970 | 9.2.39.11.3 | Подготовка оферты на номинацию Двери технические |  | 14d | 2027-04-18 | 2027-05-02 | 969 |  |  |  | 1558d | 0d | П1, К1 |
| 971 | 9.2.39.11.4 | Тендер номинация Двери технические |  | 30d | 2027-05-02 | 2027-06-01 | 970 |  |  |  | 1558d | 0d | П1, К1 |
| 972 | 9.2.39.11.5 | Выбор поставщика/подписание соглашения о намерениях номинация Двери технические |  | 14d | 2027-06-01 | 2027-06-15 | 971 |  |  |  | 1558d |  | П1, К1 |
| 973 | 9.2.39.12 | **Тендер на номинацию Двери общедомовые** |  | 65d | 2027-04-11 | 2027-06-15 |  |  |  |  | 1560d |  | П1, К1 |
| 974 | 9.2.39.12.1 | РД ВПР номинация Двери общедомовые | milestone | 0d | 2027-04-11 | 2027-04-11 | 909SS-15d |  |  |  | 1558d | 0d |  |
| 975 | 9.2.39.12.2 | Подготовка ТЗ и ключевых условия на номинацию Двери общедомовые |  | 7d | 2027-04-11 | 2027-04-18 | 909SS-15d, 974 |  |  |  | 1558d | 0d | П1, К1 |
| 976 | 9.2.39.12.3 | Подготовка оферты на номинацию Двери общедомовые |  | 14d | 2027-04-18 | 2027-05-02 | 975 |  |  |  | 1558d | 0d | П1, К1 |
| 977 | 9.2.39.12.4 | Тендер номинация Двери общедомовые |  | 30d | 2027-05-02 | 2027-06-01 | 976 |  |  |  | 1558d | 0d | П1, К1 |
| 978 | 9.2.39.12.5 | Выбор поставщика/подписание соглашения о намерениях номинация Двери общедомовые |  | 14d | 2027-06-01 | 2027-06-15 | 977 |  |  |  | 1558d |  | П1, К1 |
| 979 | 9.2.39.13 | **Тендер на номинацию Двери квартирные** |  | 65d | 2027-04-11 | 2027-06-15 |  |  |  |  | 1560d |  | П1, К1 |
| 980 | 9.2.39.13.1 | РД ВПР номинация Двери квартирные | milestone | 0d | 2027-04-11 | 2027-04-11 | 909SS-15d |  |  |  | 1558d | 0d |  |
| 981 | 9.2.39.13.2 | Подготовка ТЗ и ключевых условия на номинацию Двери квартирные |  | 7d | 2027-04-11 | 2027-04-18 | 909SS-15d, 980 |  |  |  | 1558d | 0d | П1, К1 |
| 982 | 9.2.39.13.3 | Подготовка оферты на номинацию Двери квартирные |  | 14d | 2027-04-18 | 2027-05-02 | 981 |  |  |  | 1558d | 0d | П1, К1 |
| 983 | 9.2.39.13.4 | Тендер номинация Двери квартирные |  | 30d | 2027-05-02 | 2027-06-01 | 982 |  |  |  | 1558d | 0d | П1, К1 |
| 984 | 9.2.39.13.5 | Выбор поставщика/подписание соглашения о намерениях номинация Двери квартирные |  | 14d | 2027-06-01 | 2027-06-15 | 983 |  |  |  | 1558d |  | П1, К1 |
| 985 | 9.2.40 | **Тендер Отделка мест общего пользования+WB** |  | 79d | 2027-05-26 | 2027-08-13 |  | 2022-12-12 | 2023-03-22 | 0d | 589d |  | П1, К1 |
| 986 | 9.2.40.1 | РД ВПР Отделка мест общего пользования+WB | milestone | 0d | 2027-05-26 | 2027-05-26 | 504 |  |  |  | 597d | 0d |  |
| 987 | 9.2.40.2 | Подготовка ТЗ отделка мест общего пользования+WB |  | 7d | 2027-05-26 | 2027-06-02 | 504, 986 |  |  |  | 597d | 0d | П1, К1 |
| 988 | 9.2.40.3 | Подготовка ВОР Отделка мест общего пользования+WB |  | 7d | 2027-06-02 | 2027-06-09 | 987 |  |  |  | 597d | 0d | П1, К1 |
| 989 | 9.2.40.4 | Подготовка оферты отделка мест общего пользования+WB |  | 3d | 2027-06-09 | 2027-06-12 | 988 |  |  |  | 597d | 0d | П1, К1 |
| 990 | 9.2.40.5 | Согласование тендерного пакета отделка мест общего пользования+WB |  | 3d | 2027-06-12 | 2027-06-15 | 988, 989 |  |  |  | 597d | 0d | П1, К1 |
| 991 | 9.2.40.6 | Тендер Отделка мест общего пользования+WB |  | 45d | 2027-06-15 | 2027-07-30 | 990 |  |  |  | 597d | 0d | П1, К1 |
| 992 | 9.2.40.7 | Заключение договора Отделка мест общего пользования+WB |  | 14d | 2027-07-30 | 2027-08-13 | 991 |  |  |  | 597d | 0d | П1, К1 |

| ID | WBS | Task | Type | Duration | Start | Finish | Predecessors | Total slack | Free slack | Text2 |
| --- | --- | --- | --- | --- | --- | --- | --- | --- | --- | --- |
| 993 | 9.2.41 | **Тендер Отделка Квартиры Чистовая** |  | 84d | 2027-05-26 | 2027-08-18 |  | 735d | 517d | П1, К1 |
| 994 | 9.2.41.1 | РД ВПР Отделка Квартиры Чистовая | milestone | 0d | 2027-05-26 | 2027-05-26 | 508, 469 | 743d | 0d |  |
| 995 | 9.2.41.2 | Подготовка ТЗ отделка Квартиры Чистовая |  | 7d | 2027-05-26 | 2027-06-02 | 508, 469, 994 | 743d | 0d | П1, К1 |
| 996 | 9.2.41.3 | Подготовка ВОР Отделка Квартиры Чистовая |  | 12d | 2027-06-02 | 2027-06-14 | 995 | 743d | 0d | П1, К1 |
| 997 | 9.2.41.4 | Подготовка оферты отделка Квартиры Чистовая |  | 3d | 2027-06-14 | 2027-06-17 | 996 | 743d | 0d | П1, К1 |
| 998 | 9.2.41.5 | Согласование тендерного пакета отделка Квартиры Чистовая |  | 3d | 2027-06-17 | 2027-06-20 | 996, 997 | 743d | 0d | П1, К1 |
| 999 | 9.2.41.6 | Тендер Отделка Квартиры Чистовая |  | 45d | 2027-06-20 | 2027-08-04 | 998 | 743d | 0d | П1, К1 |
| 1000 | 9.2.41.7 | Заключение договора Отделка Квартиры Чистовая |  | 14d | 2027-08-04 | 2027-08-18 | 999 | 743d |  | П1, К1 |
| 1001 | 9.2.42 | **Тендер на номинацию Благоустройство** |  | 65d | 2027-02-25 | 2027-05-01 |  | 1605d |  | П1, К1 |
| 1002 | 9.2.42.1 | **Тендер на номинацию Тротуарная плитка** |  | 65d | 2027-02-25 | 2027-05-01 |  | 1605d |  | П1, К1 |
| 1003 | 9.2.42.1.1 | РД ВПР номинация Тротуарная плитка | milestone | 0d | 2027-02-25 | 2027-02-25 | 1028SS-30d | 1603d | 0d |  |
| 1004 | 9.2.42.1.2 | Подготовка ТЗ и ключевых условия на номинацию Тротуарная плитка |  | 7d | 2027-02-25 | 2027-03-04 | 1028SS-30d, 1003 | 1603d | 0d | П1, К1 |
| 1005 | 9.2.42.1.3 | Подготовка оферты на номинацию Тротуарная плитка |  | 14d | 2027-03-04 | 2027-03-18 | 1004 | 1603d | 0d | П1, К1 |
| 1006 | 9.2.42.1.4 | Тендер номинация Тротуарная плитка |  | 30d | 2027-03-18 | 2027-04-17 | 1005 | 1603d | 0d | П1, К1 |
| 1007 | 9.2.42.1.5 | Выбор поставщика/подписание соглашения о намерениях номинация Тротуарная плитка |  | 14d | 2027-04-17 | 2027-05-01 | 1006 | 1603d |  | П1, К1 |
| 1008 | 9.2.42.2 | **Тендер на номинацию Резиновая крошка** |  | 65d | 2027-02-25 | 2027-05-01 |  | 1605d |  | П1, К1 |
| 1009 | 9.2.42.2.1 | РД ВПР номинация Резиновая крошка | milestone | 0d | 2027-02-25 | 2027-02-25 | 1004SS | 1603d | 0d |  |
| 1010 | 9.2.42.2.2 | Подготовка ТЗ и ключевых условия на номинацию Резиновая крошка |  | 7d | 2027-02-25 | 2027-03-04 | 1004SS, 1009 | 1603d | 0d | П1, К1 |
| 1011 | 9.2.42.2.3 | Подготовка оферты на номинацию Резиновая крошка |  | 14d | 2027-03-04 | 2027-03-18 | 1010 | 1603d | 0d | П1, К1 |
| 1012 | 9.2.42.2.4 | Тендер номинация Резиновая крошка |  | 30d | 2027-03-18 | 2027-04-17 | 1011 | 1603d | 0d | П1, К1 |
| 1013 | 9.2.42.2.5 | Выбор поставщика/подписание соглашения о намерениях номинация Резиновая крошка |  | 14d | 2027-04-17 | 2027-05-01 | 1012 | 1603d |  | П1, К1 |
| 1014 | 9.2.42.3 | **Тендер на номинацию Водоотводные лотки** |  | 65d | 2027-02-25 | 2027-05-01 |  | 1605d |  | П1, К1 |
| 1015 | 9.2.42.3.1 | РД ВПР номинация Водоотводные лотки | milestone | 0d | 2027-02-25 | 2027-02-25 | 1004SS | 1603d | 0d |  |
| 1016 | 9.2.42.3.2 | Подготовка ТЗ и ключевых условия на номинацию Водоотводные лотки |  | 7d | 2027-02-25 | 2027-03-04 | 1004SS, 1015 | 1603d | 0d | П1, К1 |
| 1017 | 9.2.42.3.3 | Подготовка оферты на номинацию Водоотводные лотки |  | 14d | 2027-03-04 | 2027-03-18 | 1016 | 1603d | 0d | П1, К1 |
| 1018 | 9.2.42.3.4 | Тендер номинация Водоотводные лотки |  | 30d | 2027-03-18 | 2027-04-17 | 1017 | 1603d | 0d | П1, К1 |
| 1019 | 9.2.42.3.5 | Выбор поставщика/подписание соглашения о намерениях номинация Водоотводные лотки |  | 14d | 2027-04-17 | 2027-05-01 | 1018 | 1603d |  | П1, К1 |

| ID | WBS | Task | Type | Duration | Start | Finish | Predecessors | Baseline start | Baseline finish | Baseline duration | Total slack | Free slack | Text2 |
| --- | --- | --- | --- | --- | --- | --- | --- | --- | --- | --- | --- | --- | --- |
| 1020 | 9.2.42.4 | **Тендер на номинацию Газонные решетки** |  | 65d | 2027-02-25 | 2027-05-01 |  |  |  |  | 1605d |  | П1, К1 |
| 1021 | 9.2.42.4.1 | РД ВПР номинация Газонные решетки | milestone | 0d | 2027-02-25 | 2027-02-25 | 1004SS |  |  |  | 1603d | 0d |  |
| 1022 | 9.2.42.4.2 | Подготовка ТЗ и ключевых условия на номинацию Газонные решетки |  | 7d | 2027-02-25 | 2027-03-04 | 1004SS, 1021 |  |  |  | 1603d | 0d | П1, К1 |
| 1023 | 9.2.42.4.3 | Подготовка оферты на номинацию Газонные решетки |  | 14d | 2027-03-04 | 2027-03-18 | 1022 |  |  |  | 1603d | 0d | П1, К1 |
| 1024 | 9.2.42.4.4 | Тендер номинация Газонные решетки |  | 30d | 2027-03-18 | 2027-04-17 | 1023 |  |  |  | 1603d | 0d | П1, К1 |
| 1025 | 9.2.42.4.5 | Выбор поставщика/подписание соглашения о намерениях номинация Газонные решетки |  | 14d | 2027-04-17 | 2027-05-01 | 1024 |  |  |  | 1603d |  | П1, К1 |
| 1026 | 9.2.43 | **Тендер на устройство твердых покрытий** |  | 61d | 2027-03-27 | 2027-05-27 |  | 2022-12-08 | 2023-02-14 | 58d | 907d |  | П1, К1 |
| 1027 | 9.2.43.1 | РД ВПР Устройство твердых покрытий | milestone | 0d | 2027-03-27 | 2027-03-27 | 499 |  |  |  | 905d | 0d |  |
| 1028 | 9.2.43.2 | Подготовка ТЗ на устройство твердых покрытий |  | 7d | 2027-03-27 | 2027-04-03 | 499, 1027 | 2022-12-08 | 2022-12-22 | 14d | 905d | 0d | П1, К1 |
| 1029 | 9.2.43.3 | Подготовка ВОР Устройство твердых покрытий |  | 4d | 2027-04-03 | 2027-04-07 | 1028 |  |  |  | 905d | 0d | П1, К1 |
| 1030 | 9.2.43.4 | Подготовка оферты на устройство твердых покрытий |  | 3d | 2027-04-07 | 2027-04-10 | 1029 |  |  |  | 905d | 0d | П1, К1 |
| 1031 | 9.2.43.5 | Согласование тендерного пакета на устройство твердых покрытий |  | 3d | 2027-04-10 | 2027-04-13 | 1029, 1030 |  |  |  | 905d | 0d | П1, К1 |
| 1032 | 9.2.43.6 | Тендер Устройство твердых покрытий |  | 30d | 2027-04-13 | 2027-05-13 | 1031 | 2022-12-22 | 2023-01-31 | 30d | 905d | 0d | П1, К1 |
| 1033 | 9.2.43.7 | Заключение договора Устройство твердых покрытий |  | 14d | 2027-05-13 | 2027-05-27 | 1032 | 2023-01-31 | 2023-02-14 | 14d | 905d | 0d | П1, К1 |
| 1034 | 9.2.44 | **Тендер на озеленение** |  | 61d | 2027-03-27 | 2027-05-27 |  | 2022-12-08 | 2023-02-14 | 58d | 1027d |  | П1, К1 |
| 1035 | 9.2.44.1 | РД ВПР Озеленение | milestone | 0d | 2027-03-27 | 2027-03-27 | 499 |  |  |  | 1025d | 0d |  |
| 1036 | 9.2.44.2 | Подготовка ТЗ на озеленение |  | 7d | 2027-03-27 | 2027-04-03 | 499, 1035 | 2022-12-08 | 2022-12-22 | 14d | 1025d | 0d | П1, К1 |
| 1037 | 9.2.44.3 | Подготовка ВОР Озеленение |  | 4d | 2027-04-03 | 2027-04-07 | 1036 |  |  |  | 1025d | 0d | П1, К1 |
| 1038 | 9.2.44.4 | Подготовка оферты на озеленение |  | 3d | 2027-04-07 | 2027-04-10 | 1037 |  |  |  | 1025d | 0d | П1, К1 |
| 1039 | 9.2.44.5 | Согласование тендерного пакета на озеленение |  | 3d | 2027-04-10 | 2027-04-13 | 1037, 1038 |  |  |  | 1025d | 0d | П1, К1 |
| 1040 | 9.2.44.6 | Тендер Озеленение |  | 30d | 2027-04-13 | 2027-05-13 | 1039 | 2022-12-22 | 2023-01-31 | 30d | 1025d | 0d | П1, К1 |
| 1041 | 9.2.44.7 | Заключение договора Озеленение |  | 14d | 2027-05-13 | 2027-05-27 | 1040 | 2023-01-31 | 2023-02-14 | 14d | 1025d | 0d | П1, К1 |
| 1042 | 9.2.45 | **Тендер Поставка и монтаж МАФ** |  | 61d | 2027-03-27 | 2027-05-27 |  | 2022-12-08 | 2023-02-14 | 58d | 1042d |  | П1, К1 |
| 1043 | 9.2.45.1 | РД ВПР Поставка и монтаж МАФ | milestone | 0d | 2027-03-27 | 2027-03-27 | 499 |  |  |  | 1040d | 0d |  |
| 1044 | 9.2.45.2 | Подготовка ТЗ Поставка и монтаж МАФ |  | 7d | 2027-03-27 | 2027-04-03 | 499, 1043 | 2022-12-08 | 2022-12-22 | 14d | 1040d | 0d | П1, К1 |
| 1045 | 9.2.45.3 | Подготовка ВОР Поставка и монтаж МАФ |  | 4d | 2027-04-03 | 2027-04-07 | 1044 |  |  |  | 1040d | 0d | П1, К1 |
| 1046 | 9.2.45.4 | Подготовка оферты Поставка и монтаж МАФ |  | 3d | 2027-04-07 | 2027-04-10 | 1045 |  |  |  | 1040d | 0d | П1, К1 |
| 1047 | 9.2.45.5 | Согласование тендерного пакета Поставка и монтаж МАФ |  | 3d | 2027-04-10 | 2027-04-13 | 1045, 1046 |  |  |  | 1040d | 0d | П1, К1 |
| 1048 | 9.2.45.6 | Тендер Поставка и монтаж МАФ |  | 30d | 2027-04-13 | 2027-05-13 | 1047 | 2022-12-22 | 2023-01-31 | 30d | 1040d | 0d | П1, К1 |
| 1049 | 9.2.45.7 | Заключение договора Поставка и монтаж МАФ |  | 14d | 2027-05-13 | 2027-05-27 | 1048 | 2023-01-31 | 2023-02-14 | 14d | 1040d | 0d | П1, К1 |

| ID | WBS | Task | Type | Duration | Start | Finish | Predecessors | Baseline start | Baseline finish | Baseline duration | Total slack | Free slack | Text2 |
| --- | --- | --- | --- | --- | --- | --- | --- | --- | --- | --- | --- | --- | --- |
| 1050 | 9.2.46 | **Тендер Освещение двора** |  | 61d | 2027-03-27 | 2027-05-27 |  | 2022-12-08 | 2023-02-14 | 58d | 1042d |  | П1, К1 |
| 1051 | 9.2.46.1 | РД ВПР Освещение двора | milestone | 0d | 2027-03-27 | 2027-03-27 | 499, 1028SS |  |  |  | 1040d | 0d |  |
| 1052 | 9.2.46.2 | Подготовка ТЗ Освещение двора |  | 7d | 2027-03-27 | 2027-04-03 | 499, 1028SS, 1051 | 2022-12-08 | 2022-12-22 | 14d | 1040d | 0d | П1, К1 |
| 1053 | 9.2.46.3 | Подготовка ВОР Освещение двора |  | 4d | 2027-04-03 | 2027-04-07 | 1052 |  |  |  | 1040d | 0d | П1, К1 |
| 1054 | 9.2.46.4 | Подготовка оферты Освещение двора |  | 3d | 2027-04-07 | 2027-04-10 | 1053 |  |  |  | 1040d | 0d | П1, К1 |
| 1055 | 9.2.46.5 | Согласование тендерного пакета Освещение двора |  | 3d | 2027-04-10 | 2027-04-13 | 1053, 1054 |  |  |  | 1040d | 0d | П1, К1 |
| 1056 | 9.2.46.6 | Тендер Освещение двора |  | 30d | 2027-04-13 | 2027-05-13 | 1055 | 2022-12-22 | 2023-01-31 | 30d | 1040d | 0d | П1, К1 |
| 1057 | 9.2.46.7 | Заключение договора Освещение двора |  | 14d | 2027-05-13 | 2027-05-27 | 1056 | 2023-01-31 | 2023-02-14 | 14d | 1040d | 0d | П1, К1 |
| 1058 | 9.2.47 | **Тендер номинация Освещение двора** |  | 65d | 2027-03-13 | 2027-05-17 |  |  |  |  | 1589d |  | П1, К1 |
| 1059 | 9.2.47.1 | РД ВПР номинация Освещение двора | milestone | 0d | 2027-03-13 | 2027-03-13 | 1004SS, 1052SS-14d |  |  |  | 1587d | 0d |  |
| 1060 | 9.2.47.2 | Подготовка ТЗ и ключевых условия номинация Освещение двора |  | 7d | 2027-03-13 | 2027-03-20 | 1004SS, 1052SS-14d, 1059 |  |  |  | 1587d | 0d | П1, К1 |
| 1061 | 9.2.47.3 | Подготовка оферты номинация Освещение двора |  | 14d | 2027-03-20 | 2027-04-03 | 1060 |  |  |  | 1587d | 0d | П1, К1 |
| 1062 | 9.2.47.4 | Тендер номинация Освещение двора |  | 30d | 2027-04-03 | 2027-05-03 | 1061 |  |  |  | 1587d | 0d | П1, К1 |
| 1063 | 9.2.47.5 | Выбор поставщика/подписание соглашения о намерениях номинация Освещение двора |  | 14d | 2027-05-03 | 2027-05-17 | 1062 |  |  |  | 1587d |  | П1, К1 |
| 1064 | 9.2.48 | **Тендер Ограждение территории** |  | 61d | 2027-03-27 | 2027-05-27 |  | 2022-12-08 | 2023-02-14 | 58d | 1579d |  | П1, К1 |
| 1065 | 9.2.48.1 | РД ВПР Ограждение территории | milestone | 0d | 2027-03-27 | 2027-03-27 | 499, 1028SS |  |  |  | 1577d | 0d |  |
| 1066 | 9.2.48.2 | Подготовка ТЗ Ограждение территории |  | 7d | 2027-03-27 | 2027-04-03 | 499, 1028SS, 1065 | 2022-12-08 | 2022-12-22 | 14d | 1577d | 0d | П1, К1 |
| 1067 | 9.2.48.3 | Подготовка ВОР Ограждение территории |  | 4d | 2027-04-03 | 2027-04-07 | 1066 |  |  |  | 1577d | 0d | П1, К1 |
| 1068 | 9.2.48.4 | Подготовка оферты Ограждение территории |  | 3d | 2027-04-07 | 2027-04-10 | 1067 |  |  |  | 1577d | 0d | П1, К1 |
| 1069 | 9.2.48.5 | Согласование тендерного пакета Ограждение территории |  | 3d | 2027-04-10 | 2027-04-13 | 1067, 1068 |  |  |  | 1577d | 0d | П1, К1 |
| 1070 | 9.2.48.6 | Тендер Ограждение территории |  | 30d | 2027-04-13 | 2027-05-13 | 1069 | 2022-12-22 | 2023-01-31 | 30d | 1577d | 0d | П1, К1 |
| 1071 | 9.2.48.7 | Заключение договора Ограждение территории |  | 14d | 2027-05-13 | 2027-05-27 | 1070 | 2023-01-31 | 2023-02-14 | 14d | 1577d | 0d | П1, К1 |
| 1072 | 10 | **СМР** |  | 2778d | 2023-01-10 | 2030-09-16 |  |  |  |  | 383d |  | П1, К1, ОП |
| 1073 | 10.1 | **Офис продаж** |  | 172d | 2028-01-30 | 2028-07-20 |  |  |  |  | 1163d |  | ОП |
| 1074 | 10.1.1 | **Общестроительные работы департамент Девелопмента** |  | 158d | 2028-01-30 | 2028-07-06 |  |  |  |  | 1171d |  | ОП |
| 1075 | 10.1.1.1 | Подготовка территории под строительство, в том числе ограждение |  | 15d | 2028-01-30 | 2028-02-14 | 216, 368 |  |  |  | 1169d | 0d | ОП |
| 1076 | 10.1.1.2 | Монтаж наружных инженерных сетей, в том числе под ФП |  | 15d | 2028-02-14 | 2028-02-29 | 1075 |  |  |  | 1169d | 8d | ОП |
| 1077 | 10.1.1.3 | Монтаж фундамента офиса продаж |  | 15d | 2028-03-08 | 2028-03-23 | 1076, 586 |  |  |  | 1161d | 0d | ОП |
| 1078 | 10.1.1.4 | Монтаж каркаса офиса продаж |  | 30d | 2028-03-23 | 2028-04-22 | 1077, 586 |  |  |  | 1161d | 0d | ОП |
| 1079 | 10.1.1.5 | Монтаж кровли и стеновых панелей |  | 30d | 2028-04-22 | 2028-05-22 | 1078, 586 |  |  |  | 1220d |  | ОП |
| 1080 | 10.1.1.6 | Монтаж фасадов |  | 30d | 2028-04-22 | 2028-05-22 | 1078 |  |  |  | 1161d | 0d | ОП |
| 1081 | 10.1.1.7 | Монтаж остекления |  | 30d | 2028-04-22 | 2028-05-22 | 1080SS |  |  |  | 1161d | 0d | ОП |
| 1082 | 10.1.1.8 | Монтаж внутренних инженерных систем, в том числе ароматерапии |  | 45d | 2028-05-22 | 2028-07-06 | 1080, 1081, 600 |  |  |  | 1175d |  | ОП |
| 1083 | 10.1.1.9 | Благоустройство офиса продаж |  | 45d | 2028-04-22 | 2028-06-06 | 1078 |  |  |  | 1205d |  | ОП |
| 1084 | 10.1.1.10 | Чистовая отделка |  | 45d | 2028-05-22 | 2028-07-06 | 1080, 1081, 600 |  |  |  | 1161d | 0d | ОП |
| 1085 | 10.1.1.11 | Чистовая отделка завершена | milestone | 0d | 2028-07-06 | 2028-07-06 | 1084 |  |  |  | 1161d | 0d | ОП |
| 1086 | 10.1.2 | Открытие ОП | milestone | 0d | 2028-07-20 | 2028-07-20 | 1085FS+14d |  |  |  | 1161d | 0d | ОП |

| ID | WBS | Task | Type | Duration | Start | Finish | Predecessors | Total slack | Free slack | Text2 |
| --- | --- | --- | --- | --- | --- | --- | --- | --- | --- | --- |
| 1087 | 10.2 | **Разрешительная документация** |  | 1805d | 2023-01-10 | 2028-01-09 |  | 1356d |  | П1, К1 |
| 1088 | 10.2.1 | **Подготовительный период** |  | 1712d | 2023-01-10 | 2027-10-04 |  | 1449d |  | П1, К1 |
| 1089 | 10.2.1.1 | Открытие ордера на снос |  | 7d | 2027-02-04 | 2027-02-11 | 302 | 247d | 0d | П1, К1 |
| 1090 | 10.2.1.2 | Оформление порубочного билета |  | 7d | 2027-02-11 | 2027-02-18 | 1089 | 247d | 164d | П1, К1 |
| 1091 | 10.2.1.3 | Расторжение договоров с арендаторами |  | 60d | 2023-01-10 | 2023-03-11 |  | 3035d | 1588d | П1, К1 |
| 1092 | 10.2.1.4 | Получение справок об отключении зданий от инжерных сетей |  | 14d | 2023-01-10 | 2023-01-24 |  | 3145d |  | П1, К1 |
| 1093 | 10.2.1.5 | Снятие с кадастрового учета строений |  | 30d | 2027-09-04 | 2027-10-04 | 1094 | 1447d |  | П1, К1 |
| 1094 | 10.2.1.6 | Закрытие ордера ОАТИ на снос |  | 14d | 2027-08-21 | 2027-09-04 | 1110 | 1447d | 0d | П1, К1 |
| 1095 | 10.2.2 | **Основной период** |  | 1805d | 2023-01-10 | 2028-01-09 |  | 1356d |  | П1, К1 |
| 1096 | 10.2.2.1 | Согласование СГП в ОПС |  | 14d | 2027-07-09 | 2027-07-23 | 389, 345 | 1506d | 0d |  |
| 1097 | 10.2.2.2 | Подготовка акта выноса осей |  | 14d | 2027-06-01 | 2027-06-15 | 390 | 796d | 220d | П1, К1 |
| 1098 | 10.2.2.3 | Заключение договора с лицом, осуществляющим строительство | milestone | 0d | 2023-01-10 | 2023-01-10 |  | 3159d |  |  |
| 1099 | 10.2.2.4 | Извещение о начале строительства |  | 14d | 2027-09-28 | 2027-10-12 | 360 | 1439d | 2d | П1, К1 |
| 1100 | 10.2.2.5 | Оформление ордера на основной период |  | 14d | 2027-07-23 | 2027-08-06 | 1096 | 1506d |  |  |
| 1101 | 10.2.2.6 | Открытие разрешения на перемещения грунта |  | 14d | 2027-01-21 | 2027-02-04 | 300 | 1689d |  | П1, К1 |
| 1102 | 10.2.2.7 | Переоформление ордера на основной период |  | 4d | 2027-12-15 | 2027-12-19 | 360, 213 | 1371d |  | П1, К1 |
| 1103 | 10.2.2.8 | Закрытие разрешения на перемещения грунта |  | 14d | 2027-12-22 | 2028-01-09 | 1129, 1131 | 1354d |  |  |
| 1104 | 10.2.2.9 | Закрытие ордера на основной период |  | 14d | 2027-12-22 | 2028-01-09 | 1129, 1131 | 1354d |  |  |
| 1105 | 10.3 | **Подготовительные работы** |  | 1896d | 2023-01-10 | 2028-04-09 |  | 1265d |  | П1, К1 |
| 1106 | 10.3.1 | **Подготовка территории строительства** |  | 50d | 2027-08-01 | 2027-09-20 | 608 | 71d |  | П1, К1 |
| 1107 | 10.3.1.1 | Подготовка территории |  | 30d | 2027-08-14 | 2027-09-13 | 360FS-45d | 55d | 0d | П1, К1 |
| 1108 | 10.3.1.2 | Дендрология |  | 15d | 2027-08-01 | 2027-08-16 | 1090 | 83d | 5d | П1, К1 |
| 1109 | 10.3.1.3 | **Снос зданий и сооружений** |  | 50d | 2027-08-01 | 2027-09-20 |  | 1449d |  | П1, К1 |
| 1110 | 10.3.1.3.1 | Демонтаж наземной части здания |  | 20d | 2027-08-01 | 2027-08-21 | 1091, 301 | 1447d | 0d | П1, К1 |
| 1111 | 10.3.1.3.2 | Демонтаж подземной части |  | 20d | 2027-08-01 | 2027-08-21 | 1091 | 1447d | 0d | П1, К1 |
| 1112 | 10.3.1.3.3 | Подача уведомлений в КГСН |  | 30d | 2027-08-21 | 2027-09-20 | 1111 | 1461d |  | П1, К1 |

| ID | WBS | Task | Duration | Start | Finish | Predecessors | Total slack | Free slack | Text2 |
| --- | --- | --- | --- | --- | --- | --- | --- | --- | --- |
| 1113 | 10.3.2 | **Организация строительной площадки** | 1896d | 2023-01-10 | 2028-04-09 |  | 1265d |  | П1, К1 |
| 1114 | 10.3.2.1 | Монтаж ограждения строительной площадки | 30d | 2027-09-04 | 2027-10-04 | 1107SS+21d | 1447d | 15d | П1, К1 |
| 1115 | 10.3.2.2 | Организация штаба строительства заказчика | 30d | 2027-08-21 | 2027-09-20 | 1111 | 1447d | 0d | П1, К1 |
| 1116 | 10.3.2.3 | Организация КПП со СКУД | 14d | 2027-09-20 | 2027-10-04 | 1115 | 1447d |  | П1, К1 |
| 1117 | 10.3.2.4 | Монтаж временных дорог и площадок | 45d | 2027-09-04 | 2027-10-19 | 1107SS+21d | 1417d | 0d | П1, К1 |
| 1118 | 10.3.2.5 | **Временные инженерные сети** | 60d | 2027-09-04 | 2027-11-03 |  | 1419d |  | П1, К1 |
| 1119 | 10.3.2.5.1 | Подключение к сетям водоснабжения | 30d | 2027-09-04 | 2027-10-04 | 1117SS | 1447d | 30d | П1, К1 |
| 1120 | 10.3.2.5.2 | Подключение к сетям водоотведения | 30d | 2027-09-04 | 2027-10-04 | 1117SS | 1447d | 30d | П1, К1 |
| 1121 | 10.3.2.5.3 | Подключение к сетям электроснабжения (механизация строительства) | 60d | 2027-09-04 | 2027-11-03 | 1117SS | 1417d | 0d | П1, К1 |
| 1122 | 10.3.2.5.4 | Временные слаботочные системы | 30d | 2027-09-04 | 2027-10-04 | 1117SS | 1447d |  | П1, К1 |
| 1123 | 10.3.2.6 | Монтаж башенного крана | 6d | 2023-01-10 | 2023-01-16 |  | 3153d |  | П1, К1 |
| 1124 | 10.3.2.7 | Водопонижение и водоотведение | 150d | 2027-11-07 | 2028-04-09 | 1129SS | 1263d |  | П1, К1 |
| 1125 | 10.4 | **СМР 1-й Этап** | 963d | 2027-09-28 | 2030-05-30 | 360 | 43d |  | П1, К1 |
| 1126 | 10.4.1 | **Паркинг 1** | 546d | 2027-11-07 | 2029-05-14 |  | 3d |  | П1 |
| 1127 | 10.4.1.1 | **П1. Нулевой цикл** | 226d | 2027-11-07 | 2028-06-24 |  | 3d |  | П1 |
| 1128 | 10.4.1.1.1 | **П1. Земляные работы** | 45d | 2027-11-07 | 2027-12-22 |  | 3d |  | П1 |
| 1129 | 10.4.1.1.1.1 | П1. По договору Земляные работы | 45d | 2027-11-07 | 2027-12-22 | 658, 1107, 1108 | 3d | 0d | П1 |
| 1130 | 10.4.1.1.2 | **П1. Ограждения котлована** | 21d | 2027-11-22 | 2027-12-13 |  | 887d |  | П1 |
| 1131 | 10.4.1.1.2.1 | П1. По договору Ограждения котлована | 21d | 2027-11-22 | 2027-12-13 | 624, 1129SS+15d | 885d | 0d | П1 |
| 1132 | 10.4.1.1.3 | **Свайное основание** | 60d | 2027-12-08 | 2028-02-10 |  | 3d | 0d | П1 |
| 1133 | 10.4.1.1.3.1 | К2. По договору Свайное основание БНС (при наличии) | 60d | 2027-12-08 | 2028-02-10 | 638, 1129FS-14d, 404 | 3d | 0d | П1 |
| 1134 | 10.4.1.1.3.2 | П1. По договору Свайное основание Забивные (при наличии) | 60d | 2027-12-08 | 2028-02-10 | 638, 1129FS-14d, 404 | 276d | 0d |  |
| 1135 | 10.4.1.1.4 | **Фундаменты** | 141d | 2027-12-17 | 2028-05-10 |  | 54d |  | П1 |
| 1136 | 10.4.1.1.4.1 | К1. По договору Фундаменты Корпус | 45d | 2027-12-17 | 2028-02-04 | 399, 672 | 66d | 0d | П1 |
| 1137 | 10.4.1.1.4.2 | К2. По договору Фундаменты Корпус | 60d | 2028-02-10 | 2028-04-10 | 1133, 399, 672 | 3d | 0d |  |
| 1138 | 10.4.1.1.4.3 | П1. По договору Фундаменты Паркинг | 90d | 2028-02-10 | 2028-05-10 | 399, 672, 1134 | 276d | 0d | П1 |

Notes:
- 1129: комментарий: ориентировочно принимаем 45дн для 1 подземного этажа, 100дн для 2х подземных этажей
- 1131: комментарий: необходимо отдельно уточнить тип ограждения котлована, зависимость от Земляных работ и прогнозируемую длительность
- 1133: комментарий: норма выработки 1 БНС/сдень на буровую установку
- 1134: комментарий: норма выработки 10 забивных свай/день на буровую установку
- 1136: комментарий: ориентировочно принимаем 45дн для зданий до 45эт, 60дн для зданий выше 45эт
- 1137: комментарий: ориентировочно принимаем 45дн для зданий до 45эт, 60дн для зданий выше 45эт
- 1138: комментарий: ориентировочно принимаем 45дн для зданий до 45эт, 60дн для зданий выше 45эт

| ID | WBS | Task | Duration | Start | Finish | Predecessors | Total slack | Free slack | Text2 |
| --- | --- | --- | --- | --- | --- | --- | --- | --- | --- |
| 1139 | 10.4.1.1.5 | **Монолитные конструкции ниже отм 0,000** | 141d | 2028-02-04 | 2028-06-24 |  | 69d | 0d | П1 |
| 1140 | 10.4.1.1.5.1 | К1. По договору Монолитные конструкции ниже отм 0,000 (1 подземный этаж) Корпус | 45d | 2028-02-04 | 2028-03-20 | 1136, 408, 665, 672 | 66d |  | П1 |
| 1141 | 10.4.1.1.5.2 | К2. По договору Монолитные конструкции ниже отм 0,000 (1 подземный этаж) Корпус | 45d | 2028-04-10 | 2028-05-25 | 408, 665, 672, 1137 | 3d | 0d |  |
| 1142 | 10.4.1.1.5.3 | П1. По договору Монолитные конструкции ниже отм 0,000 (1 подземный этаж) Паркинг | 45d | 2028-05-10 | 2028-06-24 | 408, 665, 672, 1138 | 276d | 0d | П1 |
| 1143 | 10.4.1.2 | **П1. Общестроительные работы** | 120d | 2028-06-24 | 2028-10-22 |  | 248d |  | П1 |
| 1144 | 10.4.1.2.1 | **П1. Конструкции металлические** | 120d | 2028-06-24 | 2028-10-22 |  | 1069d |  | П1 |
| 1145 | 10.4.1.2.1.1 | П1. По договору Конструкции металлические | 120d | 2028-06-24 | 2028-10-22 | 428, 1147SS | 1067d |  | П1 |
| 1146 | 10.4.1.2.2 | **П1. Кладка наружных и внутренних стен и перегородок** | 90d | 2028-06-24 | 2028-09-22 |  | 248d |  | П1 |
| 1147 | 10.4.1.2.2.1 | П1. По договору Кладка наружных и внутренних стен и перегородок | 90d | 2028-06-24 | 2028-09-22 | 1140, 672FS+60d, 1142, 1141 | 276d | 0d | П1 |
| 1148 | 10.4.1.2.3 | **П1. Устройство эксплуатируемой кровли** | 45d | 2028-06-24 | 2028-08-08 |  | 1144d |  | П1 |
| 1149 | 10.4.1.2.3.1 | П1. Устройство гидроизоляции | 45d | 2028-06-24 | 2028-08-08 | 1140, 1142, 1141 | 1142d | 0d | П1 |
| 1150 | 10.4.1.3 | **П1. Внутренние инженерные системы паркинга** | 279d | 2028-08-04 | 2029-05-14 |  | 347d | 344d | П1 |
| 1151 | 10.4.1.3.1 | **П1. Внутренние сантехнические системы** | 200d | 2028-10-22 | 2029-05-14 | 852, 1259SS+90d, 1420SS+90d | 347d |  | П1 |
| 1152 | 10.4.1.3.1.1 | **П1. Хозяйственно-питьевой водопровод** | 200d | 2028-10-22 | 2029-05-14 |  | 347d |  | П1 |
| 1153 | 10.4.1.3.1.1.1 | П1. По договору Хозяйственно-питьевой водопровод | 200d | 2028-10-22 | 2029-05-14 |  | 345d |  | П1 |
| 1154 | 10.4.1.3.1.2 | **П1. Внутренний противопожарный водопровод** | 200d | 2028-10-22 | 2029-05-14 |  | 347d |  | П1 |
| 1155 | 10.4.1.3.1.2.1 | П1. По договору Внутренний противопожарный водопровод | 200d | 2028-10-22 | 2029-05-14 |  | 345d |  | П1 |
| 1156 | 10.4.1.3.1.3 | **П1. Внутренняя канализация** | 200d | 2028-10-22 | 2029-05-14 |  | 347d |  | П1 |
| 1157 | 10.4.1.3.1.3.1 | П1. По договору Внутренняя канализация | 200d | 2028-10-22 | 2029-05-14 |  | 345d |  | П1 |
| 1158 | 10.4.1.3.1.4 | **П1. Внутренний водосток** | 200d | 2028-10-22 | 2029-05-14 |  | 347d |  | П1 |
| 1159 | 10.4.1.3.1.4.1 | П1. По договору Внутренний водосток | 200d | 2028-10-22 | 2029-05-14 |  | 345d |  | П1 |
| 1160 | 10.4.1.3.1.5 | **П1. Пожаротушение** | 200d | 2028-10-22 | 2029-05-14 |  | 347d |  | П1 |
| 1161 | 10.4.1.3.1.5.1 | П1. По договору Пожаротушение | 200d | 2028-10-22 | 2029-05-14 |  | 345d |  | П1 |
| 1162 | 10.4.1.3.2 | **П1. ЦТП, ИТП с УУТЭ** | 120d | 2028-08-04 | 2028-12-02 |  | 506d |  | П1 |
| 1163 | 10.4.1.3.2.1 | П1. По договору ЦТП, ИТП с УУТЭ | 120d | 2028-08-04 | 2028-12-02 | 818, 1220SS+20d | 504d | 0d | П1 |

Notes:
- 1140: комментарий: ориентировочно принимаем 45дн для 1 подземного этажа, 90дн для 2х подземных этажей
- 1141: комментарий: ориентировочно принимаем 45дн для 1 подземного этажа, 90дн для 2х подземных этажей
- 1142: комментарий: ориентировочно принимаем 45дн для 1 подземного этажа, 90дн для 2х подземных этажей

| ID | WBS | Task | Duration | Start | Finish | Predecessors | Total slack | Free slack | Text2 |
| --- | --- | --- | --- | --- | --- | --- | --- | --- | --- |
| 1164 | 10.4.1.3.3 | **П1. Отопление** | 200d | 2028-10-22 | 2029-05-14 | 852, 1259SS+90d, 1420SS+90d | 347d |  | П1 |
| 1165 | 10.4.1.3.3.1 | П1. По договору Отопление | 200d | 2028-10-22 | 2029-05-14 |  | 345d | 0d | П1 |
| 1166 | 10.4.1.3.4 | **П1. Вентиляция, дымоудаление** | 200d | 2028-10-22 | 2029-05-14 | 852, 1259SS+90d, 1420SS+90d | 347d |  | П1 |
| 1167 | 10.4.1.3.4.1 | П1. По договору Вентиляция, дымоудаление | 200d | 2028-10-22 | 2029-05-14 |  | 345d |  | П1 |
| 1168 | 10.4.1.3.5 | **П1. Кондиционирование** | 200d | 2028-10-22 | 2029-05-14 | 852, 1259SS+90d, 1420SS+90d | 347d |  | П1 |
| 1169 | 10.4.1.3.5.1 | П1. По договору Кондиционирование | 200d | 2028-10-22 | 2029-05-14 |  | 345d |  | П1 |
| 1170 | 10.4.1.3.6 | **П1. Внутренние слаботочные системы** | 200d | 2028-10-22 | 2029-05-14 | 852, 1259SS+90d, 1420SS+90d | 347d |  | П1 |
| 1171 | 10.4.1.3.6.1 | **П1. Автоматизированные системы управления** | 200d | 2028-10-22 | 2029-05-14 |  | 347d |  | П1 |
| 1172 | 10.4.1.3.6.1.1 | **П1. АСУД (комплекс)** | 200d | 2028-10-22 | 2029-05-14 |  | 347d |  | П1 |
| 1173 | 10.4.1.3.6.1.1.1 | П1. По договору АСУД (комплекс) | 200d | 2028-10-22 | 2029-05-14 |  | 345d |  | П1 |
| 1174 | 10.4.1.3.6.1.2 | **П1. АСКУЭ (Автоматизированная система контроля и учета электроэнергии)** | 200d | 2028-10-22 | 2029-05-14 |  | 347d |  | П1 |
| 1175 | 10.4.1.3.6.1.2.1 | П1. По договору АСКУЭ (Автоматизированная система контроля и учета электроэнергии) | 200d | 2028-10-22 | 2029-05-14 |  | 345d |  | П1 |
| 1176 | 10.4.1.3.6.1.3 | **П1. АСКУВТ (Автоматизированная система контроля и учета воды)** | 200d | 2028-10-22 | 2029-05-14 |  | 347d |  | П1 |
| 1177 | 10.4.1.3.6.1.3.1 | П1. По договору АСКУВТ (Автоматизированная система контроля и учета воды) | 200d | 2028-10-22 | 2029-05-14 |  | 345d |  | П1 |
| 1178 | 10.4.1.3.6.1.4 | **П1. СМИК (Система маниторинга инженерной конструкции)** | 200d | 2028-10-22 | 2029-05-14 |  | 347d |  | П1 |
| 1179 | 10.4.1.3.6.1.4.1 | П1. По договору СМИК (Система маниторинга инженерной конструкции) | 200d | 2028-10-22 | 2029-05-14 |  | 345d |  | П1 |
| 1180 | 10.4.1.3.6.1.5 | **П1. Система контроля окиси углерода (загазованности)** | 200d | 2028-10-22 | 2029-05-14 |  | 347d |  | П1 |
| 1181 | 10.4.1.3.6.1.5.1 | П1. По договору Система контроля окиси углерода (загазованности) | 200d | 2028-10-22 | 2029-05-14 |  | 345d |  | П1 |
| 1182 | 10.4.1.3.6.2 | **П1. Системы противопожарной защиты** | 200d | 2028-10-22 | 2029-05-14 |  | 347d |  | П1 |
| 1183 | 10.4.1.3.6.2.1 | **П1. АПС (Система автоматической пожарной сигнализации)** | 200d | 2028-10-22 | 2029-05-14 |  | 347d |  | П1 |
| 1184 | 10.4.1.3.6.2.1.1 | П1. По договору АПС (Система автоматической пожарной сигнализации) | 200d | 2028-10-22 | 2029-05-14 |  | 345d |  | П1 |
| 1185 | 10.4.1.3.6.2.2 | **П1. АПТ (Система автоматизации автоматического (водяного, порошкового, газового) пожаротушения)** | 200d | 2028-10-22 | 2029-05-14 |  | 347d |  | П1 |
| 1186 | 10.4.1.3.6.2.2.1 | П1. По договору АПТ (Система автоматизации автоматического (водяного, порошкового, газового) пожаротушения) | 200d | 2028-10-22 | 2029-05-14 |  | 345d |  | П1 |
| 1187 | 10.4.1.3.6.2.3 | **П1. АПЗ (Система автоматизации противодымной защиты)** | 200d | 2028-10-22 | 2029-05-14 |  | 347d |  | П1 |
| 1188 | 10.4.1.3.6.2.3.1 | П1. По договору АПЗ (Система автоматизации противодымной защиты) | 200d | 2028-10-22 | 2029-05-14 |  | 345d |  | П1 |

| ID | WBS | Task | Duration | Start | Finish | Total slack | Text2 |
| --- | --- | --- | --- | --- | --- | --- | --- |
| 1189 | 10.4.1.3.6.2.4 | **П1. СОУЭ** | 200d | 2028-10-22 | 2029-05-14 | 347d | П1 |
| 1190 | 10.4.1.3.6.2.4.1 | П1. По договору СОУЭ | 200d | 2028-10-22 | 2029-05-14 | 345d | П1 |
| 1191 | 10.4.1.3.6.2.5 | **П1. СКК (Система кабельных конструкций)** | 200d | 2028-10-22 | 2029-05-14 | 347d | П1 |
| 1192 | 10.4.1.3.6.2.5.1 | П1. По договору СКК (Система кабельных конструкций) | 200d | 2028-10-22 | 2029-05-14 | 345d | П1 |
| 1193 | 10.4.1.3.6.3 | **П1. Системы обеспечения безопасности** | 200d | 2028-10-22 | 2029-05-14 | 347d | П1 |
| 1194 | 10.4.1.3.6.3.1 | **П1. СОС (Система охранной сигнализации)** | 200d | 2028-10-22 | 2029-05-14 | 347d | П1 |
| 1195 | 10.4.1.3.6.3.1.1 | П1. По договору СОС (Система охранной сигнализации) | 200d | 2028-10-22 | 2029-05-14 | 345d | П1 |
| 1196 | 10.4.1.3.6.3.2 | **П1. СОТ, СВН, СОВН (Система видеонаблюдения)** | 200d | 2028-10-22 | 2029-05-14 | 347d | П1 |
| 1197 | 10.4.1.3.6.3.2.1 | П1. По договору СОТ, СВН, СОВН (Система видеонаблюдения) | 200d | 2028-10-22 | 2029-05-14 | 345d | П1 |
| 1198 | 10.4.1.3.6.3.3 | **П1. СКУД** | 200d | 2028-10-22 | 2029-05-14 | 347d | П1 |
| 1199 | 10.4.1.3.6.3.3.1 | П1. По договору СКУД | 200d | 2028-10-22 | 2029-05-14 | 345d | П1 |
| 1200 | 10.4.1.3.6.3.4 | **П1. ОЗДС** | 200d | 2028-10-22 | 2029-05-14 | 347d | П1 |
| 1201 | 10.4.1.3.6.3.4.1 | П1. По договору ОЗДС | 200d | 2028-10-22 | 2029-05-14 | 345d | П1 |
| 1202 | 10.4.1.3.6.3.5 | **П1. Домофон (видеодомофон)** | 200d | 2028-10-22 | 2029-05-14 | 347d | П1 |
| 1203 | 10.4.1.3.6.3.5.1 | П1. По договору Домофон (видеодомофон) | 200d | 2028-10-22 | 2029-05-14 | 345d | П1 |
| 1204 | 10.4.1.3.6.3.6 | **П1. СПД (Система передачи данных)** | 200d | 2028-10-22 | 2029-05-14 | 347d | П1 |
| 1205 | 10.4.1.3.6.3.6.1 | П1. По договору СПД (Система передачи данных) | 200d | 2028-10-22 | 2029-05-14 | 345d | П1 |
| 1206 | 10.4.1.3.6.4 | **П1. Сети связи** | 200d | 2028-10-22 | 2029-05-14 | 347d | П1 |
| 1207 | 10.4.1.3.6.4.1 | **П1. ТВ, радио, интернет, телефон** | 200d | 2028-10-22 | 2029-05-14 | 347d | П1 |
| 1208 | 10.4.1.3.6.4.1.1 | П1. По договору ТВ, радио, интернет, телефон | 200d | 2028-10-22 | 2029-05-14 | 345d | П1 |
| 1209 | 10.4.1.3.6.4.2 | **П1. СКС структурированная кабельная сеть** | 200d | 2028-10-22 | 2029-05-14 | 347d | П1 |
| 1210 | 10.4.1.3.6.4.2.1 | П1. По договору СКС структурированная кабельная сеть | 200d | 2028-10-22 | 2029-05-14 | 345d | П1 |
| 1211 | 10.4.1.3.6.4.3 | **П1. СДС, СЭС, ССИ система связи** | 200d | 2028-10-22 | 2029-05-14 | 347d | П1 |
| 1212 | 10.4.1.3.6.4.3.1 | П1. По договору СДС, СЭС, ССИ система связи | 200d | 2028-10-22 | 2029-05-14 | 345d | П1 |

| ID | WBS | Task | Type | Duration | Start | Finish | Predecessors | Total slack | Free slack | Text2 |
| --- | --- | --- | --- | --- | --- | --- | --- | --- | --- | --- |
| 1213 | 10.4.1.3.7 | **П1. Электроснабжение и электроосвещение** |  | 200d | 2028-10-22 | 2029-05-14 | 852, 1259SS+90d, 1420SS+90d | 347d |  | П1 |
| 1214 | 10.4.1.3.7.1 | П1. По договору Электроснабжение и электроосвещение |  | 200d | 2028-10-22 | 2029-05-14 |  | 345d |  | П1 |
| 1215 | 10.4.1.3.8 | П1. Пуск тепла в паркинге | milestone | 0d | 2029-05-14 | 2029-05-14 | 1163, 1165, 1631 | 345d | 75d | П1 |
| 1216 | 10.4.1.4 | **П1. Отделочные работы автостоянки** |  | 219d | 2028-07-15 | 2029-02-23 |  | 506d | 0d | П1 |
| 1217 | 10.4.1.4.1 | **П1. Автостоянка (в т.ч. Рампа)** |  | 150d | 2028-09-22 | 2029-02-23 |  | 949d |  | П1 |
| 1218 | 10.4.1.4.1.1 | П1. По договору Автостоянка (в т.ч. Рампа) |  | 150d | 2028-09-22 | 2029-02-23 | 889, 1147, 897 | 947d |  | П1 |
| 1219 | 10.4.1.4.2 | **П1. Технические помещения** |  | 90d | 2028-07-15 | 2028-10-13 |  | 506d |  | П1 |
| 1220 | 10.4.1.4.2.1 | П1. По договору Технические помещения |  | 90d | 2028-07-15 | 2028-10-13 | 889, 1147SS+21d | 504d | 0d | П1 |
| 1221 | 10.4.1.4.3 | **П1. Кладовые** |  | 90d | 2028-09-22 | 2028-12-21 |  | 1009d |  | П1 |
| 1222 | 10.4.1.4.3.1 | П1. По договору Кладовые |  | 90d | 2028-09-22 | 2028-12-21 | 992, 1147 | 1007d |  | П1 |
| 1223 | 10.4.1.4.4 | **П1. МОП подземного уровня** |  | 120d | 2028-09-22 | 2029-01-24 |  | 979d |  | П1 |
| 1224 | 10.4.1.4.4.1 | П1. По договору МОП подземного уровня |  | 120d | 2028-09-22 | 2029-01-24 | 992, 1147 | 977d |  | П1 |
| 1225 | 10.4.2 | **Корпус 1 ( 26этажей )** |  | 845d | 2027-09-28 | 2030-02-01 |  | 179d |  | К1 |
| 1226 | 10.4.2.1 | **К1. Надземная часть здания** |  | 746d | 2027-09-28 | 2029-10-21 |  | 217d |  | К1 |
| 1227 | 10.4.2.1.1 | **К1. Монтаж монолитных конструкций выше отм. 0.000** |  | 195d | 2028-05-25 | 2028-12-06 |  | 167d | 0d | К1 |
| 1228 | 10.4.2.1.1.1 | К1. 1 этаж Монолит |  | 30d | 2028-05-25 | 2028-06-24 | 412, 665, 672, 1140, 1141 | 167d | 0d | К1 |
| 1229 | 10.4.2.1.1.2 | К1. 2 этаж Монолит |  | 6d | 2028-06-24 | 2028-06-30 | 1228 | 167d | 0d |  |
| 1230 | 10.4.2.1.1.3 | К1. 3 этаж Монолит |  | 6d | 2028-06-30 | 2028-07-06 | 1229 | 167d | 0d |  |
| 1231 | 10.4.2.1.1.4 | К1. 4 этаж Монолит |  | 6d | 2028-07-06 | 2028-07-12 | 1230 | 167d | 0d |  |
| 1232 | 10.4.2.1.1.5 | К1. 5 этаж Монолит |  | 6d | 2028-07-12 | 2028-07-18 | 1231 | 167d | 0d |  |
| 1233 | 10.4.2.1.1.6 | К1. 6 этаж Монолит |  | 6d | 2028-07-18 | 2028-07-24 | 1232 | 167d | 0d |  |
| 1234 | 10.4.2.1.1.7 | К1. 7 этаж Монолит |  | 6d | 2028-07-24 | 2028-07-30 | 1233 | 173d | 0d |  |
| 1235 | 10.4.2.1.1.8 | К1. 8 этаж Монолит |  | 6d | 2028-07-30 | 2028-08-05 | 1234 | 173d | 0d |  |
| 1236 | 10.4.2.1.1.9 | К1. 9 этаж Монолит |  | 6d | 2028-08-05 | 2028-08-11 | 1235 | 173d | 0d |  |
| 1237 | 10.4.2.1.1.10 | К1. 10 этаж Монолит |  | 6d | 2028-08-11 | 2028-08-17 | 1236 | 173d | 0d |  |
| 1238 | 10.4.2.1.1.11 | К1. 11 этаж Монолит |  | 6d | 2028-08-17 | 2028-08-23 | 1237 | 173d | 0d |  |
| 1239 | 10.4.2.1.1.12 | К1. 12 этаж Монолит |  | 6d | 2028-08-23 | 2028-08-29 | 1238 | 173d | 0d |  |
| 1240 | 10.4.2.1.1.13 | К1. 13 этаж Монолит |  | 6d | 2028-08-29 | 2028-09-04 | 1239 | 173d | 0d |  |
| 1241 | 10.4.2.1.1.14 | К1. 14 этаж Монолит |  | 6d | 2028-09-04 | 2028-09-10 | 1240 | 173d | 0d |  |
| 1242 | 10.4.2.1.1.15 | К1. 15 этаж Монолит |  | 6d | 2028-09-10 | 2028-09-16 | 1241 | 173d | 0d |  |
| 1243 | 10.4.2.1.1.16 | К1. 16 этаж Монолит |  | 6d | 2028-09-16 | 2028-09-22 | 1242 | 352d | 0d |  |
| 1244 | 10.4.2.1.1.17 | К1. 17 этаж Монолит |  | 6d | 2028-09-22 | 2028-09-28 | 1243 | 352d | 0d |  |
| 1245 | 10.4.2.1.1.18 | К1. 18 этаж Монолит |  | 6d | 2028-09-28 | 2028-10-04 | 1244 | 352d | 0d |  |
| 1246 | 10.4.2.1.1.19 | К1. 19 этаж Монолит |  | 6d | 2028-10-04 | 2028-10-10 | 1245 | 352d | 0d |  |
| 1247 | 10.4.2.1.1.20 | К1. 20 этаж Монолит |  | 6d | 2028-10-10 | 2028-10-16 | 1246 | 352d | 0d |  |
| 1248 | 10.4.2.1.1.21 | К1. 21 этаж Монолит |  | 6d | 2028-10-16 | 2028-10-22 | 1247 | 352d | 0d |  |
| 1249 | 10.4.2.1.1.22 | К1. 22 этаж Монолит |  | 6d | 2028-10-22 | 2028-10-28 | 1248 | 352d | 0d |  |
| 1250 | 10.4.2.1.1.23 | К1. 23 этаж Монолит |  | 6d | 2028-10-28 | 2028-11-03 | 1249 | 352d | 0d |  |
| 1251 | 10.4.2.1.1.24 | К1. 24 этаж Монолит |  | 6d | 2028-11-03 | 2028-11-09 | 1250 | 352d | 0d |  |
| 1252 | 10.4.2.1.1.25 | К1. 25 этаж Монолит |  | 6d | 2028-11-09 | 2028-11-15 | 1251 | 352d | 0d |  |
| 1253 | 10.4.2.1.1.26 | К1. 26 этаж Монолит |  | 6d | 2028-11-15 | 2028-11-21 | 1252 | 352d | 0d |  |
| 1254 | 10.4.2.1.1.27 | К1. Кровля/Парапет Монолит |  | 15d | 2028-11-21 | 2028-12-06 | 1253 | 352d |  |  |

Notes:
- 1227: комментарий: стандартный регламент дилтельности монолитных работ: 1этаж=30дн, типовой этаж=6дн; парапет=15дн

| ID | WBS | Task | Type | Duration | Start | Finish | Predecessors | Total slack | Free slack | Text2 |
| --- | --- | --- | --- | --- | --- | --- | --- | --- | --- | --- |
| 1255 | 10.4.2.1.2 | **К1. Монтаж конструкций металлических** |  | 60d | 2029-01-29 | 2029-03-30 |  | 422d |  | К1 |
| 1256 | 10.4.2.1.2.1 | К1. По договору Монтаж конструкций металлических |  | 60d | 2029-01-29 | 2029-03-30 | 428, 1258 | 422d |  | К1 |
| 1257 | 10.4.2.1.3 | **К1. Кладка наружных стен и перегородок** |  | 260d | 2028-07-24 | 2029-04-14 |  | 167d |  | К1 |
| 1258 | 10.4.2.1.3.1 | К1. По договору Кладка наружных стен |  | 185d | 2028-07-24 | 2029-01-29 | 665, 1233 | 217d | 0d | К1 |
| 1259 | 10.4.2.1.3.2 | К1. По договору Кладка перегородок |  | 260d | 2028-07-24 | 2029-04-14 | 665, 1233 | 167d | 0d | К1 |
| 1260 | 10.4.2.1.4 | **К1. МОКАП фасада** |  | 60d | 2027-09-28 | 2027-11-27 |  | 248d |  |  |
| 1261 | 10.4.2.1.4.1 | К1. По договору МОКАП фасада |  | 60d | 2027-09-28 | 2027-11-27 | 767 | 248d | 0d |  |
| 1262 | 10.4.2.1.5 | **К1. Монтаж фасадов** |  | 390d | 2028-09-22 | 2029-10-21 |  | 217d |  | К1 |
| 1263 | 10.4.2.1.5.1 | К1. По договору Монтаж фасадов |  | 390d | 2028-09-22 | 2029-10-21 | 775, 1265SS+30d | 217d | 184d | К1 |
| 1264 | 10.4.2.1.6 | **К1. Монтаж светопрозрачных конструкций** |  | 185d | 2028-08-23 | 2029-02-28 |  | 217d |  | К1 |
| 1265 | 10.4.2.1.6.1 | К1. По договору Монтаж светопрозрачных конструкций ПВХ |  | 185d | 2028-08-23 | 2029-02-28 | 789, 1258SS+30d | 217d | 0d | К1 |
| 1266 | 10.4.2.1.7 | **К1. Устройство кровли** |  | 60d | 2028-12-06 | 2029-02-08 |  | 472d |  | К1 |
| 1267 | 10.4.2.1.7.1 | **К1. Устройство кровли неэксплуатируемой** |  | 60d | 2028-12-06 | 2029-02-08 |  | 472d |  | К1 |
| 1268 | 10.4.2.1.7.1.1 | К1. По договору Устройство кровли неэксплуатируемой |  | 60d | 2028-12-06 | 2029-02-08 | 715, 1227 | 472d | 174d | К1 |
| 1269 | 10.4.2.1.7.2 | **К1. Устройство кровли эксплуатируемой** |  | 60d | 2028-12-06 | 2029-02-08 |  | 472d |  | К1 |
| 1270 | 10.4.2.1.7.2.1 | К1. По договору Устройство кровли эксплуатируемой |  | 60d | 2028-12-06 | 2029-02-08 | 715, 424, 1227 | 472d | 174d | К1 |
| 1271 | 10.4.2.1.8 | К1. Закрыт тепловой контур по корпусу | milestone | 0d | 2029-02-28 | 2029-02-28 | 1265 | 268d | 89d | К1 |
| 1272 | 10.4.2.1.9 | К1. Закрыт ВРЕМЕННЫЙ тепловой контур по корпусу (при необходимости) |  | 45d | 2028-12-11 | 2029-01-29 | 1258FF | 298d | 119d | К1 |
| 1273 | 10.4.2.2 | **К1. Внутренние инженерные системы** |  | 410d | 2028-09-16 | 2029-11-04 |  | 173d | 170d | К1 |
| 1274 | 10.4.2.2.1 | **К1. Вертикальный транспорт (лифты,подъемное оборудование)** |  | 150d | 2028-12-06 | 2029-05-09 |  | 352d |  | К1 |
| 1275 | 10.4.2.2.1.1 | К1. По договору Вертикальный транспорт (лифты,подъемное оборудование) |  | 150d | 2028-12-06 | 2029-05-09 | 722, 1227 | 352d | 174d | К1 |
| 1276 | 10.4.2.2.2 | **К1. Внутренние сантехнические системы** |  | 410d | 2028-09-16 | 2029-11-04 |  | 173d |  | К1 |
| 1277 | 10.4.2.2.2.1 | **К1. Хозяйственно-питьевой водопровод** |  | 410d | 2028-09-16 | 2029-11-04 |  | 173d | 170d | К1 |
| 1278 | 10.4.2.2.2.1.1 | К1. В соответствии с договорным графиком Хозяйственно-питьевой водопровод |  | 410d | 2028-09-16 | 2029-11-04 | 860, 1242 | 173d |  | К1 |

Notes:
- 1258: комментарий: начало после завершение 6 этажа монолита, завершение через 1,5мес после завершения монолита последнего этажа
- 1259: комментарий: начало после завершение 6 этажа монолита, завершение через 4мес после завершения монолита последнего этажа
- 1261: комментарий: опциональная задача, длительность регламентированная
- 1263: комментарий: начало через 30дней после старта монтажа окон ПВХ, завершение через 330дней после завершения монолита последнего этажа
- 1265: комментарий: старт через 30дн после старта кладки наружных стен, завершение через 30 дней после кладки наружных стен
- 1272: комментарий: временный тепловой контур возводят при необходимости - в случае если постоянный тепловой контур не получается возвести к 15 октября требуемого года для выполнения отделочных работ)
- 1275: комментарий: регламентированная привязка и длительность
- 1276: комментарий: старт после монолита 15этажа (или последнего, если здание ниже); завершение через 12мес после монолита последнего этажа

| ID | WBS | Task | Duration | Start | Finish | Predecessors | Total slack | Free slack | Text2 |
| --- | --- | --- | --- | --- | --- | --- | --- | --- | --- |
| 1279 | 10.4.2.2.2.2 | **К1. Внутренний противопожарный водопровод** | 410d | 2028-09-16 | 2029-11-04 |  | 173d |  | К1 |
| 1280 | 10.4.2.2.2.2.1 | К1. В соответствии с договорным графиком Внутренний противопожарный водопровод | 410d | 2028-09-16 | 2029-11-04 | 860, 1242 | 173d |  | К1 |
| 1281 | 10.4.2.2.2.3 | **К1. Внутренняя канализация** | 410d | 2028-09-16 | 2029-11-04 |  | 173d |  | К1 |
| 1282 | 10.4.2.2.2.3.1 | К1. В соответствии с договорным графиком Внутренняя канализация | 410d | 2028-09-16 | 2029-11-04 | 860, 1242 | 173d |  | К1 |
| 1283 | 10.4.2.2.2.4 | **К1. Внутренний водосток** | 410d | 2028-09-16 | 2029-11-04 |  | 173d |  | К1 |
| 1284 | 10.4.2.2.2.4.1 | К1. В соответствии с договорным графиком Внутренний водосток | 410d | 2028-09-16 | 2029-11-04 | 860, 1242 | 173d |  | К1 |
| 1285 | 10.4.2.2.2.5 | **К1. Пожаротушение** | 410d | 2028-09-16 | 2029-11-04 |  | 173d |  | К1 |
| 1286 | 10.4.2.2.2.5.1 | К1. В соответствии с договорным графиком Пожаротушение | 410d | 2028-09-16 | 2029-11-04 | 860, 1242 | 173d |  | К1 |
| 1287 | 10.4.2.2.3 | **К1. Отопление** | 410d | 2028-09-16 | 2029-11-04 |  | 173d | 170d | К1 |
| 1288 | 10.4.2.2.3.1 | К1. По договору Отопление (контур для пуска тепла) | 250d | 2028-09-16 | 2029-05-28 | 860, 1242 | 179d | 0d | К1 |
| 1289 | 10.4.2.2.3.2 | К1. По договору Отопление (все система полностью) | 410d | 2028-09-16 | 2029-11-04 | 860, 1242 | 173d |  |  |
| 1290 | 10.4.2.2.4 | **К1. Вентиляция, дымоудаление** | 410d | 2028-09-16 | 2029-11-04 |  | 173d | 170d | К1 |
| 1291 | 10.4.2.2.4.1 | К1. По договору Вентиляция, дымоудаление | 410d | 2028-09-16 | 2029-11-04 | 860, 1242 | 173d |  | К1 |
| 1292 | 10.4.2.2.5 | **К1. Кондиционирование** | 410d | 2028-09-16 | 2029-11-04 |  | 173d |  | К1 |
| 1293 | 10.4.2.2.5.1 | К1. По договору Кондиционирование | 410d | 2028-09-16 | 2029-11-04 | 860, 1242 | 173d |  | К1 |
| 1294 | 10.4.2.2.6 | **К1. Внутренние слаботочные системы** | 410d | 2028-09-16 | 2029-11-04 |  | 173d |  | К1 |
| 1295 | 10.4.2.2.6.1 | **К1. Автоматизированные системы управления** | 410d | 2028-09-16 | 2029-11-04 |  | 173d |  | К1 |
| 1296 | 10.4.2.2.6.1.1 | **К1. АСУД (комплекс)** | 410d | 2028-09-16 | 2029-11-04 |  | 173d |  | К1 |
| 1297 | 10.4.2.2.6.1.1.1 | К1. В соответствии с договорным графиком АСУД (комплекс) | 410d | 2028-09-16 | 2029-11-04 | 868, 1242 | 173d |  | К1 |
| 1298 | 10.4.2.2.6.1.2 | **К1. АСКУЭ (Автоматизированная система контроля и учета электроэнергии)** | 410d | 2028-09-16 | 2029-11-04 |  | 173d |  | К1 |
| 1299 | 10.4.2.2.6.1.2.1 | К1. В соответствии с договорным графиком АСКУЭ (Автоматизированная система контроля и учета электроэнергии) | 410d | 2028-09-16 | 2029-11-04 | 868, 1242 | 173d |  | К1 |
| 1300 | 10.4.2.2.6.1.3 | **К1. АСКУВТ (Автоматизированная система контроля и учета воды)** | 410d | 2028-09-16 | 2029-11-04 |  | 173d |  | К1 |
| 1301 | 10.4.2.2.6.1.3.1 | К1. В соответствии с договорным графиком АСКУВТ (Автоматизированная система контроля и учета воды) | 410d | 2028-09-16 | 2029-11-04 | 868, 1242 | 173d |  | К1 |
| 1302 | 10.4.2.2.6.1.4 | **К1. СМИК (Система маниторинга инженерной конструкции)** | 410d | 2028-09-16 | 2029-11-04 |  | 173d |  | К1 |
| 1303 | 10.4.2.2.6.1.4.1 | К1. В соответствии с договорным графиком СМИК (Система маниторинга инженерной конструкции) | 410d | 2028-09-16 | 2029-11-04 | 868, 1242 | 173d |  | К1 |

Notes:
- 1287: комментарий: старт после монолита 15этажа (или последнего, если здание ниже); завершение через 12мес после монолита последнего этажа
- 1290: комментарий: старт после монолита 15этажа (или последнего, если здание ниже); завершение через 12мес после монолита последнего этажа
- 1292: комментарий: старт после монолита 15этажа (или последнего, если здание ниже); завершение через 12мес после монолита последнего этажа
- 1294: комментарий: старт после монолита 15этажа (или последнего, если здание ниже); завершение через 12мес после монолита последнего этажа

| ID | WBS | Task | Duration | Start | Finish | Predecessors | Total slack | Text2 |
| --- | --- | --- | --- | --- | --- | --- | --- | --- |
| 1304 | 10.4.2.2.6.1.5 | **К1. Система контроля окиси углерода (загазованности)** | 410d | 2028-09-16 | 2029-11-04 |  | 173d | К1 |
| 1305 | 10.4.2.2.6.1.5.1 | К1. В соответствии с договорным графиком Система контроля окиси углерода (загазованности) | 410d | 2028-09-16 | 2029-11-04 | 868, 1242 | 173d | К1 |
| 1306 | 10.4.2.2.6.2 | **К1. Системы противопожарной защиты** | 410d | 2028-09-16 | 2029-11-04 |  | 173d | К1 |
| 1307 | 10.4.2.2.6.2.1 | **К1. АПС (Система автоматической пожарной сигнализации)** | 410d | 2028-09-16 | 2029-11-04 |  | 173d | К1 |
| 1308 | 10.4.2.2.6.2.1.1 | К1. В соответствии с договорным графиком АПС (Система автоматической пожарной сигнализации) | 410d | 2028-09-16 | 2029-11-04 | 868, 1242 | 173d | К1 |
| 1309 | 10.4.2.2.6.2.2 | **К1. АПТ (Система автоматизации автоматического (водяного, порошкового, газового) пожаротушения)** | 410d | 2028-09-16 | 2029-11-04 |  | 173d | К1 |
| 1310 | 10.4.2.2.6.2.2.1 | К1. В соответствии с договорным графиком АПТ (Система автоматизации автоматического (водяного, порошкового, газового) пожаротушения) | 410d | 2028-09-16 | 2029-11-04 | 868, 1242 | 173d | К1 |
| 1311 | 10.4.2.2.6.2.3 | **К1. АПЗ (Система автоматизации противодымной защиты)** | 410d | 2028-09-16 | 2029-11-04 |  | 173d | К1 |
| 1312 | 10.4.2.2.6.2.3.1 | К1. В соответствии с договорным графиком АПЗ (Система автоматизации противодымной защиты) | 410d | 2028-09-16 | 2029-11-04 | 868, 1242 | 173d | К1 |
| 1313 | 10.4.2.2.6.2.4 | **К1. СОУЭ** | 410d | 2028-09-16 | 2029-11-04 |  | 173d | К1 |
| 1314 | 10.4.2.2.6.2.4.1 | К1. В соответствии с договорным графиком СОУЭ | 410d | 2028-09-16 | 2029-11-04 | 868, 1242 | 173d | К1 |
| 1315 | 10.4.2.2.6.2.5 | **К1. СКК (Система кабельных конструкций)** | 410d | 2028-09-16 | 2029-11-04 |  | 173d | К1 |
| 1316 | 10.4.2.2.6.2.5.1 | К1. В соответствии с договорным графиком СКК (Система кабельных конструкций) | 410d | 2028-09-16 | 2029-11-04 | 868, 1242 | 173d | К1 |
| 1317 | 10.4.2.2.6.3 | **К1. Системы обеспечения безопасности** | 410d | 2028-09-16 | 2029-11-04 |  | 173d | К1 |
| 1318 | 10.4.2.2.6.3.1 | **К1. СОС (Система охранной сигнализации)** | 410d | 2028-09-16 | 2029-11-04 |  | 173d | К1 |
| 1319 | 10.4.2.2.6.3.1.1 | К1. В соответствии с договорным графиком СОС (Система охранной сигнализации) | 410d | 2028-09-16 | 2029-11-04 | 868, 1242 | 173d | К1 |
| 1320 | 10.4.2.2.6.3.2 | **К1. СОТ, СВН, СОВН (Система видеонаблюдения)** | 410d | 2028-09-16 | 2029-11-04 |  | 173d | К1 |
| 1321 | 10.4.2.2.6.3.2.1 | К1. В соответствии с договорным графиком СОТ, СВН, СОВН (Система видеонаблюдения) | 410d | 2028-09-16 | 2029-11-04 | 868, 1242 | 173d | К1 |
| 1322 | 10.4.2.2.6.3.3 | **К1. СКУД** | 410d | 2028-09-16 | 2029-11-04 |  | 173d | К1 |
| 1323 | 10.4.2.2.6.3.3.1 | К1. В соответствии с договорным графиком СКУД | 410d | 2028-09-16 | 2029-11-04 | 868, 1242 | 173d | К1 |
| 1324 | 10.4.2.2.6.3.4 | **К1. ОЗДС** | 410d | 2028-09-16 | 2029-11-04 |  | 173d | К1 |
| 1325 | 10.4.2.2.6.3.4.1 | К1. В соответствии с договорным графиком ОЗДС | 410d | 2028-09-16 | 2029-11-04 | 868, 1242 | 173d | К1 |
| 1326 | 10.4.2.2.6.3.5 | **К1. Домофон (видеодомофон)** | 410d | 2028-09-16 | 2029-11-04 |  | 173d | К1 |
| 1327 | 10.4.2.2.6.3.5.1 | К1. В соответствии с договорным графиком Домофон (видеодомофон) | 410d | 2028-09-16 | 2029-11-04 | 868, 1242 | 173d | К1 |

| ID | WBS | Task | Type | Duration | Start | Finish | Predecessors | Total slack | Free slack | Text2 |
| --- | --- | --- | --- | --- | --- | --- | --- | --- | --- | --- |
| 1328 | 10.4.2.2.6.3.6 | **К1. СПД (Система передачи данных)** |  | 410d | 2028-09-16 | 2029-11-04 |  | 173d |  | К1 |
| 1329 | 10.4.2.2.6.3.6.1 | К1. В соответствии с договорным графиком СПД (Система передачи данных) |  | 410d | 2028-09-16 | 2029-11-04 | 868, 1242 | 173d |  | К1 |
| 1330 | 10.4.2.2.6.4 | **К1. Сети связи** |  | 410d | 2028-09-16 | 2029-11-04 |  | 173d |  | К1 |
| 1331 | 10.4.2.2.6.4.1 | **К1. ТВ, радио, интернет, телефон** |  | 410d | 2028-09-16 | 2029-11-04 |  | 173d |  | К1 |
| 1332 | 10.4.2.2.6.4.1.1 | К1. В соответствии с договорным графиком ТВ, радио, интернет, телефон |  | 410d | 2028-09-16 | 2029-11-04 | 868, 1242 | 173d |  | К1 |
| 1333 | 10.4.2.2.6.4.2 | **К1. СКС структурированная кабельная сеть** |  | 410d | 2028-09-16 | 2029-11-04 |  | 173d |  | К1 |
| 1334 | 10.4.2.2.6.4.2.1 | К1. В соответствии с договорным графиком СКС структурированная кабельная сеть |  | 410d | 2028-09-16 | 2029-11-04 | 868, 1242 | 173d |  | К1 |
| 1335 | 10.4.2.2.6.4.3 | **К1. СДС, СЭС, ССИ система связи** |  | 410d | 2028-09-16 | 2029-11-04 |  | 173d |  | К1 |
| 1336 | 10.4.2.2.6.4.3.1 | К1. В соответствии с договорным графиком СДС, СЭС, ССИ система связи |  | 410d | 2028-09-16 | 2029-11-04 | 868, 1242 | 173d |  | К1 |
| 1337 | 10.4.2.2.7 | **К1. Электроснабжение и электроосвещение** |  | 410d | 2028-09-16 | 2029-11-04 |  | 173d |  | К1 |
| 1338 | 10.4.2.2.7.1 | К1. По договору Электроснабжение и электроосвещение |  | 410d | 2028-09-16 | 2029-11-04 | 868, 1242 | 173d |  | К1 |
| 1339 | 10.4.2.2.8 | К1. Пуск тепла корпус | milestone | 0d | 2029-06-12 | 2029-06-12 | 1271FS+15d, 1288FS+15d, 1272FS+15d | 179d | 0d | К1 |
| 1340 | 10.4.2.3 | **К1. Отделочные работы** |  | 459d | 2028-10-22 | 2030-02-01 |  | 167d | 118d | К1 |
| 1341 | 10.4.2.3.1 | **К1. Отделочные работы МОП и вестибюли** |  | 410d | 2028-10-22 | 2029-12-10 |  | 167d | 157d | К1 |
| 1342 | 10.4.2.3.1.1 | **К1. Вестибюль** |  | 410d | 2028-10-22 | 2029-12-10 |  | 167d |  | К1 |
| 1343 | 10.4.2.3.1.1.1 | К1. По договору Вестибюль |  | 410d | 2028-10-22 | 2029-12-10 | 992, 1259SS+90d | 167d |  | К1 |
| 1344 | 10.4.2.3.1.2 | **К1. Лифтовые и квартирные холлы** |  | 410d | 2028-10-22 | 2029-12-10 |  | 167d |  | К1 |
| 1345 | 10.4.2.3.1.2.1 | К1. По договору Лифтовые и квартирные холлы |  | 410d | 2028-10-22 | 2029-12-10 | 992, 1259SS+90d | 167d |  | К1 |
| 1346 | 10.4.2.3.1.3 | **К1. Л/клетки и тамбур-шлюзы** |  | 410d | 2028-10-22 | 2029-12-10 |  | 167d |  | К1 |
| 1347 | 10.4.2.3.1.3.1 | К1. По договору Л/клетки и тамбур-шлюзы |  | 410d | 2028-10-22 | 2029-12-10 | 992, 1259SS+90d | 167d |  | К1 |
| 1348 | 10.4.2.3.1.4 | **К1. Коммерческие помещения** |  | 410d | 2028-10-22 | 2029-12-10 |  | 167d |  | К1 |
| 1349 | 10.4.2.3.1.4.1 | К1. По договору Коммерческие помещения |  | 410d | 2028-10-22 | 2029-12-10 | 992, 1259SS+90d | 167d |  | К1 |
| 1350 | 10.4.2.3.2 | **К1. Отделочные работы Квартиры** |  | 410d | 2028-10-22 | 2029-12-10 |  | 228d | 157d | К1 |
| 1351 | 10.4.2.3.2.1 | **К1. Подготовка под чистовую отделку квартир (при наличии)** |  | 320d | 2028-10-22 | 2029-09-11 |  | 228d |  | К1 |
| 1352 | 10.4.2.3.2.1.1 | К1. По договору Подготовка под чистовую отделку квартир |  | 320d | 2028-10-22 | 2029-09-11 | 992, 1259SS+90d | 228d | 0d | К1 |

Notes:
- 1337: комментарий: старт после монолита 15этажа (или последнего, если здание ниже); завершение через 11мес после монолита последнего этажа
- 1340: комментарий: старт отделки надземной части через 90дн после старта кладки (при условии прогноза пуска тепла до 30 октября того же года, иначе после пуска тепла или 01 апреля следующего года - ранее событые), завершение через 12мес после монолита последнего этажа

| ID | WBS | Task | Duration | Start | Finish | Predecessors | Total slack | Free slack | Text2 |
| --- | --- | --- | --- | --- | --- | --- | --- | --- | --- |
| 1353 | 10.4.2.3.2.2 | **К1. Чистовая отделка квартир (при наличии)** | 320d | 2029-01-24 | 2029-12-10 |  | 228d |  | К1 |
| 1354 | 10.4.2.3.2.2.1 | К1. По договору Чистовая отделка квартир | 320d | 2029-01-24 | 2029-12-10 | 1352SS+90d, 993 | 228d | 167d | К1 |
| 1355 | 10.4.2.3.3 | **К1. Отделочные работы, раздел ТХ (в этом разделе планируются работы только по соц.объектам)** | 230d | 2029-06-12 | 2030-02-01 |  | 179d |  | К1 |
| 1356 | 10.4.2.3.3.1 | К1. По договору Отделочные работы, раздел ТХ (в этом разделе планируются работы только по соц.объектам) | 230d | 2029-06-12 | 2030-02-01 | 1339, 1147FS+90d | 179d |  | К1 |
| 1357 | 10.4.3 | **Корпус 2 (55 этажей )** | 963d | 2027-09-28 | 2030-05-30 |  | 61d |  | К1 |
| 1358 | 10.4.3.1 | **К2. Надземная часть здания** | 930d | 2027-09-28 | 2030-04-27 |  | 33d |  | К1 |
| 1359 | 10.4.3.1.1 | **К2. Монтаж монолитных конструкций выше отм. 0.000** | 369d | 2028-05-25 | 2029-06-02 |  | 3d | 0d | К1 |
| 1360 | 10.4.3.1.1.1 | К2. 1 этаж Монолит | 30d | 2028-05-25 | 2028-06-24 | 412, 665, 672, 1140, 1141 | 3d | 0d | К1 |
| 1361 | 10.4.3.1.1.2 | К2. 2 этаж Монолит | 6d | 2028-06-24 | 2028-06-30 | 1360 | 3d | 0d |  |
| 1362 | 10.4.3.1.1.3 | К2. 3 этаж Монолит | 6d | 2028-06-30 | 2028-07-06 | 1361 | 3d | 0d |  |
| 1363 | 10.4.3.1.1.4 | К2. 4 этаж Монолит | 6d | 2028-07-06 | 2028-07-12 | 1362 | 3d | 0d |  |
| 1364 | 10.4.3.1.1.5 | К2. 5 этаж Монолит | 6d | 2028-07-12 | 2028-07-18 | 1363 | 3d | 0d |  |
| 1365 | 10.4.3.1.1.6 | К2. 6 этаж Монолит | 6d | 2028-07-18 | 2028-07-24 | 1364 | 3d | 0d |  |
| 1366 | 10.4.3.1.1.7 | К2. 7 этаж Монолит | 6d | 2028-07-24 | 2028-07-30 | 1365 | 3d | 0d |  |
| 1367 | 10.4.3.1.1.8 | К2. 8 этаж Монолит | 6d | 2028-07-30 | 2028-08-05 | 1366 | 3d | 0d |  |
| 1368 | 10.4.3.1.1.9 | К2. 9 этаж Монолит | 6d | 2028-08-05 | 2028-08-11 | 1367 | 3d | 0d |  |
| 1369 | 10.4.3.1.1.10 | К2. 10 этаж Монолит | 6d | 2028-08-11 | 2028-08-17 | 1368 | 3d | 0d |  |
| 1370 | 10.4.3.1.1.11 | К2. 11 этаж Монолит | 6d | 2028-08-17 | 2028-08-23 | 1369 | 3d | 0d |  |
| 1371 | 10.4.3.1.1.12 | К2. 12 этаж Монолит | 6d | 2028-08-23 | 2028-08-29 | 1370 | 3d | 0d |  |
| 1372 | 10.4.3.1.1.13 | К2. 13 этаж Монолит | 6d | 2028-08-29 | 2028-09-04 | 1371 | 3d | 0d |  |
| 1373 | 10.4.3.1.1.14 | К2. 14 этаж Монолит | 6d | 2028-09-04 | 2028-09-10 | 1372 | 3d | 0d |  |
| 1374 | 10.4.3.1.1.15 | К2. 15 этаж Монолит | 6d | 2028-09-10 | 2028-09-16 | 1373 | 3d | 0d |  |
| 1375 | 10.4.3.1.1.16 | К2. 16 этаж Монолит | 6d | 2028-09-16 | 2028-09-22 | 1374 | 176d | 0d |  |
| 1376 | 10.4.3.1.1.17 | К2. 17 этаж Монолит | 6d | 2028-09-22 | 2028-09-28 | 1375 | 176d | 0d |  |
| 1377 | 10.4.3.1.1.18 | К2. 18 этаж Монолит | 6d | 2028-09-28 | 2028-10-04 | 1376 | 176d | 0d |  |
| 1378 | 10.4.3.1.1.19 | К2. 19 этаж Монолит | 6d | 2028-10-04 | 2028-10-10 | 1377 | 176d | 0d |  |
| 1379 | 10.4.3.1.1.20 | К2. 20 этаж Монолит | 6d | 2028-10-10 | 2028-10-16 | 1378 | 176d | 0d |  |
| 1380 | 10.4.3.1.1.21 | К2. 21 этаж Монолит | 6d | 2028-10-16 | 2028-10-22 | 1379 | 176d | 0d |  |
| 1381 | 10.4.3.1.1.22 | К2. 22 этаж Монолит | 6d | 2028-10-22 | 2028-10-28 | 1380 | 176d | 0d |  |
| 1382 | 10.4.3.1.1.23 | К2. 23 этаж Монолит | 6d | 2028-10-28 | 2028-11-03 | 1381 | 176d | 0d |  |
| 1383 | 10.4.3.1.1.24 | К2. 24 этаж Монолит | 6d | 2028-11-03 | 2028-11-09 | 1382 | 176d | 0d |  |
| 1384 | 10.4.3.1.1.25 | К2. 25 этаж Монолит | 6d | 2028-11-09 | 2028-11-15 | 1383 | 176d | 0d |  |
| 1385 | 10.4.3.1.1.26 | К2. 26 этаж Монолит | 6d | 2028-11-15 | 2028-11-21 | 1384 | 176d | 0d |  |
| 1386 | 10.4.3.1.1.27 | К2. 27 этаж Монолит | 6d | 2028-11-21 | 2028-11-27 | 1385 | 176d | 0d |  |
| 1387 | 11.4.3.1.1.27 | К2. 28 этаж Монолит | 6d | 2028-11-27 | 2028-12-03 | 1386 | 178d | 0d |  |
| 1388 | 11.4.3.1.1.27 | К2. 29 этаж Монолит | 6d | 2028-12-03 | 2028-12-09 | 1387 | 178d | 0d |  |
| 1389 | 11.4.3.1.1.27 | К2. 30 этаж Монолит | 6d | 2028-12-09 | 2028-12-15 | 1388 | 178d | 0d |  |
| 1390 | 11.4.3.1.1.27 | К2. 31 этаж Монолит | 6d | 2028-12-15 | 2028-12-21 | 1389 | 178d | 0d |  |
| 1391 | 11.4.3.1.1.27 | К2. 32 этаж Монолит | 6d | 2028-12-21 | 2028-12-27 | 1390 | 178d | 0d |  |
| 1392 | 11.4.3.1.1.27 | К2. 33 этаж Монолит | 6d | 2028-12-27 | 2029-01-06 | 1391 | 178d | 0d |  |
| 1393 | 11.4.3.1.1.27 | К2. 34 этаж Монолит | 6d | 2029-01-06 | 2029-01-12 | 1392 | 178d | 0d |  |
| 1394 | 11.4.3.1.1.27 | К2. 35 этаж Монолит | 6d | 2029-01-12 | 2029-01-18 | 1393 | 178d | 0d |  |
| 1395 | 11.4.3.1.1.27 | К2. 36 этаж Монолит | 6d | 2029-01-18 | 2029-01-24 | 1394 | 178d | 0d |  |
| 1396 | 11.4.3.1.1.27 | К2. 37 этаж Монолит | 6d | 2029-01-24 | 2029-01-30 | 1395 | 178d | 0d |  |
| 1397 | 11.4.3.1.1.27 | К2. 38 этаж Монолит | 6d | 2029-01-30 | 2029-02-05 | 1396 | 178d | 0d |  |
| 1398 | 11.4.3.1.1.27 | К2. 39 этаж Монолит | 6d | 2029-02-05 | 2029-02-11 | 1397 | 178d | 0d |  |
| 1399 | 11.4.3.1.1.27 | К2. 40 этаж Монолит | 6d | 2029-02-11 | 2029-02-17 | 1398 | 178d | 0d |  |
| 1400 | 11.4.3.1.1.27 | К2. 41 этаж Монолит | 6d | 2029-02-17 | 2029-02-23 | 1399 | 178d | 0d |  |
| 1401 | 11.4.3.1.1.27 | К2. 42 этаж Монолит | 6d | 2029-02-23 | 2029-03-01 | 1400 | 178d | 0d |  |
| 1402 | 11.4.3.1.1.27 | К2. 43 этаж Монолит | 6d | 2029-03-01 | 2029-03-07 | 1401 | 178d | 0d |  |
| 1403 | 11.4.3.1.1.27 | К2. 44 этаж Монолит | 6d | 2029-03-07 | 2029-03-13 | 1402 | 178d | 0d |  |
| 1404 | 11.4.3.1.1.27 | К2. 45 этаж Монолит | 6d | 2029-03-13 | 2029-03-19 | 1403 | 178d | 0d |  |
| 1405 | 11.4.3.1.1.27 | К2. 46 этаж Монолит | 6d | 2029-03-19 | 2029-03-25 | 1404 | 178d | 0d |  |
| 1406 | 11.4.3.1.1.27 | К2. 47 этаж Монолит | 6d | 2029-03-25 | 2029-03-31 | 1405 | 178d | 0d |  |
| 1407 | 11.4.3.1.1.27 | К2. 48 этаж Монолит | 6d | 2029-03-31 | 2029-04-06 | 1406 | 178d | 0d |  |
| 1408 | 11.4.3.1.1.27 | К2. 49 этаж Монолит | 6d | 2029-04-06 | 2029-04-12 | 1407 | 178d | 0d |  |
| 1409 | 11.4.3.1.1.27 | К2. 50 этаж Монолит | 6d | 2029-04-12 | 2029-04-18 | 1408 | 178d | 0d |  |
| 1410 | 11.4.3.1.1.27 | К2. 51 этаж Монолит | 6d | 2029-04-18 | 2029-04-24 | 1409 | 178d | 0d |  |
| 1411 | 11.4.3.1.1.27 | К2. 52 этаж Монолит | 6d | 2029-04-24 | 2029-04-30 | 1410 | 178d | 0d |  |
| 1412 | 11.4.3.1.1.27 | К2. 53 этаж Монолит | 6d | 2029-04-30 | 2029-05-06 | 1411 | 178d | 0d |  |
| 1413 | 11.4.3.1.1.27 | К2. 54 этаж Монолит | 6d | 2029-05-06 | 2029-05-12 | 1412 | 178d | 0d |  |
| 1414 | 11.4.3.1.1.27 | К2. 55 этаж Монолит | 6d | 2029-05-12 | 2029-05-18 | 1413 | 178d | 0d |  |
| 1415 | 10.4.3.1.1.56 | К2. Кровля/Парапет Монолит | 15d | 2029-05-18 | 2029-06-02 | 1414 | 176d |  |  |

Notes:
- 1359: комментарий: стандартный регламент дилтельности монолитных работ: 1этаж=30дн, типовой этаж=6дн; парапет=15дн

| ID | WBS | Task | Type | Duration | Start | Finish | Predecessors | Total slack | Free slack | Text2 |
| --- | --- | --- | --- | --- | --- | --- | --- | --- | --- | --- |
| 1416 | 10.4.3.1.2 | **К2. Монтаж конструкций металлических** |  | 300d | 2028-09-07 | 2029-07-08 |  | 322d |  | К1 |
| 1417 | 10.4.3.1.2.1 | К2. По договору Монтаж конструкций металлических |  | 300d | 2028-09-07 | 2029-07-08 | 428, 1419SS+45d | 320d |  | К1 |
| 1418 | 10.4.3.1.3 | **К2. Кладка наружных стен и перегородок** |  | 430d | 2028-07-24 | 2029-10-01 |  | 63d |  | К1 |
| 1419 | 10.4.3.1.3.1 | К2. По договору Кладка наружных стен |  | 350d | 2028-07-24 | 2029-07-13 | 1365, 665 | 63d | 0d | К1 |
| 1420 | 10.4.3.1.3.2 | К2. По договору Кладка перегородок |  | 430d | 2028-07-24 | 2029-10-01 | 1365, 665 | 235d | 0d | К1 |
| 1421 | 10.4.3.1.4 | **К2. МОКАП фасада** |  | 60d | 2027-09-28 | 2027-11-27 |  | 248d |  |  |
| 1422 | 10.4.3.1.4.1 | К2. По договору МОКАП фасада |  | 60d | 2027-09-28 | 2027-11-27 | 767 | 346d | 0d |  |
| 1423 | 10.4.3.1.5 | **К2. Монтаж фасадов** |  | 550d | 2028-10-16 | 2030-04-27 |  | 33d |  | К1 |
| 1424 | 10.4.3.1.5.1 | К2. По договору Монтаж фасадов |  | 550d | 2028-10-16 | 2030-04-27 | 775, 1426SS+30d | 33d | 0d | К1 |
| 1425 | 10.4.3.1.6 | **К2. Монтаж светопрозрачных конструкций** |  | 380d | 2028-09-16 | 2029-10-05 |  | 33d | 0d | К1 |
| 1426 | 10.4.3.1.6.1 | К2. По договору Монтаж светопрозрачных конструкций Витражи на системе стойка-ригель (на выносе) |  | 380d | 2028-09-16 | 2029-10-05 | 1374, 789 | 33d | 0d |  |
| 1427 | 10.4.3.1.7 | **К2. Устройство кровли** |  | 60d | 2029-06-02 | 2029-08-01 |  | 298d |  | К1 |
| 1428 | 10.4.3.1.7.1 | **К2. Устройство кровли неэксплуатируемой** |  | 60d | 2029-06-02 | 2029-08-01 |  | 298d |  | К1 |
| 1429 | 10.4.3.1.7.1.1 | К2. По договору Устройство кровли неэксплуатируемой |  | 60d | 2029-06-02 | 2029-08-01 | 1359, 715 | 296d | 0d | К1 |
| 1430 | 10.4.3.1.7.2 | **К2. Устройство кровли эксплуатируемой** |  | 60d | 2029-06-02 | 2029-08-01 |  | 298d |  | К1 |
| 1431 | 10.4.3.1.7.2.1 | К2. По договору Устройство кровли эксплуатируемой |  | 60d | 2029-06-02 | 2029-08-01 | 1359, 715, 424 | 296d | 0d | К1 |
| 1432 | 10.4.3.1.8 | К2. Закрыт тепловой контур по корпусу | milestone | 0d | 2029-10-05 | 2029-10-05 | 1426 | 231d | 0d | К1 |
| 1433 | 10.4.3.1.9 | К2. Закрыт ВРЕМЕННЫЙ тепловой контур по корпусу (при необходимости) |  | 45d | 2029-05-29 | 2029-07-13 | 1419FF | 63d | 0d | К1 |
| 1434 | 10.4.3.2 | **К2. Внутренние инженерные системы** |  | 580d | 2028-09-16 | 2030-04-27 |  | 3d | 0d | К1 |
| 1435 | 10.4.3.2.1 | **К2. Вертикальный транспорт (лифты,подъемное оборудование)** |  | 150d | 2029-06-02 | 2029-10-30 |  | 178d |  | К1 |
| 1436 | 10.4.3.2.1.1 | К2. По договору Вертикальный транспорт (лифты,подъемное оборудование) |  | 150d | 2029-06-02 | 2029-10-30 | 1359, 722 | 176d | 0d | К1 |
| 1437 | 10.4.3.2.2 | **К2. Внутренние сантехнические системы** |  | 580d | 2028-09-16 | 2030-04-27 |  | 3d |  | К1 |
| 1438 | 10.4.3.2.2.1 | **К2. Хозяйственно-питьевой водопровод** |  | 580d | 2028-09-16 | 2030-04-27 |  | 3d | 0d | К1 |
| 1439 | 10.4.3.2.2.1.1 | К2. В соответствии с договорным графиком Хозяйственно-питьевой водопровод |  | 580d | 2028-09-16 | 2030-04-27 | 1374, 860 | 3d |  | К1 |

Notes:
- 1419: комментарий: начало после завершение 6 этажа монолита, завершение через 1,5мес после завершения монолита последнего этажа
- 1420: комментарий: начало после завершение 6 этажа монолита, завершение через 4мес после завершения монолита последнего этажа
- 1422: комментарий: опциональная задача, длительность регламентированная
- 1424: комментарий: начало через 30дней после старта монтажа окон ПВХ, завершение через 330дней после завершения монолита последнего этажа
- 1426: комментарий: старт после монолита 15этажа (или последнего, если здание ниже); завершение через 4мес после монолита последнего этажа
- 1433: комментарий: временный тепловой контур возводят при необходимости - в случае если постоянный тепловой контур не получается возвести к 15 октября требуемого года для выполнения отделочных работ)
- 1436: комментарий: регламентированная привязка и длительность
- 1437: комментарий: старт после монолита 15этажа (или последнего, если здание ниже); завершение через 330ДНЕЙ после монолита последнего этажа

| ID | WBS | Task | Duration | Start | Finish | Predecessors | Total slack | Free slack | Text2 |
| --- | --- | --- | --- | --- | --- | --- | --- | --- | --- |
| 1440 | 10.4.3.2.2.2 | **К2. Внутренний противопожарный водопровод** | 580d | 2028-09-16 | 2030-04-27 |  | 3d |  | К1 |
| 1441 | 10.4.3.2.2.2.1 | К2. В соответствии с договорным графиком Внутренний противопожарный водопровод | 580d | 2028-09-16 | 2030-04-27 | 1374, 860 | 3d |  | К1 |
| 1442 | 10.4.3.2.2.3 | **К2. Внутренняя канализация** | 580d | 2028-09-16 | 2030-04-27 |  | 3d |  | К1 |
| 1443 | 10.4.3.2.2.3.1 | К2. В соответствии с договорным графиком Внутренняя канализация | 580d | 2028-09-16 | 2030-04-27 | 1374, 860 | 3d |  | К1 |
| 1444 | 10.4.3.2.2.4 | **К2. Внутренний водосток** | 580d | 2028-09-16 | 2030-04-27 |  | 3d |  | К1 |
| 1445 | 10.4.3.2.2.4.1 | К2. В соответствии с договорным графиком Внутренний водосток | 580d | 2028-09-16 | 2030-04-27 | 1374, 860 | 3d |  | К1 |
| 1446 | 10.4.3.2.2.5 | **К2. Пожаротушение** | 580d | 2028-09-16 | 2030-04-27 |  | 3d |  | К1 |
| 1447 | 10.4.3.2.2.5.1 | К2. В соответствии с договорным графиком Пожаротушение | 580d | 2028-09-16 | 2030-04-27 | 1374, 860 | 3d |  | К1 |
| 1448 | 10.4.3.2.3 | **К2. Отопление** | 580d | 2028-09-16 | 2030-04-27 |  | 3d | 0d | К1 |
| 1449 | 10.4.3.2.3.1 | К2. По договору Отопление (контур для пуска тепла) | 250d | 2028-09-16 | 2029-05-28 | 1374, 860 | 46d | 0d | К1 |
| 1450 | 10.4.3.2.3.2 | К2. По договору Отопление (все система полностью) | 580d | 2028-09-16 | 2030-04-27 | 1374, 860 | 3d |  |  |
| 1451 | 10.4.3.2.4 | **К2. Вентиляция, дымоудаление** | 580d | 2028-09-16 | 2030-04-27 |  | 3d | 0d | К1 |
| 1452 | 10.4.3.2.4.1 | К2. По договору Вентиляция, дымоудаление | 580d | 2028-09-16 | 2030-04-27 | 1374, 860 | 3d |  | К1 |
| 1453 | 10.4.3.2.5 | **К2. Кондиционирование** | 580d | 2028-09-16 | 2030-04-27 |  | 3d |  | К1 |
| 1454 | 10.4.3.2.5.1 | К2. По договору Кондиционирование | 580d | 2028-09-16 | 2030-04-27 | 1374, 860 | 3d |  | К1 |
| 1455 | 10.4.3.2.6 | **К2. Внутренние слаботочные системы** | 580d | 2028-09-16 | 2030-04-27 |  | 3d |  | К1 |
| 1456 | 10.4.3.2.6.1 | **К2. Автоматизированные системы управления** | 580d | 2028-09-16 | 2030-04-27 |  | 3d |  | К1 |
| 1457 | 10.4.3.2.6.1.1 | **К2. АСУД (комплекс)** | 580d | 2028-09-16 | 2030-04-27 |  | 3d |  | К1 |
| 1458 | 10.4.3.2.6.1.1.1 | К2. В соответствии с договорным графиком АСУД (комплекс) | 580d | 2028-09-16 | 2030-04-27 | 1374, 868 | 3d |  | К1 |
| 1459 | 10.4.3.2.6.1.2 | **К2. АСКУЭ (Автоматизированная система контроля и учета электроэнергии)** | 580d | 2028-09-16 | 2030-04-27 |  | 3d |  | К1 |
| 1460 | 10.4.3.2.6.1.2.1 | К2. В соответствии с договорным графиком АСКУЭ (Автоматизированная система контроля и учета электроэнергии) | 580d | 2028-09-16 | 2030-04-27 | 1374, 868 | 3d |  | К1 |
| 1461 | 10.4.3.2.6.1.3 | **К2. АСКУВТ (Автоматизированная система контроля и учета воды)** | 580d | 2028-09-16 | 2030-04-27 |  | 3d |  | К1 |
| 1462 | 10.4.3.2.6.1.3.1 | К2. В соответствии с договорным графиком АСКУВТ (Автоматизированная система контроля и учета воды) | 580d | 2028-09-16 | 2030-04-27 | 1374, 868 | 3d |  | К1 |
| 1463 | 10.4.3.2.6.1.4 | **К2. СМИК (Система маниторинга инженерной конструкции)** | 580d | 2028-09-16 | 2030-04-27 |  | 3d |  | К1 |
| 1464 | 10.4.3.2.6.1.4.1 | К2. В соответствии с договорным графиком СМИК (Система маниторинга инженерной конструкции) | 580d | 2028-09-16 | 2030-04-27 | 1374, 868 | 3d |  | К1 |

Notes:
- 1448: комментарий: старт после монолита 15этажа (или последнего, если здание ниже); завершение через 12мес после монолита последнего этажа
- 1451: комментарий: старт после монолита 15этажа (или последнего, если здание ниже); завершение через 12мес после монолита последнего этажа
- 1453: комментарий: старт после монолита 15этажа (или последнего, если здание ниже); завершение через 12мес после монолита последнего этажа
- 1455: комментарий: старт после монолита 15этажа (или последнего, если здание ниже); завершение через 12мес после монолита последнего этажа

| ID | WBS | Task | Duration | Start | Finish | Predecessors | Total slack | Text2 |
| --- | --- | --- | --- | --- | --- | --- | --- | --- |
| 1465 | 10.4.3.2.6.1.5 | **К2. Система контроля окиси углерода (загазованности)** | 580d | 2028-09-16 | 2030-04-27 |  | 3d | К1 |
| 1466 | 10.4.3.2.6.1.5.1 | К2. В соответствии с договорным графиком Система контроля окиси углерода (загазованности) | 580d | 2028-09-16 | 2030-04-27 | 1374, 868 | 3d | К1 |
| 1467 | 10.4.3.2.6.2 | **К2. Системы противопожарной защиты** | 580d | 2028-09-16 | 2030-04-27 |  | 3d | К1 |
| 1468 | 10.4.3.2.6.2.1 | **К2. АПС (Система автоматической пожарной сигнализации)** | 580d | 2028-09-16 | 2030-04-27 |  | 3d | К1 |
| 1469 | 10.4.3.2.6.2.1.1 | К2. В соответствии с договорным графиком АПС (Система автоматической пожарной сигнализации) | 580d | 2028-09-16 | 2030-04-27 | 1374, 868 | 3d | К1 |
| 1470 | 10.4.3.2.6.2.2 | **К2. АПТ (Система автоматизации автоматического (водяного, порошкового, газового) пожаротушения)** | 580d | 2028-09-16 | 2030-04-27 |  | 3d | К1 |
| 1471 | 10.4.3.2.6.2.2.1 | К2. В соответствии с договорным графиком АПТ (Система автоматизации автоматического (водяного, порошкового, газового) пожаротушения) | 580d | 2028-09-16 | 2030-04-27 | 1374, 868 | 3d | К1 |
| 1472 | 10.4.3.2.6.2.3 | **К2. АПЗ (Система автоматизации противодымной защиты)** | 580d | 2028-09-16 | 2030-04-27 |  | 3d | К1 |
| 1473 | 10.4.3.2.6.2.3.1 | К2. В соответствии с договорным графиком АПЗ (Система автоматизации противодымной защиты) | 580d | 2028-09-16 | 2030-04-27 | 1374, 868 | 3d | К1 |
| 1474 | 10.4.3.2.6.2.4 | **К2. СОУЭ** | 580d | 2028-09-16 | 2030-04-27 |  | 3d | К1 |
| 1475 | 10.4.3.2.6.2.4.1 | К2. В соответствии с договорным графиком СОУЭ | 580d | 2028-09-16 | 2030-04-27 | 1374, 868 | 3d | К1 |
| 1476 | 10.4.3.2.6.2.5 | **К2. СКК (Система кабельных конструкций)** | 580d | 2028-09-16 | 2030-04-27 |  | 3d | К1 |
| 1477 | 10.4.3.2.6.2.5.1 | К2. В соответствии с договорным графиком СКК (Система кабельных конструкций) | 580d | 2028-09-16 | 2030-04-27 | 1374, 868 | 3d | К1 |
| 1478 | 10.4.3.2.6.3 | **К2. Системы обеспечения безопасности** | 580d | 2028-09-16 | 2030-04-27 |  | 3d | К1 |
| 1479 | 10.4.3.2.6.3.1 | **К2. СОС (Система охранной сигнализации)** | 580d | 2028-09-16 | 2030-04-27 |  | 3d | К1 |
| 1480 | 10.4.3.2.6.3.1.1 | К2. В соответствии с договорным графиком СОС (Система охранной сигнализации) | 580d | 2028-09-16 | 2030-04-27 | 1374, 868 | 3d | К1 |
| 1481 | 10.4.3.2.6.3.2 | **К2. СОТ, СВН, СОВН (Система видеонаблюдения)** | 580d | 2028-09-16 | 2030-04-27 |  | 3d | К1 |
| 1482 | 10.4.3.2.6.3.2.1 | К2. В соответствии с договорным графиком СОТ, СВН, СОВН (Система видеонаблюдения) | 580d | 2028-09-16 | 2030-04-27 | 1374, 868 | 3d | К1 |
| 1483 | 10.4.3.2.6.3.3 | **К2. СКУД** | 580d | 2028-09-16 | 2030-04-27 |  | 3d | К1 |
| 1484 | 10.4.3.2.6.3.3.1 | К2. В соответствии с договорным графиком СКУД | 580d | 2028-09-16 | 2030-04-27 | 1374, 868 | 3d | К1 |
| 1485 | 10.4.3.2.6.3.4 | **К2. ОЗДС** | 580d | 2028-09-16 | 2030-04-27 |  | 3d | К1 |
| 1486 | 10.4.3.2.6.3.4.1 | К2. В соответствии с договорным графиком ОЗДС | 580d | 2028-09-16 | 2030-04-27 | 1374, 868 | 3d | К1 |
| 1487 | 10.4.3.2.6.3.5 | **К2. Домофон (видеодомофон)** | 580d | 2028-09-16 | 2030-04-27 |  | 3d | К1 |
| 1488 | 10.4.3.2.6.3.5.1 | К2. В соответствии с договорным графиком Домофон (видеодомофон) | 580d | 2028-09-16 | 2030-04-27 | 1374, 868 | 3d | К1 |

| ID | WBS | Task | Type | Duration | Start | Finish | Predecessors | Total slack | Free slack | Constraint | Text2 |
| --- | --- | --- | --- | --- | --- | --- | --- | --- | --- | --- | --- |
| 1489 | 10.4.3.2.6.3.6 | **К2. СПД (Система передачи данных)** |  | 580d | 2028-09-16 | 2030-04-27 |  | 3d |  |  | К1 |
| 1490 | 10.4.3.2.6.3.6.1 | К2. В соответствии с договорным графиком СПД (Система передачи данных) |  | 580d | 2028-09-16 | 2030-04-27 | 1374, 868 | 3d |  |  | К1 |
| 1491 | 10.4.3.2.6.4 | **К2. Сети связи** |  | 580d | 2028-09-16 | 2030-04-27 |  | 3d |  |  | К1 |
| 1492 | 10.4.3.2.6.4.1 | **К2. ТВ, радио, интернет, телефон** |  | 580d | 2028-09-16 | 2030-04-27 |  | 3d |  |  | К1 |
| 1493 | 10.4.3.2.6.4.1.1 | К2. В соответствии с договорным графиком ТВ, радио, интернет, телефон |  | 580d | 2028-09-16 | 2030-04-27 | 1374, 868 | 3d |  |  | К1 |
| 1494 | 10.4.3.2.6.4.2 | **К2. СКС структурированная кабельная сеть** |  | 580d | 2028-09-16 | 2030-04-27 |  | 3d |  |  | К1 |
| 1495 | 10.4.3.2.6.4.2.1 | К2. В соответствии с договорным графиком СКС структурированная кабельная сеть |  | 580d | 2028-09-16 | 2030-04-27 | 1374, 868 | 3d |  |  | К1 |
| 1496 | 10.4.3.2.6.4.3 | **К2. СДС, СЭС, ССИ система связи** |  | 580d | 2028-09-16 | 2030-04-27 |  | 3d |  |  | К1 |
| 1497 | 10.4.3.2.6.4.3.1 | К2. В соответствии с договорным графиком СДС, СЭС, ССИ система связи |  | 580d | 2028-09-16 | 2030-04-27 | 1374, 868 | 3d |  |  | К1 |
| 1498 | 10.4.3.2.7 | **К2. Электроснабжение и электроосвещение** |  | 580d | 2028-09-16 | 2030-04-27 |  | 3d |  |  | К1 |
| 1499 | 10.4.3.2.7.1 | К2. По договору Электроснабжение и электроосвещение |  | 580d | 2028-09-16 | 2030-04-27 | 1374, 868 | 3d |  |  | К1 |
| 1500 | 10.4.3.2.8 | К2. Пуск тепла корпус | milestone | 0d | 2029-07-28 | 2029-07-28 | 1433FS+15d, 1449FS+15d | 63d | 0d |  | К1 |
| 1501 | 10.4.3.3 | **К2. Отделочные работы** |  | 420d | 2029-04-01 | 2030-05-30 |  | 0d |  | start no earlier than 2029-04-01 | К1 |
| 1502 | 10.4.3.3.1 | **К2. Отделочные работы МОП и вестибюли** |  | 420d | 2029-04-01 | 2030-05-30 |  | 0d |  |  | К1 |
| 1503 | 10.4.3.3.1.1 | **К2. Вестибюль** |  | 420d | 2029-04-01 | 2030-05-30 |  | 0d |  |  | К1 |
| 1504 | 10.4.3.3.1.1.1 | К2. По договору Вестибюль |  | 420d | 2029-04-01 | 2030-05-30 | 992, 1420SS+90d | 0d |  |  | К1 |
| 1505 | 10.4.3.3.1.2 | **К2. Лифтовые и квартирные холлы** |  | 420d | 2029-04-01 | 2030-05-30 |  | 0d |  |  | К1 |
| 1506 | 10.4.3.3.1.2.1 | К2. По договору Лифтовые и квартирные холлы |  | 420d | 2029-04-01 | 2030-05-30 | 992, 1420SS+90d | 0d |  |  | К1 |
| 1507 | 10.4.3.3.1.3 | **К2. Л/клетки и тамбур-шлюзы** |  | 420d | 2029-04-01 | 2030-05-30 |  | 0d |  |  | К1 |
| 1508 | 10.4.3.3.1.3.1 | К2. По договору Л/клетки и тамбур-шлюзы |  | 420d | 2029-04-01 | 2030-05-30 | 992, 1420SS+90d | 0d |  |  | К1 |
| 1509 | 10.4.3.3.1.4 | **К2. Коммерческие помещения** |  | 420d | 2029-04-01 | 2030-05-30 |  | 0d |  |  | К1 |
| 1510 | 10.4.3.3.1.4.1 | К2. По договору Коммерческие помещения |  | 420d | 2029-04-01 | 2030-05-30 | 992, 1420SS+90d | 0d |  |  | К1 |
| 1511 | 10.4.3.3.2 | **К2. Отделочные работы Квартиры** |  | 420d | 2029-04-01 | 2030-05-30 |  | 61d | 0d |  | К1 |
| 1512 | 10.4.3.3.2.1 | **К2. Подготовка под чистовую отделку квартир (при наличии)** |  | 330d | 2029-04-01 | 2030-03-01 |  | 61d |  |  | К1 |
| 1513 | 10.4.3.3.2.1.1 | К2. По договору Подготовка под чистовую отделку квартир |  | 330d | 2029-04-01 | 2030-03-01 | 992, 1420SS+90d | 61d | 0d |  | К1 |

Notes:
- 1498: комментарий: старт после монолита 15этажа (или последнего, если здание ниже); завершение через 11мес после монолита последнего этажа
- 1500: комментарий: принимаем пуск тепла по временной схеме, для увеличения длительности отделки
- 1501: комментарий: старт отделки надземной части через 90дн после старта кладки (при условии прогноза пуска тепла до 30 октября того же года, иначе после пуска тепла или 01 апреля следующего года - ранее событые), завершение через 12мес после монолита последнего этажа

| ID | WBS | Task | Type | Duration | Start | Finish | Predecessors | Total slack | Free slack | Text2 |
| --- | --- | --- | --- | --- | --- | --- | --- | --- | --- | --- |
| 1514 | 10.4.3.3.2.2 | **К2. Чистовая отделка квартир (при наличии)** |  | 330d | 2029-06-30 | 2030-05-30 |  | 61d |  | К1 |
| 1515 | 10.4.3.3.2.2.1 | К2. По договору Чистовая отделка квартир |  | 330d | 2029-06-30 | 2030-05-30 | 1513SS+90d, 1147FS+90d, 993 | 61d | 0d | К1 |
| 1516 | 10.4.3.3.3 | **К2. Отделочные работы, раздел ТХ (в этом разделе планируются работы только по соц.объектам)** |  | 300d | 2029-07-28 | 2030-05-28 |  | 63d |  | К1 |
| 1517 | 10.4.3.3.3.1 | К2. По договору Отделочные работы, раздел ТХ (в этом разделе планируются работы только по соц.объектам) |  | 300d | 2029-07-28 | 2030-05-28 | 1500, 1147FS+90d | 61d |  | К1 |
| 1518 | 10.4.4 | **Благоустройство территории** |  | 180d | 2029-10-25 | 2030-04-27 |  | 33d |  | П1, К1 |
| 1519 | 10.4.4.1 | **Земляные работы** |  | 60d | 2029-10-25 | 2029-12-24 |  | 33d |  | П1, К1 |
| 1520 | 10.4.4.1.1 | По договору Земляные работы |  | 60d | 2029-10-25 | 2029-12-24 | 1033, 1631, 1632, 1634, 1635, 1263FS-180d, 1424FS-180d | 33d | 0d | П1, К1 |
| 1521 | 10.4.4.2 | **Устройство твердых покрытий** |  | 120d | 2029-12-24 | 2030-04-27 |  | 33d |  | П1, К1 |
| 1522 | 10.4.4.2.1 | По договору Устройство твердых покрытий |  | 120d | 2029-12-24 | 2030-04-27 | 1033, 1520 | 33d | 0d | П1, К1 |
| 1523 | 10.4.4.3 | **Озеленение** |  | 60d | 2029-12-24 | 2030-02-26 |  | 93d |  | П1, К1 |
| 1524 | 10.4.4.3.1 | По договору Озеленение |  | 60d | 2029-12-24 | 2030-02-26 | 1041, 1520 | 93d | 0d | П1, К1 |
| 1525 | 10.4.4.4 | **Установка ограждения** |  | 45d | 2030-03-13 | 2030-04-27 |  | 33d |  | П1, К1 |
| 1526 | 10.4.4.4.1 | По договору Установка ограждения |  | 45d | 2030-03-13 | 2030-04-27 | 1033, 1522FS-45d | 33d | 0d | П1, К1 |
| 1527 | 10.4.4.5 | **Устройство наружного освещения** |  | 45d | 2030-03-13 | 2030-04-27 |  | 33d |  | П1, К1 |
| 1528 | 10.4.4.5.1 | По договору Устройство наружного освещения |  | 45d | 2030-03-13 | 2030-04-27 | 1057, 1522FS-45d | 33d | 0d | П1, К1 |
| 1529 | 10.4.4.6 | **Монтаж МАФ** |  | 45d | 2030-03-13 | 2030-04-27 |  | 33d |  | П1, К1 |
| 1530 | 10.4.4.6.1 | По договору Монтаж МАФ |  | 45d | 2030-03-13 | 2030-04-27 | 1049, 1522FS-45d | 33d | 0d | П1, К1 |
| 1531 | 10.4.4.7 | **Организация дорожного движения** |  | 45d | 2030-03-13 | 2030-04-27 |  | 33d |  | П1, К1 |
| 1532 | 10.4.4.7.1 | По договору Организация дорожного движения |  | 45d | 2030-03-13 | 2030-04-27 | 1033, 1522FS-45d | 33d | 0d | П1, К1 |
| 1533 | 10.5 | **Проведение комплексных испытаний и передача объекта УК** |  | 142d | 2030-04-27 | 2030-09-16 |  | 3d |  | П1, К1 |
| 1534 | 10.5.1 | **Проведение индивидуальных и комплексных испытания** |  | 30d | 2030-04-27 | 2030-05-27 |  | 3d |  | П1, К1 |
| 1535 | 10.5.1.1 | В соответствии с графиком к договору на проведение индивидуальных и комплексных испытаний |  | 30d | 2030-04-27 | 2030-05-27 | 1273, 1150, 1434 | 3d | 0d | П1, К1 |
| 1536 | 10.5.2 | **Передача объекта УК** |  | 142d | 2030-04-27 | 2030-09-16 |  | 383d |  | П1, К1 |
| 1537 | 10.5.2.1 | **Передача внутренних инженерных систем в УК** |  | 30d | 2030-05-27 | 2030-06-26 |  | 465d |  | П1, К1 |
| 1538 | 10.5.2.1.1 | Передача систем ОВ и ВК в УК |  | 30d | 2030-05-27 | 2030-06-26 | 1535 | 463d |  | П1, К1 |
| 1539 | 10.5.2.1.2 | Передача систем ЭОМ и СС в УК |  | 30d | 2030-05-27 | 2030-06-26 | 1535 | 463d |  | П1, К1 |
| 1540 | 10.5.2.1.3 | Передача лифтового оборудования в УК |  | 30d | 2030-05-27 | 2030-06-26 | 1535 | 463d |  | П1, К1 |
| 1541 | 10.5.2.1.4 | Передача систем противопожарной защиты |  | 30d | 2030-05-27 | 2030-06-26 | 1535 | 463d |  | П1, К1 |
| 1542 | 10.5.2.2 | Передача БИО в УК |  | 30d | 2030-04-27 | 2030-05-27 | 1520, 1522, 1524, 1526, 1528, 1530, 1532 | 495d |  | П1, К1 |
| 1543 | 10.5.2.3 | Передача фасадов в УК |  | 30d | 2030-04-27 | 2030-05-27 | 1263, 1424 | 495d |  | П1, К1 |
| 1544 | 10.5.2.4 | Передача технической документации в УК |  | 30d | 2030-07-11 | 2030-08-10 | 1581FF | 420d |  | П1, К1 |
| 1545 | 10.5.2.5 | Заключен договор управления с УК | milestone | 0d | 2030-08-17 | 2030-08-17 | 1581FS+7d | 383d | 0d | П1, К1 |
| 1546 | 10.5.2.6 | Заключены договора УК с РСО | milestone | 0d | 2030-09-16 | 2030-09-16 | 1545FS+30d | 383d | 0d | П1, К1 |

Notes:
- 1518: комментарий: уникальная задача зависащая от проекта, обычно производят в течении 6 месяцев, начало -180дн от завершения фасадов
- 1533: комментарий: регламентные привязки и длительности
- 1534: комментарий: регламентные привязки и длительности
- 1535: комментарий: регламентные привязки и длительности
- 1536: комментарий: регламентные привязки и длительности
- 1537: комментарий: регламентные привязки и длительности
- 1538: комментарий: регламентные привязки и длительности
- 1539: комментарий: регламентные привязки и длительности
- 1540: комментарий: регламентные привязки и длительности
- 1541: комментарий: регламентные привязки и длительности
- 1542: комментарий: регламентные привязки и длительности
- 1543: комментарий: регламентные привязки и длительности
- 1544: комментарий: регламентные привязки и длительности
- 1545: комментарий: регламентные привязки и длительности
- 1546: комментарий: регламентные привязки и длительности

| ID | WBS | Task | Type | Duration | Start | Finish | Predecessors | Total slack | Free slack | Text2 | комментарий |
| --- | --- | --- | --- | --- | --- | --- | --- | --- | --- | --- | --- |
| 1547 | 11 | **ЗОС и РВЭ** |  | 232d | 2029-12-17 | 2030-08-10 |  | 0d |  | П1, К1 | регламентные привязки и длительности |
| 1548 | 11.1 | **1-й Этап** |  | 232d | 2029-12-17 | 2030-08-10 |  | 0d |  | П1, К1 | регламентные привязки и длительности |
| 1549 | 11.1.1 | Готовность к обмерам БТИ | milestone | 0d | 2029-12-17 | 2029-12-17 | 1340FS-160d, 1501FS-160d | 61d | 0d |  | регламентные привязки и длительности |
| 1550 | 11.1.2 | **Обмеры БТИ и корректировка документации перед вводом** |  | 166d | 2029-12-17 | 2030-06-05 |  | 61d |  | П1, К1 | регламентные привязки и длительности |
| 1551 | 11.1.2.1 | Проведение обмеров БТИ |  | 45d | 2029-12-17 | 2030-02-04 | 1549 | 61d | 0d | П1, К1 | регламентные привязки и длительности |
| 1552 | 11.1.2.2 | Сбор Исполнительной документации по НИС |  | 30d | 2029-12-17 | 2030-01-20 | 1630, 1551SS | 66d | 0d |  | регламентные привязки и длительности |
| 1553 | 11.1.2.3 | Согласование в 1С Финального перечня изменений по зданиям |  | 5d | 2030-02-04 | 2030-02-09 | 1551 | 61d | 0d |  | регламентные привязки и длительности |
| 1554 | 11.1.2.4 | Согласование в 1С Финального перечня изменений сетям |  | 5d | 2030-01-20 | 2030-01-25 | 1552 | 66d | 0d |  | регламентные привязки и длительности |
| 1555 | 11.1.2.5 | **Корректировка Буклета АГР и модели** |  | 30d | 2030-01-20 | 2030-02-19 |  | 79d | 0d |  | регламентные привязки и длительности |
| 1556 | 11.1.2.5.1 | Корректировка буклета АГР |  | 30d | 2030-01-20 | 2030-02-19 | 1553FF+10d | 79d |  |  | регламентные привязки и длительности |
| 1557 | 11.1.2.5.2 | Корректировка модели |  | 30d | 2030-01-20 | 2030-02-19 | 1553FF+10d | 79d |  |  | регламентные привязки и длительности |
| 1558 | 11.1.2.6 | Корректировка Проектной документации и ПСО |  | 45d | 2030-01-05 | 2030-02-19 | 1553FF+10d, 1554FF+20d | 61d | 0d |  | регламентные привязки и длительности |
| 1559 | 11.1.2.7 | Разрешение на сети по аренде земли в ДГИ (при наличии НИС за пределами ГПЗУ) |  | 15d | 2030-01-25 | 2030-02-09 | 1554 | 71d | 10d |  | регламентные привязки и длительности |
| 1560 | 11.1.2.8 | Корректировка АГР перед вводом |  | 35d | 2030-02-19 | 2030-03-26 | 1555 | 79d | 18d | П1, К1 | регламентные привязки и длительности |
| 1561 | 11.1.2.9 | Корректировка экспертизы перед вводом |  | 60d | 2030-02-19 | 2030-04-20 | 1559, 1558, 1560FF+7d | 61d | 0d |  | регламентные привязки и длительности |
| 1562 | 11.1.2.10 | Корректировка РС перед вводом |  | 7d | 2030-04-20 | 2030-04-27 | 1561 | 61d | 0d | П1, К1 | регламентные привязки и длительности |
| 1563 | 11.1.2.11 | Регистрация скорректированного ДДУ, размещение ПД и ПСО |  | 20d | 2030-04-27 | 2030-05-17 | 1562 | 70d | 0d |  | регламентные привязки и длительности |
| 1564 | 11.1.2.12 | "Перевес" новых объектов (до подачи заявки на РВЭ) |  | 10d | 2030-05-17 | 2030-05-27 | 1563 | 70d |  |  | регламентные привязки и длительности |
| 1565 | 11.1.2.13 | Формирование тех. Плана для адреса |  | 7d | 2030-04-27 | 2030-05-04 | 1562 | 61d | 0d |  | регламентные привязки и длительности |
| 1566 | 11.1.2.14 | Получение адреса |  | 20d | 2030-05-04 | 2030-05-24 | 1565, 1559 | 61d | 0d | П1, К1 | регламентные привязки и длительности |
| 1567 | 11.1.2.15 | Фомирование итоговых технических планов |  | 12d | 2030-05-24 | 2030-06-05 | 1566 | 61d | 0d | П1, К1 | регламентные привязки и длительности |
| 1568 | 11.1.3 | **Получение ЗОС по этапу 1** |  | 67d | 2030-05-30 | 2030-08-05 |  | 0d |  | П1, К1 | регламентные привязки и длительности |
| 1569 | 11.1.3.1 | Стройготовность к Итоговой проверке |  | 30d | 2030-05-30 | 2030-06-29 | 1534, 1341, 1264, 1226, 1518, 1127, 1358, 1425, 1502 | 0d |  |  | регламентные привязки и длительности |
| 1570 | 11.1.3.2 | Формирование папки ЗОС |  | 30d | 2030-05-30 | 2030-06-29 | 1534, 1341, 1264, 1226, 1518, 1127, 1358, 1425, 1502 | 0d |  | П1, К1 | регламентные привязки и длительности |
| 1571 | 11.1.3.3 | Итоговая проверка |  | 23d | 2030-06-29 | 2030-07-22 | 1570, 1562, 1569 | 0d |  | П1, К1 | регламентные привязки и длительности |
| 1572 | 11.1.3.4 | Подписание нулевого акта |  | 7d | 2030-07-22 | 2030-07-29 | 1571 | 0d |  | П1, К1 | регламентные привязки и длительности |
| 1573 | 11.1.3.5 | ЗОС |  | 7d | 2030-07-29 | 2030-08-05 | 1572 | 0d |  | П1, К1 | регламентные привязки и длительности |
| 1574 | 11.1.3.6 | ЗОС по этапу 1 получен | milestone | 0d | 2030-08-05 | 2030-08-05 | 1573 | 0d |  | П1, К1 | регламентные привязки и длительности |

| ID | WBS | Task | Type | Duration | Start | Finish | Predecessors | Total slack | Free slack | Text2 | комментарий |
| --- | --- | --- | --- | --- | --- | --- | --- | --- | --- | --- | --- |
| 1575 | 11.1.4 | **Получение РВЭ по этапу 1** |  | 5d | 2030-08-05 | 2030-08-10 |  | 0d |  | П1, К1 | регламентные привязки и длительности |
| 1576 | 11.1.4.1 | Подача и регистрация заявки |  | 1d | 2030-08-05 | 2030-08-06 | 1574, 1564, 1567 | 0d |  | П1, К1 | регламентные привязки и длительности |
| 1577 | 11.1.4.2 | Рассмотрение пакета документов |  | 1d | 2030-08-06 | 2030-08-07 | 1576 | 0d |  | П1, К1 | регламентные привязки и длительности |
| 1578 | 11.1.4.3 | Выдача замечаний для устранения |  | 1d | 2030-08-07 | 2030-08-08 | 1577 | 0d |  | П1, К1 | регламентные привязки и длительности |
| 1579 | 11.1.4.4 | Согласование технических планов |  | 1d | 2030-08-08 | 2030-08-09 | 1578 | 0d |  | П1, К1 | регламентные привязки и длительности |
| 1580 | 11.1.4.5 | Решение о выдаче разрешения на ввод в эксплуатацию |  | 1d | 2030-08-09 | 2030-08-10 | 1579 | 0d |  | П1, К1 | регламентные привязки и длительности |
| 1581 | 11.1.4.6 | РВЭ по этапу 1 получен | milestone | 0d | 2030-08-10 | 2030-08-10 | 1580 | 0d |  | П1, К1 | регламентные привязки и длительности |
| 1582 | 12 | **Вынос сетей из пятна застройки** |  | 151d | 2027-07-15 | 2027-12-13 |  | 1379d |  | П1, К1 |  |
| 1583 | 12.1 | **Вынос сетей Теплоснабжения** |  | 151d | 2027-07-15 | 2027-12-13 |  | 1379d |  | П1, К1 |  |
| 1584 | 12.1.1 | Оформление СКП по ликвидируемым сетям. |  | 14d | 2027-07-15 | 2027-07-29 | 1623 | 1394d | 17d | П1, К1 |  |
| 1585 | 12.1.2 | **СМР по выносу теплосети** |  | 28d | 2027-08-01 | 2027-08-29 | 616 | 1379d |  | П1, К1 |  |
| 1586 | 12.1.2.1 | СМР по выносу сетей |  | 14d | 2027-08-01 | 2027-08-15 |  | 1377d | 0d | П1, К1 |  |
| 1587 | 12.1.2.2 | Врезка и переключение |  | 14d | 2027-08-15 | 2027-08-29 | 1586 | 1483d | 0d | П1, К1 |  |
| 1588 | 12.1.3 | Передача переустроенной сети на баланс эксплуатирующей организации |  | 120d | 2027-08-15 | 2027-12-13 | 1584, 1586 | 1377d |  | П1, К1 |  |
| 1589 | 12.2 | **Вынос сетей Электроснабжения и освещения** |  | 151d | 2027-07-15 | 2027-12-13 |  | 1379d |  | П1, К1 |  |
| 1590 | 12.2.1 | Оформление СКП по ликвидируемым сетям. |  | 14d | 2027-07-15 | 2027-07-29 | 1623 | 1394d | 17d | П1, К1 |  |
| 1591 | 12.2.2 | **СМР по выносу сетей Электроснабжения и освещения** |  | 28d | 2027-08-01 | 2027-08-29 | 616 | 1379d |  | П1, К1 |  |
| 1592 | 12.2.2.1 | СМР по выносу сетей |  | 14d | 2027-08-01 | 2027-08-15 |  | 1377d | 0d | П1, К1 |  |
| 1593 | 12.2.2.2 | Врезка и переключение |  | 14d | 2027-08-15 | 2027-08-29 | 1592 | 1483d | 0d | П1, К1 |  |
| 1594 | 12.2.3 | Передача переустроенной сети на баланс эксплуатирующей организации |  | 120d | 2027-08-15 | 2027-12-13 | 1592, 1590 | 1377d |  | П1, К1 |  |
| 1595 | 12.3 | **Вынос сетей Газоснабжения** |  | 151d | 2027-07-15 | 2027-12-13 |  | 1379d |  | П1, К1 |  |
| 1596 | 12.3.1 | Оформление СКП по ликвидируемым сетям. |  | 14d | 2027-07-15 | 2027-07-29 | 1623 | 1394d | 17d | П1, К1 |  |
| 1597 | 12.3.2 | **СМР по выносу сетей Газоснабжения** |  | 28d | 2027-08-01 | 2027-08-29 | 616 | 1379d |  | П1, К1 |  |
| 1598 | 12.3.2.1 | СМР по выносу сетей |  | 14d | 2027-08-01 | 2027-08-15 |  | 1377d | 0d | П1, К1 |  |
| 1599 | 12.3.2.2 | Врезка и переключение |  | 14d | 2027-08-15 | 2027-08-29 | 1598 | 1483d | 0d | П1, К1 |  |
| 1600 | 12.3.3 | Передача переустроенной сети на баланс эксплуатирующей организации |  | 120d | 2027-08-15 | 2027-12-13 | 1598, 1596 | 1377d |  | П1, К1 |  |

| ID | WBS | Task | Duration | Start | Finish | Predecessors | Total slack | Free slack | Text2 |
| --- | --- | --- | --- | --- | --- | --- | --- | --- | --- |
| 1601 | 12.4 | **Вынос сетей Водоснабжения и канализации** | 151d | 2027-07-15 | 2027-12-13 |  | 1379d |  | П1, К1 |
| 1602 | 12.4.1 | Оформление СКП по водоснабжению | 14d | 2027-07-15 | 2027-07-29 | 1623 | 1394d | 17d | П1, К1 |
| 1603 | 12.4.2 | Оформление СКП по водоотведению | 14d | 2027-07-15 | 2027-07-29 | 1623 | 1394d | 17d | П1, К1 |
| 1604 | 12.4.3 | **СМР по выносу сетей Водоснабжения и канализации** | 28d | 2027-08-01 | 2027-08-29 | 616 | 1379d |  | П1, К1 |
| 1605 | 12.4.3.1 | СМР по выносу сетей | 14d | 2027-08-01 | 2027-08-15 |  | 1377d | 0d | П1, К1 |
| 1606 | 12.4.3.2 | Врезка и переключение | 14d | 2027-08-15 | 2027-08-29 | 1605 | 1483d | 0d | П1, К1 |
| 1607 | 12.4.4 | Передача переустроенной сети на баланс эксплуатирующей организации | 120d | 2027-08-15 | 2027-12-13 | 1605, 1602, 1603 | 1377d |  | П1, К1 |
| 1608 | 12.5 | **Вынос Сети связи** | 151d | 2027-07-15 | 2027-12-13 |  | 1379d |  | П1, К1 |
| 1609 | 12.5.1 | Оформление СКП по ликвидируемым сетям. | 14d | 2027-07-15 | 2027-07-29 | 1623 | 1394d | 17d | П1, К1 |
| 1610 | 12.5.2 | **СМР по выносу сетей Связи** | 28d | 2027-08-01 | 2027-08-29 | 616 | 1379d |  | П1, К1 |
| 1611 | 12.5.2.1 | СМР по выносу сетей | 14d | 2027-08-01 | 2027-08-15 |  | 1377d | 0d | П1, К1 |
| 1612 | 12.5.2.2 | Врезка и переключение | 14d | 2027-08-15 | 2027-08-29 | 1611 | 1483d | 0d | П1, К1 |
| 1613 | 12.5.3 | Передача переустроенной сети на баланс эксплуатирующей организации | 120d | 2027-08-15 | 2027-12-13 | 1611, 1609 | 1377d |  | П1, К1 |
| 1614 | 13 | **Наружные инженерные сети ТУ/ТП** | 63d | 2027-03-20 | 2027-05-22 |  | 657d |  | П1, К1 |
| 1615 | 13.1 | ТУ на вынос и переустройство сетей | 30d | 2027-03-20 | 2027-04-19 | 242 | 1421d | 0d | П1, К1 |
| 1616 | 13.2 | Электроснабжение (Договор тех. Присоединения) | 30d | 2027-04-22 | 2027-05-22 | 224 | 622d | 0d | П1, К1 |
| 1617 | 13.3 | Теплоснабжение (Договор тех. Присоединения) | 30d | 2027-04-22 | 2027-05-22 | 224 | 622d | 0d | П1, К1 |
| 1618 | 13.4 | Водоснабжение/Канализования (Договор тех. Присоединения) | 30d | 2027-04-22 | 2027-05-22 | 224 | 622d | 0d | П1, К1 |
| 1619 | 13.5 | Водосток ТУ оформление | 30d | 2027-04-22 | 2027-05-22 | 224 | 622d | 0d | П1, К1 |
| 1620 | 13.6 | Сети связи ТУ оформление и подписание договора | 30d | 2027-04-22 | 2027-05-22 | 224 | 622d | 0d | П1, К1 |
| 1621 | 14 | **Наружные инженерные сети ПИР** | 172d | 2027-05-16 | 2027-11-04 |  | 630d |  | П1, К1 |
| 1622 | 14.1 | **ПИР по наружным сетям** | 142d | 2027-05-16 | 2027-10-05 |  | 630d |  | П1, К1 |
| 1623 | 14.1.1 | ПИР вынос сетей из пятна застройки | 60d | 2027-05-16 | 2027-07-15 | 566, 1615 | 1394d | 0d | П1, К1 |
| 1624 | 14.1.2 | Электроснабжение ПИР по Договору тех. Присоединения | 90d | 2027-07-07 | 2027-10-05 | 260, 1616, 572 | 576d | 0d | П1, К1 |
| 1625 | 14.1.3 | Теплоснабжение ПИР по Договору тех. Присоединения | 90d | 2027-07-07 | 2027-10-05 | 263, 1617, 572 | 576d | 0d | П1, К1 |
| 1626 | 14.1.4 | Водоснабжение/Канализования ПИР | 90d | 2027-07-07 | 2027-10-05 | 572, 1618 | 576d | 0d | П1, К1 |
| 1627 | 14.1.5 | Водосток ПИР | 90d | 2027-07-07 | 2027-10-05 | 572, 1619 | 576d | 0d | П1, К1 |
| 1628 | 14.1.6 | Сети связи ПИР | 90d | 2027-07-07 | 2027-10-05 | 1620, 572 | 576d | 0d | П1, К1 |
| 1629 | 14.2 | Согласование ПД-РД наружные сети | 30d | 2027-10-05 | 2027-11-04 | 1627, 1626, 1628, 1624, 1625 | 576d | 0d | П1, К1 |

| ID | WBS | Task | Duration | Start | Finish | Predecessors | Total slack | Free slack | Text2 |
| --- | --- | --- | --- | --- | --- | --- | --- | --- | --- |
| 1630 | 15 | **Наружные инженерные сети СМР/ПНР** | 90d | 2028-01-25 | 2028-04-24 |  | 578d |  | П1, К1 |
| 1631 | 15.1 | Теплоснабжение СМР по Договору тех. Присоединения | 90d | 2028-01-25 | 2028-04-24 | 1625, 693, 1097 | 576d | 0d | П1, К1 |
| 1632 | 15.2 | Электроснабжение СМР по Договору тех. Присоединения | 90d | 2028-01-25 | 2028-04-24 | 1624, 693, 1097 | 576d | 0d | П1, К1 |
| 1633 | 15.3 | **СМР по водоснабжению и канализации** | 90d | 2028-01-25 | 2028-04-24 |  | 578d |  | П1, К1 |
| 1634 | 15.3.1 | Водоснабжение/Канализование СМР | 90d | 2028-01-25 | 2028-04-24 | 693, 1097 | 576d | 0d | П1, К1 |
| 1635 | 15.3.2 | Водосток СМР | 90d | 2028-01-25 | 2028-04-24 | 693, 1097 | 576d | 0d | П1, К1 |
| 1636 | 15.4 | Сети связи СМР | 90d | 2028-01-25 | 2028-04-24 | 1620, 693, 1097 | 662d | 0d | П1, К1 |
| 1637 | 16 | **Наружные инженерные сети ввод/передача** | 1010d | 2028-04-24 | 2031-02-10 |  | 240d |  | П1, К1 |
| 1638 | 16.1 | **Электроснабжение ввод** | 72d | 2028-04-24 | 2028-07-05 |  | 1178d |  | П1, К1 |
| 1639 | 16.1.1 | Акт выполнения тех.условий | 30d | 2028-04-24 | 2028-05-24 | 1632 | 1176d | 0d |  |
| 1640 | 16.1.2 | Акт допуска Ростехнадзора | 7d | 2028-05-24 | 2028-05-31 | 1639 | 1176d | 0d | П1, К1 |
| 1641 | 16.1.3 | Акт технологического присоединения (ЗОС и РВЭ) | 7d | 2028-05-31 | 2028-06-07 | 1640 | 1176d | 0d | П1, К1 |
| 1642 | 16.1.4 | Акт пломбировки узла учета | 7d | 2028-05-31 | 2028-06-07 | 1640 | 1204d |  | П1, К1 |
| 1643 | 16.1.5 | Договор на постоянное электроснабжение | 14d | 2028-06-07 | 2028-06-21 | 1641 | 1176d | 0d | П1, К1 |
| 1644 | 16.1.6 | Подача ЭС по постоянной схеме ( физическая) | 14d | 2028-06-21 | 2028-07-05 | 1643 | 1176d |  | П1, К1 |
| 1645 | 16.2 | **Теплоснабжение ввод** | 574d | 2028-12-02 | 2030-07-07 |  | 454d |  | П1, К1 |
| 1646 | 16.2.1 | Развернутый акт на ИТП на ПНР (для ЗОС) | 7d | 2028-12-02 | 2028-12-09 | 1631, 1163 | 948d | 496d | П1, К1 |
| 1647 | 16.2.2 | Акт допуска (ИТП, система ОВ,ВК) на ПНР | 7d | 2030-04-27 | 2030-05-04 | 1646, 1631, 1287, 1290, 1277, 1438, 1448, 1451 | 452d | 0d | П1, К1 |
| 1648 | 16.2.3 | Договор на ПНР по теплоснабжению (для РВЭ) | 14d | 2030-05-04 | 2030-05-18 | 1647 | 452d | 0d | П1, К1 |
| 1649 | 16.2.4 | ПНР по теплоснабжению | 15d | 2030-05-18 | 2030-06-02 | 1648 | 452d | 0d | П1, К1 |
| 1650 | 16.2.5 | Пуск тепла по регламенту от сети МОЭК | 7d | 2030-06-02 | 2030-06-09 | 1649 | 480d |  | П1, К1 |
| 1651 | 16.2.6 | Развернутый акт ИТП на постоянное теплоснабжение | 7d | 2030-06-02 | 2030-06-09 | 1649 | 452d | 0d | П1, К1 |
| 1652 | 16.2.7 | Акт допуска по постоянному теплоснабжению | 7d | 2030-06-09 | 2030-06-16 | 1651 | 452d | 0d | П1, К1 |
| 1653 | 16.2.8 | Договор на постоянное теплоснабжение | 14d | 2030-06-16 | 2030-06-30 | 1652 | 452d | 0d | П1, К1 |
| 1654 | 16.2.9 | Подача ТС по постоянной схеме ( физическая) | 7d | 2030-06-30 | 2030-07-07 | 1653 | 452d | 0d | П1, К1 |

| ID | WBS | Task | Type | Duration | Start | Finish | Predecessors | Total slack | Free slack | Text2 |
| --- | --- | --- | --- | --- | --- | --- | --- | --- | --- | --- |
| 1655 | 16.3 | **Водоснабжение/Канализование** |  | 1010d | 2028-04-24 | 2031-02-10 |  | 240d |  | П1, К1 |
| 1656 | 16.3.1 | Акт тех приемки водопровода ( для зос) |  | 7d | 2030-05-30 | 2030-06-06 | 1633, 1570SS | 284d | 0d | П1, К1 |
| 1657 | 16.3.2 | Акт осмотра дворовой канализации (для зос) |  | 7d | 2028-04-24 | 2028-05-01 | 1634 | 1040d | 756d | П1, К1 |
| 1658 | 16.3.3 | Разрешение на водоснабжение и канализование (для РВЭ) |  | 7d | 2030-06-06 | 2030-06-13 | 1657, 1656 | 284d | 0d | П1, К1 |
| 1659 | 16.3.4 | Договор на ВК постоянное |  | 14d | 2030-06-13 | 2030-06-27 | 1658 | 284d | 44d | П1, К1 |
| 1660 | 16.3.5 | Передача на баланс |  | 180d | 2030-08-10 | 2031-02-10 | 1659, 1581 | 240d | 0d | П1, К1 |
| 1661 | 16.4 | **Водосток** |  | 252d | 2030-05-30 | 2031-02-10 |  | 240d |  | П1, К1 |
| 1662 | 16.4.1 | Акт готовности системы к принятию сточных ввод ( для ЗОС) |  | 7d | 2030-05-30 | 2030-06-06 | 1635, 1570SS | 298d | 0d | П1, К1 |
| 1663 | 16.4.2 | Разрешение на сброс сточных вод (для РВЭ) |  | 7d | 2030-06-06 | 2030-06-13 | 1662 | 298d | 58d | П1, К1 |
| 1664 | 16.4.3 | Передача на баланс |  | 180d | 2030-08-10 | 2031-02-10 | 1663, 1581 | 240d | 0d | П1, К1 |
| 1665 | 16.5 | **Сети связи** |  | 252d | 2030-05-30 | 2031-02-10 |  | 240d |  | П1, К1 |
| 1666 | 16.5.1 | Справка о выполнении ТУ |  | 7d | 2030-05-30 | 2030-06-06 | 1636, 1570SS | 305d | 65d | П1, К1 |
| 1667 | 16.5.2 | Передача на баланс |  | 180d | 2030-08-10 | 2031-02-10 | 1666, 1581 | 240d | 0d | П1, К1 |
| 1668 | 17 | **Передача собственникам** |  | 360d | 2030-10-09 | 2031-10-08 |  | 0d |  | П1, К1 |
| 1669 | 17.1 | Передача квартир без отделки | milestone | 0d | 2031-02-10 | 2031-02-10 | 1581FS+180d | 90d | 0d | К1 |
| 1670 | 17.2 | Передача квартир с отделкой | milestone | 0d | 2031-05-11 | 2031-05-11 | 1581FS+270d | 0d |  | К1 |
| 1671 | 17.3 | Передача комм. Помещений | milestone | 0d | 2030-10-09 | 2030-10-09 | 1581FS+60d | 300d | 0d | П1, К1 |
| 1672 | 17.4 | Передача машиномест | milestone | 0d | 2030-10-09 | 2030-10-09 | 1581FS+60d | 300d | 0d | П1 |
| 1673 | 17.5 | **Срок по ДДУ** |  | 300d | 2030-12-08 | 2031-10-08 |  | 0d |  | П1, К1 |
| 1674 | 17.5.1 | Передача квартир без отделки | milestone | 0d | 2031-07-10 | 2031-07-10 | 1669FS+150d | 90d |  | К1 |
| 1675 | 17.5.2 | Передача квартир с отделкой | milestone | 0d | 2031-10-08 | 2031-10-08 | 1670FS+150d | 0d |  | К1 |
| 1676 | 17.5.3 | Передача комм. Помещений | milestone | 0d | 2030-12-08 | 2030-12-08 | 1671FS+60d | 300d |  | П1, К1 |
| 1677 | 17.5.4 | Передача машиномест | milestone | 0d | 2030-12-08 | 2030-12-08 | 1672FS+60d | 300d |  | П1 |
